# PROGRAMA - MANTENIMIENTO DE REDES SEDE CARIBE

Schedule from MS Project, 2024-07-22 to 2024-12-17, 9 hours a day, costs in $, A marks actual dates.

## Calendars

- REDES SEDE CARIBE: Mon-Sun 07:00-12:00, 13:00-17:00.

## Schedule

| ID | WBS | Task | Type | Duration | Start | Finish | Predecessors | Complete | Remaining | Baseline start | Baseline finish | Baseline duration | Total slack | Cost | Baseline cost | Actual cost | Unidad |
| --- | --- | --- | --- | --- | --- | --- | --- | --- | --- | --- | --- | --- | --- | --- | --- | --- | --- |
| 1 | 1 | INICIO DEL PROYECTO | milestone | 0d | 2024-07-22 A | 2024-07-22 A |  | 100% |  | 2024-07-22 | 2024-07-22 | 0d |  |  |  |  |  |
| 2 | 2 | **EJECUCIÓN DE LA OBRA** |  | 102d? | 2024-07-22 A | 2024-10-31 |  | 63% | 37.87d? | 2024-07-22 | 2024-10-31 | 102d? | 47d | 2,431,428,009.25 | 2,431,428,009.25 | 921,662,445.13 |  |
| 3 | 2.1 | **FASE 1** |  | 71d? | 2024-07-22 A | 2024-09-30 |  | 82% | 12.96d? | 2024-07-22 | 2024-09-30 | 71d? | 78d | 451,984,923.81 | 451,984,923.81 | 445,724,558.83 |  |
| 4 | 2.1.1 | **Red aguas residuales (Externa)** |  | 49d | 2024-07-22 A | 2024-09-08 A |  | 100% |  | 2024-07-22 | 2024-09-08 | 49d |  | 103,119,996.73 | 103,119,996.73 | 103,119,996.73 |  |
| 5 | 2.1.1.1 | Construcción de cerramientos y campamentos |  | 8d | 2024-07-22 A | 2024-07-29 A | 1 | 100% |  | 2024-07-22 | 2024-07-29 | 8d |  | 9,023,773.83 | 9,023,773.83 | 9,023,773.83 | m2 |
| 6 | 2.1.1.2 | Localización y replanteo |  | 10d | 2024-07-25 A | 2024-08-03 A | 5FS-5d | 100% |  | 2024-07-25 | 2024-08-03 | 10d |  | 6,298,862.93 | 6,298,862.93 | 6,298,862.93 | m3 |
| 7 | 2.1.1.3 | Demoliciones y retiros |  | 10d | 2024-08-01 A | 2024-08-10 A | 6FS-3d | 100% |  | 2024-08-01 | 2024-08-10 | 10d |  | 11,578,851.33 | 11,578,851.33 | 11,578,851.33 | m2 |
| 8 | 2.1.1.4 | **Excavaciones y entibados** |  | 18d | 2024-08-05 A | 2024-08-22 A |  | 100% |  | 2024-08-05 | 2024-08-22 | 18d |  | 26,089,657.14 | 26,089,657.14 | 26,089,657.14 |  |
| 9 | 2.1.1.4.1 | **Tramo MHRD4A-MHRD5** |  | 3d | 2024-08-05 A | 2024-08-07 A |  | 100% |  | 2024-08-05 | 2024-08-07 | 3d |  | 5,217,931.43 | 5,217,931.43 | 5,217,931.43 |  |
| 10 | 2.1.1.4.1.1 | Manhole MHRD5 |  | 3d | 2024-08-05 A | 2024-08-07 A | 7FS-6d | 100% |  | 2024-08-05 | 2024-08-07 | 3d |  | 5,217,931.43 | 5,217,931.43 | 5,217,931.43 |  |
| 11 | 2.1.1.4.2 | **Tramo MHRD4A-MHRD4** |  | 6d | 2024-08-08 A | 2024-08-13 A |  | 100% |  | 2024-08-08 | 2024-08-13 | 6d |  | 5,217,931.42 | 5,217,931.42 | 5,217,931.42 |  |
| 12 | 2.1.1.4.2.1 | Manhole MHRD4A |  | 3d | 2024-08-08 A | 2024-08-10 A | 10 | 100% |  | 2024-08-08 | 2024-08-10 | 3d |  | 2,608,965.71 | 2,608,965.71 | 2,608,965.71 |  |
| 13 | 2.1.1.4.2.2 | Manhole MHRD4 |  | 3d | 2024-08-11 A | 2024-08-13 A | 12 | 100% |  | 2024-08-11 | 2024-08-13 | 3d |  | 2,608,965.71 | 2,608,965.71 | 2,608,965.71 |  |
| 14 | 2.1.1.4.3 | **Tramo MHRD4-MHRD3** |  | 3d | 2024-08-14 A | 2024-08-16 A |  | 100% |  | 2024-08-14 | 2024-08-16 | 3d |  | 5,217,931.43 | 5,217,931.43 | 5,217,931.43 |  |
| 15 | 2.1.1.4.3.1 | Manhole MHRD3 |  | 3d | 2024-08-14 A | 2024-08-16 A | 13 | 100% |  | 2024-08-14 | 2024-08-16 | 3d |  | 5,217,931.43 | 5,217,931.43 | 5,217,931.43 |  |
| 16 | 2.1.1.4.4 | **Tramo MHRD3-MHRD2** |  | 3d | 2024-08-17 A | 2024-08-19 A |  | 100% |  | 2024-08-17 | 2024-08-19 | 3d |  | 5,217,931.43 | 5,217,931.43 | 5,217,931.43 |  |
| 17 | 2.1.1.4.4.1 | Manhole MHRD2 |  | 3d | 2024-08-17 A | 2024-08-19 A | 15 | 100% |  | 2024-08-17 | 2024-08-19 | 3d |  | 5,217,931.43 | 5,217,931.43 | 5,217,931.43 |  |
| 18 | 2.1.1.4.5 | **Tramo MHRD2-MHRD1** |  | 3d | 2024-08-20 A | 2024-08-22 A |  | 100% |  | 2024-08-20 | 2024-08-22 | 3d |  | 5,217,931.43 | 5,217,931.43 | 5,217,931.43 |  |
| 19 | 2.1.1.4.5.1 | Manhole MHRD1 |  | 3d | 2024-08-20 A | 2024-08-22 A | 17 | 100% |  | 2024-08-20 | 2024-08-22 | 3d |  | 5,217,931.43 | 5,217,931.43 | 5,217,931.43 |  |
| 20 | 2.1.1.5 | Cargue de material de excavación |  | 20d | 2024-08-20 A | 2024-09-08 A | 19SS | 100% |  | 2024-08-20 | 2024-09-08 | 20d |  | 1,446,151.53 | 1,446,151.53 | 1,446,151.53 | un |
| 21 | 2.1.1.6 | **Nivelación y colocación de cama de triturado para tuberia** |  | 17d | 2024-08-06 A | 2024-08-22 A |  | 100% |  | 2024-08-06 | 2024-08-22 | 17d |  | 1,716,063.15 | 1,716,063.15 | 1,716,063.15 |  |
| 22 | 2.1.1.6.1 | Tramo MHRD4A-MHRD5 |  | 2d | 2024-08-06 A | 2024-08-07 A | 10FF | 100% |  | 2024-08-06 | 2024-08-07 | 2d |  | 343,212.63 | 343,212.63 | 343,212.63 |  |
| 23 | 2.1.1.6.2 | Tramo MHRD4A-MHRD4 |  | 2d | 2024-08-09 A | 2024-08-10 A | 12FF | 100% |  | 2024-08-09 | 2024-08-10 | 2d |  | 343,212.63 | 343,212.63 | 343,212.63 |  |
| 24 | 2.1.1.6.3 | Tramo MHRD4-MHRD3 |  | 2d | 2024-08-12 A | 2024-08-13 A | 13FF | 100% |  | 2024-08-12 | 2024-08-13 | 2d |  | 343,212.63 | 343,212.63 | 343,212.63 |  |
| 25 | 2.1.1.6.4 | Tramo MHRD3-MHRD2 |  | 2d | 2024-08-18 A | 2024-08-19 A | 17FF | 100% |  | 2024-08-18 | 2024-08-19 | 2d |  | 343,212.63 | 343,212.63 | 343,212.63 |  |
| 26 | 2.1.1.6.5 | Tramo MHRD2-MHRD1 |  | 2d | 2024-08-21 A | 2024-08-22 A | 19FF | 100% |  | 2024-08-21 | 2024-08-22 | 2d |  | 343,212.63 | 343,212.63 | 343,212.63 |  |

| ID | WBS | Task | Duration | Start | Finish | Predecessors | Complete | Remaining | Baseline start | Baseline finish | Baseline duration | Total slack | Cost | Baseline cost | Actual cost | Unidad |
| --- | --- | --- | --- | --- | --- | --- | --- | --- | --- | --- | --- | --- | --- | --- | --- | --- |
| 27 | 2.1.1.7 | **Instalación de tuberia novafort** | 22d | 2024-08-09 A | 2024-08-30 A |  | 100% |  | 2024-08-09 | 2024-08-30 | 22d |  | 21,720,849.55 | 21,720,849.55 | 21,720,849.55 |  |
| 28 | 2.1.1.7.1 | Tramo MHRD4A-MHRD5 | 2d | 2024-08-09 A | 2024-08-10 A | 22FS+1d | 100% |  | 2024-08-09 | 2024-08-10 | 2d |  | 4,344,169.91 | 4,344,169.91 | 4,344,169.91 |  |
| 29 | 2.1.1.7.2 | Tramo MHRD4A-MHRD4 | 2d | 2024-08-14 A | 2024-08-15 A | 23FS+3d | 100% |  | 2024-08-14 | 2024-08-15 | 2d |  | 4,344,169.91 | 4,344,169.91 | 4,344,169.91 |  |
| 30 | 2.1.1.7.3 | Tramo MHRD4-MHRD3 | 2d | 2024-08-20 A | 2024-08-21 A | 24FS+6d | 100% |  | 2024-08-20 | 2024-08-21 | 2d |  | 4,344,169.91 | 4,344,169.91 | 4,344,169.91 |  |
| 31 | 2.1.1.7.4 | Tramo MHRD3-MHRD2 | 2d | 2024-08-26 A | 2024-08-27 A | 25FS+6d | 100% |  | 2024-08-26 | 2024-08-27 | 2d |  | 4,344,169.91 | 4,344,169.91 | 4,344,169.91 |  |
| 32 | 2.1.1.7.5 | Tramo MHRD2-MHRD1 | 2d | 2024-08-29 A | 2024-08-30 A | 26FS+6d | 100% |  | 2024-08-29 | 2024-08-30 | 2d |  | 4,344,169.91 | 4,344,169.91 | 4,344,169.91 |  |
| 33 | 2.1.1.8 | **Construcción de llenos** | 28d | 2024-08-10 A | 2024-09-06 A |  | 100% |  | 2024-08-10 | 2024-09-06 | 28d |  | 11,209,507.75 | 11,209,507.75 | 11,209,507.75 |  |
| 34 | 2.1.1.8.1 | Tramo MHRD4A-MHRD5 | 3d | 2024-08-10 A | 2024-08-12 A | 28FF+2d | 100% |  | 2024-08-10 | 2024-08-12 | 3d |  | 2,241,901.55 | 2,241,901.55 | 2,241,901.55 |  |
| 35 | 2.1.1.8.2 | Tramo MHRD4A-MHRD4 | 3d | 2024-08-20 A | 2024-08-22 A | 29SS+6d | 100% |  | 2024-08-20 | 2024-08-22 | 3d |  | 2,241,901.55 | 2,241,901.55 | 2,241,901.55 |  |
| 36 | 2.1.1.8.3 | Tramo MHRD4-MHRD3 | 3d | 2024-08-26 A | 2024-08-28 A | 30SS+6d | 100% |  | 2024-08-26 | 2024-08-28 | 3d |  | 2,241,901.55 | 2,241,901.55 | 2,241,901.55 |  |
| 37 | 2.1.1.8.4 | Tramo MHRD3-MHRD2 | 3d | 2024-09-01 A | 2024-09-03 A | 31SS+6d | 100% |  | 2024-09-01 | 2024-09-03 | 3d |  | 2,241,901.55 | 2,241,901.55 | 2,241,901.55 |  |
| 38 | 2.1.1.8.5 | Tramo MHRD2-MHRD1 | 3d | 2024-09-04 A | 2024-09-06 A | 32SS+6d | 100% |  | 2024-09-04 | 2024-09-06 | 3d |  | 2,241,901.55 | 2,241,901.55 | 2,241,901.55 |  |
| 39 | 2.1.1.9 | **Construcción de camaras de inspección 1,20** | 20d | 2024-08-19 A | 2024-09-07 A |  | 100% |  | 2024-08-19 | 2024-09-07 | 20d |  | 14,036,279.52 | 14,036,279.52 | 14,036,279.52 |  |
| 40 | 2.1.1.9.1 | Manhole MHRD5 | 8d | 2024-08-19 A | 2024-08-26 A | 10SS+14d | 100% |  | 2024-08-19 | 2024-08-26 | 8d |  | 2,339,379.92 | 2,339,379.92 | 2,339,379.92 |  |
| 41 | 2.1.1.9.2 | Manhole MHRD4A | 8d | 2024-08-20 A | 2024-08-27 A | 10SS+15d | 100% |  | 2024-08-20 | 2024-08-27 | 8d |  | 2,339,379.92 | 2,339,379.92 | 2,339,379.92 |  |
| 42 | 2.1.1.9.3 | Manhole MHRD4 | 8d | 2024-08-24 A | 2024-08-31 A | 12SS+16d | 100% |  | 2024-08-24 | 2024-08-31 | 8d |  | 2,339,379.92 | 2,339,379.92 | 2,339,379.92 |  |
| 43 | 2.1.1.9.4 | Manhole MHRD3 | 8d | 2024-08-26 A | 2024-09-02 A | 13SS+15d | 100% |  | 2024-08-26 | 2024-09-02 | 8d |  | 2,339,379.92 | 2,339,379.92 | 2,339,379.92 |  |
| 44 | 2.1.1.9.5 | Manhole MHRD2 | 8d | 2024-08-29 A | 2024-09-05 A | 15SS+15d | 100% |  | 2024-08-29 | 2024-09-05 | 8d |  | 2,339,379.92 | 2,339,379.92 | 2,339,379.92 |  |
| 45 | 2.1.1.9.6 | Manhole MHRD1 | 8d | 2024-08-31 A | 2024-09-07 A | 17SS+14d | 100% |  | 2024-08-31 | 2024-09-07 | 8d |  | 2,339,379.92 | 2,339,379.92 | 2,339,379.92 |  |
| 46 | 2.1.2 | **Red aguas lluvias (Externa)** | 56d? | 2024-08-01 A | 2024-09-25 |  | 41% | 33.19d? | 2024-08-01 | 2024-09-25 | 56d? | 83d | 123,514,267.62 | 123,514,267.62 | 119,926,833.1 |  |
| 47 | 2.1.2.1 | Localización y replanteo | 5d | 2024-08-01 A | 2024-08-05 A | 1FS+10d | 100% |  | 2024-08-01 | 2024-08-05 | 5d |  | 4,767,595.83 | 4,767,595.83 | 4,767,595.83 |  |
| 48 | 2.1.2.2 | Demoliciones y retiros | 7d | 2024-08-06 A | 2024-08-12 A | 47 | 100% |  | 2024-08-06 | 2024-08-12 | 7d |  | 20,132,643.93 | 20,132,643.93 | 20,132,643.93 | un |
| 49 | 2.1.2.3 | Excavaciones y entibados tramo MHL5-MHL6 | 7d | 2024-08-09 A | 2024-08-15 A | 48FS-4d | 100% |  | 2024-08-09 | 2024-08-15 | 7d |  | 45,526,554.08 | 45,526,554.08 | 45,526,554.08 | un |
| 50 | 2.1.2.4 | Cargue de material de excavación | 7d | 2024-08-12 A | 2024-08-18 A | 49FS-4d | 100% |  | 2024-08-12 | 2024-08-18 | 7d |  | 2,400,419.28 | 2,400,419.28 | 2,400,419.28 |  |
| 51 | 2.1.2.5 | Nivelación y colocación de cama de triturado para tuberia tramo MHL5-ML6 | 7d | 2024-08-15 A | 2024-08-21 A | 50FS-4d | 100% |  | 2024-08-15 | 2024-08-21 | 7d |  | 2,400,419.28 | 2,400,419.28 | 2,400,419.28 | un |
| 52 | 2.1.2.6 | Instalación de tuberia tramo MHL5-MHL6 | 7d | 2024-08-18 A | 2024-08-24 A | 51FS-4d | 100% |  | 2024-08-18 | 2024-08-24 | 7d |  | 16,721,622.53 | 16,721,622.53 | 16,721,622.53 | un |
| 53 | 2.1.2.7 | Construcción de llenos tramo MHL5-MHL6 | 7d | 2024-08-21 A | 2024-08-27 A | 52FS-4d | 100% |  | 2024-08-21 | 2024-08-27 | 7d |  | 19,486,292.63 | 19,486,292.63 | 19,486,292.63 |  |
| 54 | 2.1.2.8 | Construcción de camaras de inspección 1,20 MHL5 | 7d | 2024-08-26 A | 2024-09-01 A | 53FS-2d | 100% |  | 2024-08-26 | 2024-09-01 | 7d |  | 4,245,642.77 | 4,245,642.77 | 4,245,642.77 |  |
| 55 | 2.1.2.9 | Construcción de camaras de inspección 1,20 MHL6 | 1d? | 2024-08-26 A | 2024-08-26 A | 53FS-2d | 100% |  | 2024-08-26 | 2024-08-26 | 1d? |  | 4,245,642.77 | 4,245,642.77 | 4,245,642.77 |  |

| ID | WBS | Task | Duration | Start | Finish | Predecessors | Complete | Remaining | Baseline start | Baseline finish | Baseline duration | Total slack | Cost | Baseline cost | Actual cost |
| --- | --- | --- | --- | --- | --- | --- | --- | --- | --- | --- | --- | --- | --- | --- | --- |
| 56 | 2.1.2.10 | **Construcción de sumideros** | 20d | 2024-09-06 A | 2024-09-25 |  |  | 20d | 2024-09-06 | 2024-09-25 | 20d | 83d | 3,587,434.52 | 3,587,434.52 |  |
| 57 | 2.1.2.10.1 | Sumidero L5 Norte | 20d | 2024-09-06 A | 2024-09-25 | 55FF+30d |  | 20d | 2024-09-06 | 2024-09-25 | 20d | 83d | 896,858.63 | 896,858.63 |  |
| 58 | 2.1.2.10.2 | Sumidero L5 sur | 20d | 2024-09-06 A | 2024-09-25 | 55FF+30d |  | 20d | 2024-09-06 | 2024-09-25 | 20d | 83d | 896,858.63 | 896,858.63 |  |
| 59 | 2.1.2.10.3 | Sumidero L6 Norte | 20d | 2024-09-06 A | 2024-09-25 | 55FF+30d |  | 20d | 2024-09-06 | 2024-09-25 | 20d | 83d | 896,858.63 | 896,858.63 |  |
| 60 | 2.1.2.10.4 | Sumidero L6 sur | 20d | 2024-09-06 A | 2024-09-25 | 55FF+30d |  | 20d | 2024-09-06 | 2024-09-25 | 20d | 83d | 896,858.63 | 896,858.63 |  |
| 61 | 2.1.3 | **Red de aguas residuales (Sotano)** | 71d | 2024-07-22 A | 2024-09-30 |  | 95% | 3.71d | 2024-07-22 | 2024-09-30 | 71d | 78d | 173,228,688.23 | 173,228,688.23 | 170,555,757.77 |
| 62 | 2.1.3.1 | Localización y replanteo | 5d | 2024-08-01 A | 2024-08-05 A | 1FS+10d | 100% |  | 2024-08-01 | 2024-08-05 | 5d |  | 3,236,328.73 | 3,236,328.73 | 3,236,328.73 |
| 63 | 2.1.3.2 | Diagnostico de redes | 3d | 2024-08-06 A | 2024-08-08 A | 62 | 100% |  | 2024-08-06 | 2024-08-08 | 3d |  | 173,794.53 | 173,794.53 | 173,794.53 |
| 64 | 2.1.3.3 | Demoliciones y retiros | 7d | 2024-08-09 A | 2024-08-15 A | 63 | 100% |  | 2024-08-09 | 2024-08-15 | 7d |  | 17,281,379.73 | 17,281,379.73 | 17,281,379.73 |
| 65 | 2.1.3.4 | **Excavaciones y entibados** | 33d | 2024-08-12 A | 2024-09-13 A |  | 100% |  | 2024-08-12 | 2024-09-13 | 33d |  | 39,047,588.45 | 39,047,588.45 | 39,047,588.45 |
| 66 | 2.1.3.4.1 | **Tramo CRD11A-CRD13** | 3d | 2024-08-12 A | 2024-08-14 A | 64FS-4d | 100% |  | 2024-08-12 | 2024-08-14 | 3d |  | 3,003,660.65 | 3,003,660.65 | 3,003,660.65 |
| 67 | 2.1.3.4.1.1 | Caja CRD11A | 3d | 2024-08-12 A | 2024-08-14 A |  | 100% |  | 2024-08-12 | 2024-08-14 | 3d |  | 3,003,660.65 | 3,003,660.65 | 3,003,660.65 |
| 68 | 2.1.3.4.2 | **Tramo CRD13-MRD1** | 3d | 2024-08-14 A | 2024-08-16 A |  | 100% |  | 2024-08-14 | 2024-08-16 | 3d |  | 3,003,660.65 | 3,003,660.65 | 3,003,660.65 |
| 69 | 2.1.3.4.2.1 | Caja CRD13 | 3d | 2024-08-14 A | 2024-08-16 A | 67SS+2d | 100% |  | 2024-08-14 | 2024-08-16 | 3d |  | 3,003,660.65 | 3,003,660.65 | 3,003,660.65 |
| 70 | 2.1.3.4.3 | **Tramo CRD 4B-CRD11A** | 3d | 2024-08-16 A | 2024-08-18 A |  | 100% |  | 2024-08-16 | 2024-08-18 | 3d |  | 3,003,660.65 | 3,003,660.65 | 3,003,660.65 |
| 71 | 2.1.3.4.3.1 | Caja CRD4B | 3d | 2024-08-16 A | 2024-08-18 A | 69SS+2d | 100% |  | 2024-08-16 | 2024-08-18 | 3d |  | 3,003,660.65 | 3,003,660.65 | 3,003,660.65 |
| 72 | 2.1.3.4.4 | **Tramo CRD4A-CRD4B** | 3d | 2024-08-18 A | 2024-08-20 A |  | 100% |  | 2024-08-18 | 2024-08-20 | 3d |  | 3,003,660.65 | 3,003,660.65 | 3,003,660.65 |
| 73 | 2.1.3.4.4.1 | Caja CRD4A | 3d | 2024-08-18 A | 2024-08-20 A | 71SS+2d | 100% |  | 2024-08-18 | 2024-08-20 | 3d |  | 3,003,660.65 | 3,003,660.65 | 3,003,660.65 |
| 74 | 2.1.3.4.5 | Tramo CRD4A-CRD4B | 3d | 2024-08-18 A | 2024-08-20 A | 73SS | 100% |  | 2024-08-18 | 2024-08-20 | 3d |  | 3,003,660.65 | 3,003,660.65 | 3,003,660.65 |
| 75 | 2.1.3.4.6 | **Tramo CRD3-CRD4A** | 3d | 2024-08-20 A | 2024-08-22 A |  | 100% |  | 2024-08-20 | 2024-08-22 | 3d |  | 3,003,660.65 | 3,003,660.65 | 3,003,660.65 |
| 76 | 2.1.3.4.6.1 | Caja CRD3 | 3d | 2024-08-20 A | 2024-08-22 A | 74SS+2d | 100% |  | 2024-08-20 | 2024-08-22 | 3d |  | 3,003,660.65 | 3,003,660.65 | 3,003,660.65 |
| 77 | 2.1.3.4.7 | **Tramo CRD1A-CRD3** | 3d | 2024-08-22 A | 2024-08-24 A |  | 100% |  | 2024-08-22 | 2024-08-24 | 3d |  | 3,003,660.65 | 3,003,660.65 | 3,003,660.65 |
| 78 | 2.1.3.4.7.1 | Caja CRD1A | 3d | 2024-08-22 A | 2024-08-24 A | 76SS+2d | 100% |  | 2024-08-22 | 2024-08-24 | 3d |  | 3,003,660.65 | 3,003,660.65 | 3,003,660.65 |
| 79 | 2.1.3.4.8 | **Tramo CRD1-CRD1A** | 7d | 2024-08-26 A | 2024-09-01 A |  | 100% |  | 2024-08-26 | 2024-09-01 | 7d |  | 6,007,321.3 | 6,007,321.3 | 6,007,321.3 |
| 80 | 2.1.3.4.8.1 | Caja CRD1 | 3d | 2024-08-26 A | 2024-08-28 A | 78FS+1d | 100% |  | 2024-08-26 | 2024-08-28 | 3d |  | 3,003,660.65 | 3,003,660.65 | 3,003,660.65 |
| 81 | 2.1.3.4.8.2 | Caja CRD1A | 3d | 2024-08-30 A | 2024-09-01 A | 80FS+1d | 100% |  | 2024-08-30 | 2024-09-01 | 3d |  | 3,003,660.65 | 3,003,660.65 | 3,003,660.65 |
| 82 | 2.1.3.4.9 | Tramo CRD1-GIMNASIO | 3d | 2024-09-02 A | 2024-09-04 A | 81 | 100% |  | 2024-09-02 | 2024-09-04 | 3d |  | 3,003,660.65 | 3,003,660.65 | 3,003,660.65 |
| 83 | 2.1.3.4.10 | CONEXIÓN CRED1A-PISO | 3d | 2024-09-05 A | 2024-09-07 A | 82 | 100% |  | 2024-09-05 | 2024-09-07 | 3d |  | 3,003,660.65 | 3,003,660.65 | 3,003,660.65 |
| 84 | 2.1.3.4.11 | CONEXIÓN CRD3-PISO | 3d | 2024-09-08 A | 2024-09-10 A | 83 | 100% |  | 2024-09-08 | 2024-09-10 | 3d |  | 3,003,660.65 | 3,003,660.65 | 3,003,660.65 |
| 85 | 2.1.3.4.12 | CONEXIÓN CRD4-PISO | 3d | 2024-09-11 A | 2024-09-13 A | 84 | 100% |  | 2024-09-11 | 2024-09-13 | 3d |  | 3,003,660.65 | 3,003,660.65 | 3,003,660.65 |
| 86 | 2.1.3.5 | Cargue de material de excavación | 7d | 2024-07-22 A | 2024-07-28 A |  | 100% |  | 2024-07-22 | 2024-07-28 | 7d |  | 2,082,330.03 | 2,082,330.03 | 2,082,330.03 |

| ID | WBS | Task | Duration | Start | Finish | Predecessors | Complete | Baseline start | Baseline finish | Baseline duration | Cost | Baseline cost | Actual cost |
| --- | --- | --- | --- | --- | --- | --- | --- | --- | --- | --- | --- | --- | --- |
| 87 | 2.1.3.6 | **Nivelación y colocación de cama de triturado para tuberia** | 44d | 2024-07-22 A | 2024-09-03 A |  | 100% | 2024-07-22 | 2024-09-03 | 44d | 2,487,197.43 | 2,487,197.43 | 2,487,197.43 |
| 88 | 2.1.3.6.1 | Tramo CRD11A-CRD3 | 2d | 2024-08-12 A | 2024-08-13 A | 67SS | 100% | 2024-08-12 | 2024-08-13 | 2d | 276,355.27 | 276,355.27 | 276,355.27 |
| 89 | 2.1.3.6.2 | Tramo CRD13-MHRD1 | 2d | 2024-08-14 A | 2024-08-15 A | 69SS | 100% | 2024-08-14 | 2024-08-15 | 2d | 276,355.27 | 276,355.27 | 276,355.27 |
| 90 | 2.1.3.6.3 | Tramo CRD4B-CRD1A | 2d | 2024-08-16 A | 2024-08-17 A | 71SS | 100% | 2024-08-16 | 2024-08-17 | 2d | 276,355.27 | 276,355.27 | 276,355.27 |
| 91 | 2.1.3.6.4 | Tramo CRD4A-CRD4B | 2d | 2024-08-18 A | 2024-08-19 A | 74SS | 100% | 2024-08-18 | 2024-08-19 | 2d | 276,355.27 | 276,355.27 | 276,355.27 |
| 92 | 2.1.3.6.5 | Tramo CRD3-CRD4A | 2d | 2024-08-20 A | 2024-08-21 A | 76SS | 100% | 2024-08-20 | 2024-08-21 | 2d | 276,355.27 | 276,355.27 | 276,355.27 |
| 93 | 2.1.3.6.6 | Tramo CRD1A-CRD3 | 2d | 2024-08-22 A | 2024-08-23 A | 78SS | 100% | 2024-08-22 | 2024-08-23 | 2d | 276,355.27 | 276,355.27 | 276,355.27 |
| 94 | 2.1.3.6.7 | Tramo CRD12-BODEGA | 2d | 2024-08-26 A | 2024-08-27 A | 80SS | 100% | 2024-08-26 | 2024-08-27 | 2d | 276,355.27 | 276,355.27 | 276,355.27 |
| 95 | 2.1.3.6.8 | Tramo CRD1-CRD1A | 2d | 2024-09-02 A | 2024-09-03 A | 82SS | 100% | 2024-09-02 | 2024-09-03 | 2d | 276,355.27 | 276,355.27 | 276,355.27 |
| 96 | 2.1.3.6.9 | Tramo CRD1-Gimnasio | 2d | 2024-09-02 A | 2024-09-03 A | 82SS | 100% | 2024-09-02 | 2024-09-03 | 2d | 276,355.27 | 276,355.27 | 276,355.27 |
| 97 | 2.1.3.6.10 | Conexión CRD1A-PISO | 2d | 2024-07-22 A | 2024-07-23 A |  | 100% | 2024-07-22 | 2024-07-23 | 2d |  |  |  |
| 98 | 2.1.3.6.11 | Conexión CRD3-PISO | 2d | 2024-07-22 A | 2024-07-23 A |  | 100% | 2024-07-22 | 2024-07-23 | 2d |  |  |  |
| 99 | 2.1.3.6.12 | Conexión CRD4-PISO | 2d | 2024-07-22 A | 2024-07-23 A |  | 100% | 2024-07-22 | 2024-07-23 | 2d |  |  |  |
| 100 | 2.1.3.7 | **Instalación de tuberia novafort y pvc -accesorios** | 23d | 2024-08-13 A | 2024-09-04 A |  | 100% | 2024-08-13 | 2024-09-04 | 23d | 85,064,890.41 | 85,064,890.41 | 85,064,890.41 |
| 101 | 2.1.3.7.1 | Tramo CRD11A-CRD3 | 2d | 2024-08-13 A | 2024-08-14 A | 88SS+1d | 100% | 2024-08-13 | 2024-08-14 | 2d | 9,451,654.49 | 9,451,654.49 | 9,451,654.49 |
| 102 | 2.1.3.7.2 | Tramo CRD13-MHRD1 | 2d | 2024-08-15 A | 2024-08-16 A | 89SS+1d | 100% | 2024-08-15 | 2024-08-16 | 2d | 9,451,654.49 | 9,451,654.49 | 9,451,654.49 |
| 103 | 2.1.3.7.3 | Tramo CRD4B-CRD1A | 2d | 2024-08-17 A | 2024-08-18 A | 90SS+1d | 100% | 2024-08-17 | 2024-08-18 | 2d | 9,451,654.49 | 9,451,654.49 | 9,451,654.49 |
| 104 | 2.1.3.7.4 | Tramo CRD4A-CRD4B | 2d | 2024-08-19 A | 2024-08-20 A | 91SS+1d | 100% | 2024-08-19 | 2024-08-20 | 2d | 9,451,654.49 | 9,451,654.49 | 9,451,654.49 |
| 105 | 2.1.3.7.5 | Tramo CRD3-CRD4A | 2d | 2024-08-21 A | 2024-08-22 A | 92SS+1d | 100% | 2024-08-21 | 2024-08-22 | 2d | 9,451,654.49 | 9,451,654.49 | 9,451,654.49 |
| 106 | 2.1.3.7.6 | Tramo CRD1A-CRD3 | 2d | 2024-08-23 A | 2024-08-24 A | 93SS+1d | 100% | 2024-08-23 | 2024-08-24 | 2d | 9,451,654.49 | 9,451,654.49 | 9,451,654.49 |
| 107 | 2.1.3.7.7 | Tramo CRD12-BODEGA | 2d | 2024-08-27 A | 2024-08-28 A | 94SS+1d | 100% | 2024-08-27 | 2024-08-28 | 2d | 9,451,654.49 | 9,451,654.49 | 9,451,654.49 |
| 108 | 2.1.3.7.8 | Tramo CRD1-CRD1A | 2d | 2024-09-03 A | 2024-09-04 A | 95SS+1d | 100% | 2024-09-03 | 2024-09-04 | 2d | 9,451,654.49 | 9,451,654.49 | 9,451,654.49 |
| 109 | 2.1.3.7.9 | Tramo CRD1-Gimnasio | 2d | 2024-09-03 A | 2024-09-04 A | 96SS+1d | 100% | 2024-09-03 | 2024-09-04 | 2d | 9,451,654.49 | 9,451,654.49 | 9,451,654.49 |
| 110 | 2.1.3.8 | **Construcción de llenos** | 24d | 2024-08-15 A | 2024-09-07 A |  | 100% | 2024-08-15 | 2024-09-07 | 24d | 16,727,364.36 | 16,727,364.36 | 16,727,364.36 |
| 111 | 2.1.3.8.1 | Tramo CRD11A-CRD3 | 3d | 2024-08-15 A | 2024-08-17 A | 101 | 100% | 2024-08-15 | 2024-08-17 | 3d | 1,858,596.04 | 1,858,596.04 | 1,858,596.04 |
| 112 | 2.1.3.8.2 | Tramo CRD13-MHRD1 | 3d | 2024-08-17 A | 2024-08-19 A | 102 | 100% | 2024-08-17 | 2024-08-19 | 3d | 1,858,596.04 | 1,858,596.04 | 1,858,596.04 |
| 113 | 2.1.3.8.3 | Tramo CRD4B-CRD1A | 3d | 2024-08-19 A | 2024-08-21 A | 103 | 100% | 2024-08-19 | 2024-08-21 | 3d | 1,858,596.04 | 1,858,596.04 | 1,858,596.04 |
| 114 | 2.1.3.8.4 | Tramo CRD4A-CRD4B | 3d | 2024-08-21 A | 2024-08-23 A | 104 | 100% | 2024-08-21 | 2024-08-23 | 3d | 1,858,596.04 | 1,858,596.04 | 1,858,596.04 |
| 115 | 2.1.3.8.5 | Tramo CRD3-CRD4A | 3d | 2024-08-23 A | 2024-08-25 A | 105 | 100% | 2024-08-23 | 2024-08-25 | 3d | 1,858,596.04 | 1,858,596.04 | 1,858,596.04 |
| 116 | 2.1.3.8.6 | Tramo CRD1A-CRD3 | 3d | 2024-08-25 A | 2024-08-27 A | 106 | 100% | 2024-08-25 | 2024-08-27 | 3d | 1,858,596.04 | 1,858,596.04 | 1,858,596.04 |
| 117 | 2.1.3.8.7 | Tramo CRD12-BODEGA | 3d | 2024-08-29 A | 2024-08-31 A | 107 | 100% | 2024-08-29 | 2024-08-31 | 3d | 1,858,596.04 | 1,858,596.04 | 1,858,596.04 |
| 118 | 2.1.3.8.8 | Tramo CRD1-CRD1A | 3d | 2024-09-05 A | 2024-09-07 A | 108 | 100% | 2024-09-05 | 2024-09-07 | 3d | 1,858,596.04 | 1,858,596.04 | 1,858,596.04 |
| 119 | 2.1.3.8.9 | Tramo CRD1-Gimnasio | 3d | 2024-09-05 A | 2024-09-07 A | 109 | 100% | 2024-09-05 | 2024-09-07 | 3d | 1,858,596.04 | 1,858,596.04 | 1,858,596.04 |

| ID | WBS | Task | Type | Duration | Start | Finish | Predecessors | Complete | Remaining | Baseline start | Baseline finish | Baseline duration | Total slack | Free slack | Cost | Baseline cost | Actual cost | Unidad |
| --- | --- | --- | --- | --- | --- | --- | --- | --- | --- | --- | --- | --- | --- | --- | --- | --- | --- | --- |
| 120 | 2.1.3.9 | **Construcción de cajas de inspección** |  | 23d | 2024-09-08 A | 2024-09-30 |  | 65% | 8d | 2024-09-08 | 2024-09-30 | 23d | 78d |  | 7,127,814.56 | 7,127,814.56 | 4,454,884.1 |  |
| 121 | 2.1.3.9.1 | Caja CRD11A |  | 3d | 2024-09-08 A | 2024-09-10 A | 119 | 100% |  | 2024-09-08 | 2024-09-10 | 3d |  |  | 890,976.82 | 890,976.82 | 890,976.82 |  |
| 122 | 2.1.3.9.2 | Caja CRD13 |  | 3d | 2024-09-11 A | 2024-09-13 A | 121 | 100% |  | 2024-09-11 | 2024-09-13 | 3d |  |  | 890,976.82 | 890,976.82 | 890,976.82 |  |
| 123 | 2.1.3.9.3 | Caja CRD4B |  | 3d | 2024-09-14 A | 2024-09-16 A | 122 | 100% |  | 2024-09-14 | 2024-09-16 | 3d |  |  | 890,976.82 | 890,976.82 | 890,976.82 |  |
| 124 | 2.1.3.9.4 | Caja CRD4A |  | 3d | 2024-09-17 A | 2024-09-19 A | 123 | 100% |  | 2024-09-17 | 2024-09-19 | 3d |  |  | 890,976.82 | 890,976.82 | 890,976.82 |  |
| 125 | 2.1.3.9.5 | Caja CRD3 |  | 3d | 2024-09-20 A | 2024-09-22 A | 124 | 100% |  | 2024-09-20 | 2024-09-22 | 3d |  |  | 890,976.82 | 890,976.82 | 890,976.82 |  |
| 126 | 2.1.3.9.6 | Caja CRD1A |  | 3d | 2024-09-23 A | 2024-09-25 | 125 |  | 3d | 2024-09-23 | 2024-09-25 | 3d | 78d | 0d | 890,976.82 | 890,976.82 |  |  |
| 127 | 2.1.3.9.7 | Caja CRD1 |  | 3d | 2024-09-26 | 2024-09-28 | 126 |  |  | 2024-09-26 | 2024-09-28 | 3d | 78d | 0d | 890,976.82 | 890,976.82 |  |  |
| 128 | 2.1.3.9.8 | Caja del gimnasio |  | 2d | 2024-09-29 | 2024-09-30 | 127 |  |  | 2024-09-29 | 2024-09-30 | 2d | 78d |  | 890,976.82 | 890,976.82 |  |  |
| 129 | 2.1.4 | **Red de aguas lluvias (Sotano)** | inactive | 26d | 2024-08-05 | 2024-08-30 |  |  |  |  |  |  | 109d |  | 63,017,413.86 | -0 |  |  |
| 130 | 2.1.4.1 | Localización y replanteo | inactive | 2d | 2024-08-05 | 2024-08-06 | 1FS+14d |  |  |  |  |  | 109d | 0d | 1,705,061.63 | -0 |  |  |
| 131 | 2.1.4.2 | Demoliciones y retiros | inactive | 7d | 2024-08-06 | 2024-08-12 | 130FS-1d |  |  |  |  |  | 109d | 0d | 8,727,587.13 | -0 |  |  |
| 132 | 2.1.4.3 | Excavaciones y entibados | inactive | 7d | 2024-08-10 | 2024-08-16 | 131FS-3d |  |  |  |  |  | 109d | 0d | 19,610,691.48 | -0 |  |  |
| 133 | 2.1.4.4 | Cargue de material de excavación | inactive | 7d | 2024-08-12 | 2024-08-18 | 132FS-5d |  |  |  |  |  | 109d | 0d | 1,128,062.28 | -0 |  |  |
| 134 | 2.1.4.5 | Nivelación y colocación de cama de triturado para tuberia | inactive | 8d | 2024-08-15 | 2024-08-22 | 133FS-4d |  |  |  |  |  | 109d | 0d | 1,330,495.98 | -0 |  |  |
| 135 | 2.1.4.6 | Instalación de tuberia | inactive | 3d | 2024-08-19 | 2024-08-21 | 134FS-4d |  |  |  |  |  | 109d | 0d | 14,937,121.4 | -0 |  |  |
| 136 | 2.1.4.7 | Construcción de llenos | inactive | 8d | 2024-08-18 | 2024-08-25 | 135FS-4d |  |  |  |  |  | 109d | 0d | 8,450,579.43 | -0 |  |  |
| 137 | 2.1.4.8 | Construcción de cajas | inactive | 7d | 2024-08-24 | 2024-08-30 | 136FS-2d |  |  |  |  |  | 109d |  | 7,127,814.53 | -0 |  |  |
| 138 | 2.1.5 | **Red de abastos (Edificio)** |  | 21d | 2024-08-14 A | 2024-09-03 A |  | 100% |  | 2024-08-14 | 2024-09-03 | 21d |  |  | 52,121,971.23 | 52,121,971.23 | 52,121,971.23 |  |
| 139 | 2.1.5.1 | Retiros |  | 5d | 2024-08-14 A | 2024-08-18 A | 1FS+23d | 100% |  | 2024-08-14 | 2024-08-18 | 5d |  |  | 26,701,806.53 | 26,701,806.53 | 26,701,806.53 | un |
| 140 | 2.1.5.2 | Piso 1 anillo costado sur |  | 20d | 2024-08-15 A | 2024-09-03 A | 139FS-4d | 100% |  | 2024-08-15 | 2024-09-03 | 20d |  |  | 12,710,082.35 | 12,710,082.35 | 12,710,082.35 |  |
| 141 | 2.1.5.3 | Piso 1 anillo costado norte |  | 20d | 2024-08-15 A | 2024-09-03 A | 140FF | 100% |  | 2024-08-15 | 2024-09-03 | 20d |  |  | 12,710,082.35 | 12,710,082.35 | 12,710,082.35 | un |
| 142 | 2.1.6 | **Obras civiles** | inactive | 20d | 2024-08-29 | 2024-09-17 |  |  |  |  |  |  | 91d |  | 52,406,826.18 | -0 |  |  |
| 143 | 2.1.6.1 | Construcción de buitrones | inactive | 7d | 2024-08-29 | 2024-09-04 | 141FS-6d |  |  |  |  |  | 91d | 0d | 3,740,676.53 | -0 |  |  |
| 144 | 2.1.6.2 | Instalación de cielo falso | inactive | 4d | 2024-09-03 | 2024-09-06 | 143FS-2d |  |  |  |  |  | 91d | 0d | 21,819,905.53 | -0 |  |  |
| 145 | 2.1.6.3 | Csontrucción de mamposteria | inactive | 7d | 2024-09-05 | 2024-09-11 | 144FS-2d |  |  |  |  |  | 91d | 0d | 10,255,901.53 | -0 |  |  |
| 146 | 2.1.6.4 | Construcción de revoque | inactive | 5d | 2024-09-09 | 2024-09-13 | 145FS-3d |  |  |  |  |  | 91d | 0d | 5,206,272.53 | -0 |  |  |
| 147 | 2.1.6.5 | Construcción de enchape | inactive | 5d | 2024-09-11 | 2024-09-15 | 146FS-3d |  |  |  |  |  | 91d | 0d | 4,435,516.53 | -0 |  |  |
| 148 | 2.1.6.6 | Resane y aplicación de pinturas | inactive | 4d | 2024-09-14 | 2024-09-17 | 147FS-2d |  |  |  |  |  | 91d |  | 6,948,553.53 | -0 |  |  |
| 149 | 2.1.7 | FIN EJECUCIÓN - FASE 1 | milestone | 0d | 2024-08-29 A | 2024-08-29 A | 148FF | 100% |  | 2024-08-29 | 2024-08-29 | 0d |  |  |  |  |  |  |

| ID | WBS | Task | Duration | Start | Finish | Predecessors | Complete | Remaining | Baseline start | Baseline finish | Baseline duration | Total slack | Free slack | Cost | Baseline cost | Actual cost | Unidad |
| --- | --- | --- | --- | --- | --- | --- | --- | --- | --- | --- | --- | --- | --- | --- | --- | --- | --- |
| 150 | 2.2 | **FASE 2** | 57d | 2024-08-29 A | 2024-10-24 |  | 51% | 27.66d | 2024-08-29 | 2024-10-24 | 57d | 54d |  | 278,407,702.83 | 278,407,702.83 | 162,502,551.18 |  |
| 151 | 2.2.1 | **Red de aguas lluvias (Externa)** | 9d | 2024-09-01 A | 2024-09-09 A |  | 100% |  | 2024-09-01 | 2024-09-09 | 9d |  |  | 75,156,210.1 | 75,156,210.1 | 75,156,210.1 |  |
| 152 | 2.2.1.1 | Construcción de cerramientos | 2d | 2024-09-02 A | 2024-09-03 A | 149FS+4d | 100% |  | 2024-09-02 | 2024-09-03 | 2d |  |  | 1,307,120.78 | 1,307,120.78 | 1,307,120.78 | m2 |
| 153 | 2.2.1.2 | Localización y replanteo | 2d | 2024-09-04 A | 2024-09-05 A | 152 | 100% |  | 2024-09-04 | 2024-09-05 | 2d |  |  | 2,215,484.13 | 2,215,484.13 | 2,215,484.13 | m2 |
| 154 | 2.2.1.3 | Demoliciones y retiros | 5d | 2024-09-05 A | 2024-09-09 A | 153FS-1d | 100% |  | 2024-09-05 | 2024-09-09 | 5d |  |  | 26,107,720.38 | 26,107,720.38 | 26,107,720.38 | m2 |
| 155 | 2.2.1.4 | Excavaciones y entibados Tramo MHL6-MHL7 | 3d | 2024-09-07 A | 2024-09-09 A | 154FS-3d | 100% |  | 2024-09-07 | 2024-09-09 | 3d |  |  | 12,240,382.28 | 12,240,382.28 | 12,240,382.28 | m3 |
| 156 | 2.2.1.5 | Cargue de material de excavación | 3d | 2024-09-05 A | 2024-09-07 A | 155FS-5d | 100% |  | 2024-09-05 | 2024-09-07 | 3d |  |  | 2,400,419.28 | 2,400,419.28 | 2,400,419.28 | un |
| 157 | 2.2.1.6 | Nivelación y colocación de cama de triturado para tuberia Tramo MHL6-MHL7 | 3d | 2024-09-04 A | 2024-09-06 A | 156FS-4d | 100% |  | 2024-09-04 | 2024-09-06 | 3d |  |  | 2,872,764.58 | 2,872,764.58 | 2,872,764.58 |  |
| 158 | 2.2.1.7 | Instalación de tuberia tramo MHL6-MHL7 | 3d | 2024-09-03 A | 2024-09-05 A | 157FS-4d | 100% |  | 2024-09-03 | 2024-09-05 | 3d |  |  | 5,188,760.23 | 5,188,760.23 | 5,188,760.23 |  |
| 159 | 2.2.1.8 | Construcción de llenos Tramo MHL6-MHL7 | 3d | 2024-09-02 A | 2024-09-04 A | 158FS-4d | 100% |  | 2024-09-02 | 2024-09-04 | 3d |  |  | 19,486,292.63 | 19,486,292.63 | 19,486,292.63 |  |
| 160 | 2.2.1.9 | Construcción de camaras de inspección 1,20 MHL7 | 3d | 2024-09-01 A | 2024-09-03 A | 159FS-4d | 100% |  | 2024-09-01 | 2024-09-03 | 3d |  |  | 2,253,167.28 | 2,253,167.28 | 2,253,167.28 |  |
| 161 | 2.2.1.10 | Construcción de sumideros L6 Costado sur | 3d | 2024-09-01 A | 2024-09-03 A | 160FS-3d | 100% |  | 2024-09-01 | 2024-09-03 | 3d |  |  | 1,084,098.53 | 1,084,098.53 | 1,084,098.53 |  |
| 162 | 2.2.2 | **Red de aguas residuales (Sotano)** | 57d | 2024-08-29 A | 2024-10-24 |  | 31% | 39.61d | 2024-08-29 | 2024-10-24 | 57d | 54d |  | 155,843,876.66 | 155,843,876.66 | 39,938,725.01 |  |
| 163 | 2.2.2.1 | Construcción de cerramientos | 2d | 2024-08-29 A | 2024-08-30 A | 149 | 100% |  | 2024-08-29 | 2024-08-30 | 2d |  |  | 1,307,120.78 | 1,307,120.78 | 1,307,120.78 | m3 |
| 164 | 2.2.2.2 | Localización y replanteo | 2d | 2024-08-31 A | 2024-09-01 A | 163 | 100% |  | 2024-08-31 | 2024-09-01 | 2d |  |  | 1,705,061.73 | 1,705,061.73 | 1,705,061.73 | m3 |
| 165 | 2.2.2.3 | Demoliciones y retiros | 5d | 2024-09-01 A | 2024-09-05 A | 164FS-1d | 100% |  | 2024-09-01 | 2024-09-05 | 5d |  |  | 26,107,720.38 | 26,107,720.38 | 26,107,720.38 | m3 |
| 166 | 2.2.2.4 | **Excavaciones y entibados** | 33d | 2024-09-09 A | 2024-10-11 |  | 33% | 22d | 2024-09-09 | 2024-10-11 | 33d | 67d |  | 12,240,382.32 | 12,240,382.32 | 6,120,191.16 |  |
| 167 | 2.2.2.4.1 | Tramo CRD 11A-CRD9A | 3d | 2024-09-09 A | 2024-09-11 A | 165FS+3d | 100% |  | 2024-09-09 | 2024-09-11 | 3d |  |  | 1,530,047.79 | 1,530,047.79 | 1,530,047.79 |  |
| 168 | 2.2.2.4.2 | Caja CRD9A | 3d | 2024-09-09 A | 2024-09-11 A | 167SS | 100% |  | 2024-09-09 | 2024-09-11 | 3d |  |  | 1,530,047.79 | 1,530,047.79 | 1,530,047.79 |  |
| 169 | 2.2.2.4.3 | Tramo CRD9A-CRD6 | 3d | 2024-09-15 A | 2024-09-17 A | 167FS+3d | 100% |  | 2024-09-15 | 2024-09-17 | 3d |  |  | 1,530,047.79 | 1,530,047.79 | 1,530,047.79 |  |
| 170 | 2.2.2.4.4 | Caja CRD6 | 3d | 2024-09-15 A | 2024-09-17 A | 169SS | 100% |  | 2024-09-15 | 2024-09-17 | 3d |  |  | 1,530,047.79 | 1,530,047.79 | 1,530,047.79 |  |
| 171 | 2.2.2.4.5 | Tramo CRD7-CRD6 | 3d | 2024-09-21 A | 2024-09-23 | 169FS+3d |  | 3d | 2024-09-21 | 2024-09-23 | 3d | 67d | 0d | 1,530,047.79 | 1,530,047.79 |  |  |
| 172 | 2.2.2.4.6 | Caja CRD7 | 3d | 2024-09-21 A | 2024-09-23 | 171SS |  | 3d | 2024-09-21 | 2024-09-23 | 3d | 85d |  | 1,530,047.79 | 1,530,047.79 |  |  |
| 173 | 2.2.2.4.7 | Tramo CRD 5-PISO | 3d | 2024-09-27 | 2024-09-29 | 171FS+3d |  |  | 2024-09-27 | 2024-09-29 | 3d | 67d | 0d | 1,530,047.79 | 1,530,047.79 |  |  |
| 174 | 2.2.2.4.8 | Caja CRD5 | 3d | 2024-09-27 | 2024-09-29 | 173SS |  |  | 2024-09-27 | 2024-09-29 | 3d | 67d | 0d | 1,530,047.79 | 1,530,047.79 |  |  |
| 175 | 2.2.2.4.9 | Conexión CRD11A-PISO | 3d | 2024-09-30 | 2024-10-02 | 174 |  |  | 2024-09-30 | 2024-10-02 | 3d | 67d | 0d |  |  |  |  |
| 176 | 2.2.2.4.10 | Conexión CRD9A-PISO 1-1 | 3d | 2024-10-03 | 2024-10-05 | 175 |  |  | 2024-10-03 | 2024-10-05 | 3d | 67d | 0d |  |  |  |  |
| 177 | 2.2.2.4.11 | Conexión CRD 9A-PISO 1-2 | 3d | 2024-10-06 | 2024-10-08 | 176 |  |  | 2024-10-06 | 2024-10-08 | 3d | 67d | 0d |  |  |  |  |
| 178 | 2.2.2.4.12 | Conexión CRD6-PISO 1-1 | 3d | 2024-10-09 | 2024-10-11 | 177 |  |  | 2024-10-09 | 2024-10-11 | 3d | 67d |  |  |  |  |  |
| 179 | 2.2.2.5 | Cargue de material de excavación | 7d | 2024-09-01 A | 2024-09-07 A | 165SS | 100% |  | 2024-09-01 | 2024-09-07 | 7d |  |  | 2,400,419.28 | 2,400,419.28 | 2,400,419.28 |  |

| ID | WBS | Task | Duration | Start | Finish | Predecessors | Complete | Remaining | Baseline start | Baseline finish | Baseline duration | Total slack | Free slack | Cost | Baseline cost | Actual cost |
| --- | --- | --- | --- | --- | --- | --- | --- | --- | --- | --- | --- | --- | --- | --- | --- | --- |
| 180 | 2.2.2.6 | **Nivelación y colocación de cama de triturado para tuberia** | 22d | 2024-09-11 A | 2024-10-02 |  | 44% | 12.22d | 2024-09-11 | 2024-10-02 | 22d | 76d |  | 2,872,764.6 | 2,872,764.6 | 2,298,211.68 |
| 181 | 2.2.2.6.1 | Tramo CRD11A-CRD9A | 2d | 2024-09-11 A | 2024-09-12 A | 167SS+2d | 100% |  | 2024-09-11 | 2024-09-12 | 2d |  |  | 574,552.92 | 574,552.92 | 574,552.92 |
| 182 | 2.2.2.6.2 | Tramo CRD 9A-CRD6 | 2d | 2024-09-11 A | 2024-09-12 A | 168SS+2d | 100% |  | 2024-09-11 | 2024-09-12 | 2d |  |  | 574,552.92 | 574,552.92 | 574,552.92 |
| 183 | 2.2.2.6.3 | Tramo CRD 7- CRD6 | 2d | 2024-09-17 A | 2024-09-18 A | 169SS+2d | 100% |  | 2024-09-17 | 2024-09-18 | 2d |  |  | 574,552.92 | 574,552.92 | 574,552.92 |
| 184 | 2.2.2.6.4 | Tramo CRD5-CRD6 | 2d | 2024-09-17 A | 2024-09-18 A | 170SS+2d | 100% |  | 2024-09-17 | 2024-09-18 | 2d |  |  | 574,552.92 | 574,552.92 | 574,552.92 |
| 185 | 2.2.2.6.5 | Tramo CRD5-PISO | 2d | 2024-09-23 A | 2024-09-24 | 171SS+2d |  | 2d | 2024-09-23 | 2024-09-24 | 2d | 54d | 0d | 574,552.92 | 574,552.92 |  |
| 186 | 2.2.2.6.6 | Conexión CRD11A-PISO | 2d | 2024-09-25 | 2024-09-26 | 185 |  |  | 2024-09-25 | 2024-09-26 | 2d | 76d | 0d |  |  |  |
| 187 | 2.2.2.6.7 | Conexión CRD9A-PISO 1-1 | 2d | 2024-09-27 | 2024-09-28 | 186 |  |  | 2024-09-27 | 2024-09-28 | 2d | 76d | 0d |  |  |  |
| 188 | 2.2.2.6.8 | Conexión CRD 9A-PISO 1-2 | 2d | 2024-09-29 | 2024-09-30 | 187 |  |  | 2024-09-29 | 2024-09-30 | 2d | 76d | 0d |  |  |  |
| 189 | 2.2.2.6.9 | Conexión CRD6-PISO 1-1 | 2d | 2024-10-01 | 2024-10-02 | 188 |  |  | 2024-10-01 | 2024-10-02 | 2d | 76d |  |  |  |  |
| 190 | 2.2.2.7 | **Instalación de tuberia novafort y pvc -accesorios** | 26d | 2024-09-27 | 2024-10-22 |  |  |  | 2024-09-27 | 2024-10-22 | 26d | 54d |  | 82,596,300.4 | 82,596,300.4 |  |
| 191 | 2.2.2.7.1 | Tramo CRD11A-CRD9A | 2d | 2024-09-27 | 2024-09-28 | 185FS+2d |  |  | 2024-09-27 | 2024-09-28 | 2d | 54d | 0d | 16,519,260.08 | 16,519,260.08 |  |
| 192 | 2.2.2.7.2 | Tramo CRD 9A-CRD6 | 2d | 2024-10-01 | 2024-10-02 | 191FS+2d |  |  | 2024-10-01 | 2024-10-02 | 2d | 54d | 0d | 16,519,260.08 | 16,519,260.08 |  |
| 193 | 2.2.2.7.3 | Tramo CRD 7- CRD6 | 2d | 2024-10-05 | 2024-10-06 | 192FS+2d |  |  | 2024-10-05 | 2024-10-06 | 2d | 54d | 0d | 16,519,260.08 | 16,519,260.08 |  |
| 194 | 2.2.2.7.4 | Tramo CRD5-CRD6 | 2d | 2024-10-09 | 2024-10-10 | 193FS+2d |  |  | 2024-10-09 | 2024-10-10 | 2d | 54d | 0d | 16,519,260.08 | 16,519,260.08 |  |
| 195 | 2.2.2.7.5 | Tramo CRD5-PISO | 2d | 2024-10-13 | 2024-10-14 | 194FS+2d |  |  | 2024-10-13 | 2024-10-14 | 2d | 54d | 0d | 16,519,260.08 | 16,519,260.08 |  |
| 196 | 2.2.2.7.6 | Conexión CRD11A-PISO | 2d | 2024-10-15 | 2024-10-16 | 195 |  |  | 2024-10-15 | 2024-10-16 | 2d | 56d | 0d |  |  |  |
| 197 | 2.2.2.7.7 | Conexión CRD9A-PISO 1-1 | 2d | 2024-10-17 | 2024-10-18 | 196 |  |  | 2024-10-17 | 2024-10-18 | 2d | 56d | 0d |  |  |  |
| 198 | 2.2.2.7.8 | Conexión CRD 9A-PISO 1-2 | 2d | 2024-10-19 | 2024-10-20 | 197 |  |  | 2024-10-19 | 2024-10-20 | 2d | 56d | 0d |  |  |  |
| 199 | 2.2.2.7.9 | Conexión CRD6-PISO 1-1 | 2d | 2024-10-21 | 2024-10-22 | 198 |  |  | 2024-10-21 | 2024-10-22 | 2d | 56d |  |  |  |  |
| 200 | 2.2.2.8 | **Llenos** | 26d | 2024-09-29 | 2024-10-24 |  |  |  | 2024-09-29 | 2024-10-24 | 26d | 54d |  | 19,486,292.65 | 19,486,292.65 |  |
| 201 | 2.2.2.8.1 | Tramo CRD11A-CRD9A | 2d | 2024-09-29 | 2024-09-30 | 191SS+2d |  |  | 2024-09-29 | 2024-09-30 | 2d | 64d | 0d | 3,897,258.53 | 3,897,258.53 |  |
| 202 | 2.2.2.8.2 | Tramo CRD 9A-CRD6 | 2d | 2024-10-03 | 2024-10-04 | 192SS+2d |  |  | 2024-10-03 | 2024-10-04 | 2d | 74d |  | 3,897,258.53 | 3,897,258.53 |  |
| 203 | 2.2.2.8.3 | Tramo CRD 7- CRD6 | 2d | 2024-10-07 | 2024-10-08 | 193SS+2d |  |  | 2024-10-07 | 2024-10-08 | 2d | 70d |  | 3,897,258.53 | 3,897,258.53 |  |
| 204 | 2.2.2.8.4 | Tramo CRD5-CRD6 | 2d | 2024-10-11 | 2024-10-12 | 194SS+2d |  |  | 2024-10-11 | 2024-10-12 | 2d | 66d |  | 3,897,258.53 | 3,897,258.53 |  |
| 205 | 2.2.2.8.5 | Tramo CRD5-PISO | 2d | 2024-10-15 | 2024-10-16 | 195SS+2d |  |  | 2024-10-15 | 2024-10-16 | 2d | 54d | 0d | 3,897,258.53 | 3,897,258.53 |  |
| 206 | 2.2.2.8.6 | Conexión CRD11A-PISO | 2d | 2024-10-17 | 2024-10-18 | 205 |  |  | 2024-10-17 | 2024-10-18 | 2d | 54d | 0d |  |  |  |
| 207 | 2.2.2.8.7 | Conexión CRD9A-PISO 1-1 | 2d | 2024-10-19 | 2024-10-20 | 206 |  |  | 2024-10-19 | 2024-10-20 | 2d | 54d | 0d |  |  |  |
| 208 | 2.2.2.8.8 | Conexión CRD 9A-PISO 1-2 | 2d | 2024-10-21 | 2024-10-22 | 207 |  |  | 2024-10-21 | 2024-10-22 | 2d | 54d | 0d |  |  |  |
| 209 | 2.2.2.8.9 | Conexión CRD6-PISO 1-1 | 2d | 2024-10-23 | 2024-10-24 | 208 |  |  | 2024-10-23 | 2024-10-24 | 2d | 54d |  |  |  |  |

| ID | WBS | Task | Type | Duration | Start | Finish | Predecessors | Complete | Baseline start | Baseline finish | Baseline duration | Total slack | Free slack | Cost | Baseline cost | Actual cost |
| --- | --- | --- | --- | --- | --- | --- | --- | --- | --- | --- | --- | --- | --- | --- | --- | --- |
| 210 | 2.2.2.9 | **Construcción de cajas de inspección** |  | 12d | 2024-10-03 | 2024-10-14 |  |  | 2024-10-03 | 2024-10-14 | 12d | 64d |  | 7,127,814.52 | 7,127,814.52 |  |
| 211 | 2.2.2.9.1 | Caja CRD 9A |  | 3d | 2024-10-03 | 2024-10-05 | 201FF+5d |  | 2024-10-03 | 2024-10-05 | 3d | 64d | 0d | 1,781,953.63 | 1,781,953.63 |  |
| 212 | 2.2.2.9.2 | Caja CRD5 |  | 3d | 2024-10-06 | 2024-10-08 | 211 |  | 2024-10-06 | 2024-10-08 | 3d | 64d | 0d | 1,781,953.63 | 1,781,953.63 |  |
| 213 | 2.2.2.9.3 | Caja CRD6 |  | 3d | 2024-10-09 | 2024-10-11 | 212 |  | 2024-10-09 | 2024-10-11 | 3d | 64d | 0d | 1,781,953.63 | 1,781,953.63 |  |
| 214 | 2.2.2.9.4 | Caja CRD7 |  | 3d | 2024-10-12 | 2024-10-14 | 213 |  | 2024-10-12 | 2024-10-14 | 3d | 64d |  | 1,781,953.63 | 1,781,953.63 |  |
| 215 | 2.2.3 | **Red de aguas lluvias (Sotano)** | inactive | 29d | 2024-08-31 | 2024-09-28 |  |  |  |  |  | 80d |  | 81,565,471.34 | -0 |  |
| 216 | 2.2.3.1 | Construcción de cerramientos | inactive | 2d | 2024-08-31 | 2024-09-01 | 149FS+2d |  |  |  |  | 80d | 0d | 1,145,217.03 | -0 |  |
| 217 | 2.2.3.2 | Localización y replanteo | inactive | 2d | 2024-09-02 | 2024-09-03 | 216 |  |  |  |  | 80d | 0d | 1,705,061.73 | -0 |  |
| 218 | 2.2.3.3 | Demoliciones y retiros | inactive | 5d | 2024-09-03 | 2024-09-07 | 217FS-1d |  |  |  |  | 80d | 0d | 22,402,873.83 | -0 |  |
| 219 | 2.2.3.4 | Excavaciones y entibados | inactive | 7d | 2024-09-05 | 2024-09-11 | 218FS-3d |  |  |  |  | 80d | 0d | 10,516,584.03 | -0 |  |
| 220 | 2.2.3.5 | Cargue de material de excavación | inactive | 7d | 2024-09-07 | 2024-09-13 | 219FS-5d |  |  |  |  | 80d | 0d | 2,082,330.03 | -0 |  |
| 221 | 2.2.3.6 | Nivelación y colocación de cama de triturado para tuberia | inactive | 8d | 2024-09-10 | 2024-09-17 | 220FS-4d |  |  |  |  | 80d | 0d | 2,487,197.43 | -0 |  |
| 222 | 2.2.3.7 | Instalación de tuberia | inactive | 8d | 2024-09-14 | 2024-09-21 | 221FS-4d |  |  |  |  | 80d | 0d | 21,891,141.4 | -0 |  |
| 223 | 2.2.3.8 | Construcción de llenos | inactive | 8d | 2024-09-18 | 2024-09-25 | 222FS-4d |  |  |  |  | 80d | 0d | 16,727,364.33 | -0 |  |
| 224 | 2.2.3.9 | Construcción de cajas de sifonadas | inactive | 5d | 2024-09-24 | 2024-09-28 | 223FS-2d |  |  |  |  | 80d |  | 2,607,701.53 | -0 |  |
| 225 | 2.2.4 | **Red de abastos (Edificio)** |  | 19d | 2024-08-30 A | 2024-09-17 A |  | 100% | 2024-08-30 | 2024-09-17 | 19d |  |  | 47,407,616.07 | 47,407,616.07 | 47,407,616.07 |
| 226 | 2.2.4.1 | Retiros |  | 7d | 2024-08-30 A | 2024-09-05 A | 149FS+1d | 100% | 2024-08-30 | 2024-09-05 | 7d |  |  | 13,437,800.53 | 13,437,800.53 | 13,437,800.53 |
| 227 | 2.2.4.2 | Piso 2 Anillo Costado Sur |  | 7d | 2024-09-11 A | 2024-09-17 A | 226FS+5d | 100% | 2024-09-11 | 2024-09-17 | 7d |  |  | 16,984,907.77 | 16,984,907.77 | 16,984,907.77 |
| 228 | 2.2.4.3 | Piso 2 Anillo Costado Norte |  | 7d | 2024-09-06 A | 2024-09-12 A | 226 | 100% | 2024-09-06 | 2024-09-12 | 7d |  |  | 16,984,907.77 | 16,984,907.77 | 16,984,907.77 |
| 229 | 2.2.5 | **Obras civiles** | inactive | 19d | 2024-09-07 | 2024-09-25 |  |  |  |  |  | 83d |  | 52,406,826.18 | -0 |  |
| 230 | 2.2.5.1 | Construcción de buitrones | inactive | 5d | 2024-09-07 | 2024-09-11 | 228FS-6d |  |  |  |  | 83d | 0d | 3,740,676.53 | -0 |  |
| 231 | 2.2.5.2 | Instalación de cielo falso | inactive | 4d | 2024-09-10 | 2024-09-13 | 230FS-2d |  |  |  |  | 83d | 0d | 21,819,905.53 | -0 |  |
| 232 | 2.2.5.3 | Csontrucción de mamposteria | inactive | 7d | 2024-09-12 | 2024-09-18 | 231FS-2d |  |  |  |  | 83d | 0d | 10,255,901.53 | -0 |  |
| 233 | 2.2.5.4 | Construcción de revoque | inactive | 5d | 2024-09-16 | 2024-09-20 | 232FS-3d |  |  |  |  | 83d | 0d | 5,206,272.53 | -0 |  |
| 234 | 2.2.5.5 | Construcción de enchape | inactive | 5d | 2024-09-18 | 2024-09-22 | 233FS-3d |  |  |  |  | 83d | 0d | 4,435,516.53 | -0 |  |
| 235 | 2.2.5.6 | Resane y aplicación de pinturas | inactive | 5d | 2024-09-21 | 2024-09-25 | 234FS-2d |  |  |  |  | 83d |  | 6,948,553.53 | -0 |  |
| 236 | 2.2.6 | FIN EJECUCIÓN - FASE 2 | milestone | 0d | 2024-09-07 A | 2024-09-07 A | 235FF | 100% | 2024-09-07 | 2024-09-07 | 0d |  |  |  |  |  |

| ID | WBS | Task | Duration | Start | Finish | Predecessors | Complete | Remaining | Baseline start | Baseline finish | Baseline duration | Total slack | Cost | Baseline cost | Actual cost | Unidad |
| --- | --- | --- | --- | --- | --- | --- | --- | --- | --- | --- | --- | --- | --- | --- | --- | --- |
| 237 | 2.3 | **FASE 3** | 89d | 2024-07-22 A | 2024-10-18 |  | 31% | 61.16d | 2024-07-22 | 2024-10-18 | 89d | 60d | 1,210,345,094.02 | 1,210,345,094.02 | 313,435,335.12 |  |
| 238 | 2.3.1 | **FASE 3-1** | 14d | 2024-09-04 A | 2024-09-17 A |  | 100% |  | 2024-09-04 | 2024-09-17 | 14d |  | 278,989,187.97 | 278,989,187.97 | 278,989,187.97 |  |
| 239 | 2.3.1.1 | **Red de aguas lluvias (Externa)** | 14d | 2024-09-04 A | 2024-09-17 A |  | 100% |  | 2024-09-04 | 2024-09-17 | 14d |  | 278,989,187.97 | 278,989,187.97 | 278,989,187.97 |  |
| 240 | 2.3.1.1.1 | Construcción de cerramientos | 1d | 2024-09-07 A | 2024-09-07 A | 236 | 100% |  | 2024-09-07 | 2024-09-07 | 1d |  | 1,145,217.03 | 1,145,217.03 | 1,145,217.03 | m2 |
| 241 | 2.3.1.1.2 | Localización y replanteo | 1d | 2024-09-08 A | 2024-09-08 A | 240 | 100% |  | 2024-09-08 | 2024-09-08 | 1d |  | 9,973,904.13 | 9,973,904.13 | 9,973,904.13 | m2 |
| 242 | 2.3.1.1.3 | Demoliciones y retiros | 1d | 2024-09-06 A | 2024-09-06 A | 241FS-3d | 100% |  | 2024-09-06 | 2024-09-06 | 1d |  | 22,591,075.53 | 22,591,075.53 | 22,591,075.53 |  |
| 243 | 2.3.1.1.4 | **Excavaciones y entibados** | 6d | 2024-09-04 A | 2024-09-09 A |  | 100% |  | 2024-09-04 | 2024-09-09 | 6d |  | 55,048,350.54 | 55,048,350.54 | 55,048,350.54 |  |
| 244 | 2.3.1.1.4.1 | Tramo MHL7-MHL8 | 2d | 2024-09-04 A | 2024-09-05 A | 242FS-3d | 100% |  | 2024-09-04 | 2024-09-05 | 2d |  | 18,349,450.18 | 18,349,450.18 | 18,349,450.18 |  |
| 245 | 2.3.1.1.4.2 | Tramo MHL8-MHL9 | 2d | 2024-09-06 A | 2024-09-07 A | 244 | 100% |  | 2024-09-06 | 2024-09-07 | 2d |  | 18,349,450.18 | 18,349,450.18 | 18,349,450.18 |  |
| 246 | 2.3.1.1.4.3 | Tramo MHL9-EMPALME MHLE3 | 2d | 2024-09-08 A | 2024-09-09 A | 245 | 100% |  | 2024-09-08 | 2024-09-09 | 2d |  | 18,349,450.18 | 18,349,450.18 | 18,349,450.18 |  |
| 247 | 2.3.1.1.5 | Cargue de material de excavación | 5d | 2024-09-04 A | 2024-09-08 A | 244SS | 100% |  | 2024-09-04 | 2024-09-08 | 5d |  | 7,535,579.53 | 7,535,579.53 | 7,535,579.53 |  |
| 248 | 2.3.1.1.6 | **Nivelación y colocación de cama de triturado para tuberia** | 6d | 2024-09-08 A | 2024-09-13 A |  | 100% |  | 2024-09-08 | 2024-09-13 | 6d |  | 8,885,137.53 | 8,885,137.53 | 8,885,137.53 |  |
| 249 | 2.3.1.1.6.1 | Tramo MHL7-MHL8 | 2d | 2024-09-08 A | 2024-09-09 A | 245 | 100% |  | 2024-09-08 | 2024-09-09 | 2d |  | 2,961,712.51 | 2,961,712.51 | 2,961,712.51 |  |
| 250 | 2.3.1.1.6.2 | Tramo MHL8-MHL9 | 2d | 2024-09-10 A | 2024-09-11 A | 249 | 100% |  | 2024-09-10 | 2024-09-11 | 2d |  | 2,961,712.51 | 2,961,712.51 | 2,961,712.51 |  |
| 251 | 2.3.1.1.6.3 | Tramo MHL9-EMPALME MHLE3 | 2d | 2024-09-12 A | 2024-09-13 A | 250 | 100% |  | 2024-09-12 | 2024-09-13 | 2d |  | 2,961,712.51 | 2,961,712.51 | 2,961,712.51 |  |
| 252 | 2.3.1.1.7 | **Instalación de tuberia** | 6d | 2024-09-10 A | 2024-09-15 A |  | 100% |  | 2024-09-10 | 2024-09-15 | 6d |  | 95,458,142.82 | 95,458,142.82 | 95,458,142.82 |  |
| 253 | 2.3.1.1.7.1 | Tramo MHL7-MHL8 | 2d | 2024-09-10 A | 2024-09-11 A | 249 | 100% |  | 2024-09-10 | 2024-09-11 | 2d |  | 31,819,380.94 | 31,819,380.94 | 31,819,380.94 |  |
| 254 | 2.3.1.1.7.2 | Tramo MHL8-MHL9 | 2d | 2024-09-12 A | 2024-09-13 A | 253 | 100% |  | 2024-09-12 | 2024-09-13 | 2d |  | 31,819,380.94 | 31,819,380.94 | 31,819,380.94 |  |
| 255 | 2.3.1.1.7.3 | Tramo MHL9-EMPALME MHLE3 | 2d | 2024-09-14 A | 2024-09-15 A | 254 | 100% |  | 2024-09-14 | 2024-09-15 | 2d |  | 31,819,380.94 | 31,819,380.94 | 31,819,380.94 |  |
| 256 | 2.3.1.1.8 | **Construcción de llenos** | 2d | 2024-09-10 A | 2024-09-11 A |  | 100% |  | 2024-09-10 | 2024-09-11 | 2d |  | 65,352,360.54 | 65,352,360.54 | 65,352,360.54 |  |
| 257 | 2.3.1.1.8.1 | Tramo MHL7-MHL8 | 2d | 2024-09-10 A | 2024-09-11 A | 253SS | 100% |  | 2024-09-10 | 2024-09-11 | 2d |  | 21,784,120.18 | 21,784,120.18 | 21,784,120.18 |  |
| 258 | 2.3.1.1.8.2 | Tramo MHL8-MHL9 | 2d | 2024-09-10 A | 2024-09-11 A | 257SS | 100% |  | 2024-09-10 | 2024-09-11 | 2d |  | 21,784,120.18 | 21,784,120.18 | 21,784,120.18 |  |
| 259 | 2.3.1.1.8.3 | Tramo MHL9-EMPALME MHLE3 | 2d | 2024-09-10 A | 2024-09-11 A | 258SS | 100% |  | 2024-09-10 | 2024-09-11 | 2d |  | 21,784,120.18 | 21,784,120.18 | 21,784,120.18 |  |
| 260 | 2.3.1.1.9 | **Construcción de camaras de inspección 1,20** | 1d | 2024-09-12 A | 2024-09-12 A |  | 100% |  | 2024-09-12 | 2024-09-12 | 1d |  | 9,184,409.79 | 9,184,409.79 | 9,184,409.79 |  |
| 261 | 2.3.1.1.9.1 | MHL7 | 1d | 2024-09-12 A | 2024-09-12 A | 257 | 100% |  | 2024-09-12 | 2024-09-12 | 1d |  | 3,061,469.93 | 3,061,469.93 | 3,061,469.93 |  |
| 262 | 2.3.1.1.9.2 | MHL8 | 1d | 2024-09-12 A | 2024-09-12 A | 258 | 100% |  | 2024-09-12 | 2024-09-12 | 1d |  | 3,061,469.93 | 3,061,469.93 | 3,061,469.93 |  |
| 263 | 2.3.1.1.9.3 | MHL9 | 1d | 2024-09-12 A | 2024-09-12 A | 259 | 100% |  | 2024-09-12 | 2024-09-12 | 1d |  | 3,061,469.93 | 3,061,469.93 | 3,061,469.93 |  |
| 264 | 2.3.1.1.10 | Construcción de sumideros | 5d | 2024-09-13 A | 2024-09-17 A | 263 | 100% |  | 2024-09-13 | 2024-09-17 | 5d |  | 3,815,010.53 | 3,815,010.53 | 3,815,010.53 |  |

| ID | WBS | Task | Type | Duration | Start | Finish | Predecessors | Complete | Remaining | Baseline start | Baseline finish | Baseline duration | Total slack | Free slack | Cost | Baseline cost | Actual cost | Unidad |
| --- | --- | --- | --- | --- | --- | --- | --- | --- | --- | --- | --- | --- | --- | --- | --- | --- | --- | --- |
| 265 | 2.3.1.2 | **Obras civiles** | inactive | 20d | 2024-08-30 | 2024-09-18 |  |  |  |  |  |  | 90d |  | 143,845,974.06 | -0 |  |  |
| 266 | 2.3.1.2.1 | Construcción de losas | inactive | 10d | 2024-08-30 | 2024-09-08 | 236FS-8d |  |  |  |  |  | 90d | 0d | 127,005,295.53 | -0 |  |  |
| 267 | 2.3.1.2.2 | Construcción de andenes | inactive | 10d | 2024-09-09 | 2024-09-18 | 266 |  |  |  |  |  | 90d |  | 16,840,678.53 | -0 |  |  |
| 268 | 2.3.1.3 | FIN EJECUCIÓN - FASE 3-1 | milestone | 0d | 2024-09-17 A | 2024-09-17 A | 264 | 100% |  | 2024-09-17 | 2024-09-17 | 0d |  |  |  |  |  |  |
| 269 | 2.3.2 | **FASE 3-2** |  | 28d | 2024-09-18 A | 2024-10-15 |  | 19% | 22.75d | 2024-09-18 | 2024-10-15 | 28d | 63d |  | 619,638,309.51 | 619,638,309.51 | 30,858,712.62 |  |
| 270 | 2.3.2.1 | **Red de aguas lluvias - (Externa)** |  | 28d | 2024-09-18 A | 2024-10-15 |  | 9% | 25.41d | 2024-09-18 | 2024-10-15 | 28d | 63d |  | 121,216,915.38 | 121,216,915.38 | 6,118,998.21 |  |
| 271 | 2.3.2.1.1 | Construcción de cerramientos |  | 1d | 2024-09-18 A | 2024-09-18 A | 268 | 100% |  | 2024-09-18 | 2024-09-18 | 1d |  |  | 2,440,447.03 | 2,440,447.03 | 2,440,447.03 | m2 |
| 272 | 2.3.2.1.2 | Localización y replanteo |  | 1d | 2024-09-19 A | 2024-09-19 A | 271 | 100% |  | 2024-09-19 | 2024-09-19 | 1d |  |  | 2,133,816.45 | 2,133,816.45 | 2,133,816.45 | m2 |
| 273 | 2.3.2.1.3 | Demoliciones y retiros |  | 3d | 2024-09-20 A | 2024-09-22 A | 272 | 100% |  | 2024-09-20 | 2024-09-22 | 3d |  |  | 1,544,734.73 | 1,544,734.73 | 1,544,734.73 | m2 |
| 274 | 2.3.2.1.4 | **Excavaciones y entibados** |  | 18d | 2024-09-24 | 2024-10-11 |  |  |  | 2024-09-24 | 2024-10-11 | 18d | 63d |  | 23,970,194.25 | 23,970,194.25 |  |  |
| 275 | 2.3.2.1.4.1 | Excavación MHL1A |  | 2d | 2024-09-24 | 2024-09-25 | 273FS+1d |  |  | 2024-09-24 | 2024-09-25 | 2d | 63d | 0d | 4,794,038.85 | 4,794,038.85 |  |  |
| 276 | 2.3.2.1.4.2 | Carcamo occidental |  | 6d | 2024-09-24 | 2024-09-29 | 275SS |  |  | 2024-09-24 | 2024-09-29 | 6d | 63d | 0d | 4,794,038.85 | 4,794,038.85 |  |  |
| 277 | 2.3.2.1.4.3 | Carcamo Oriental |  | 6d | 2024-10-02 | 2024-10-07 | 276FS+2d |  |  | 2024-10-02 | 2024-10-07 | 6d | 63d | 0d | 4,794,038.85 | 4,794,038.85 |  |  |
| 278 | 2.3.2.1.4.4 | Sumidero costa occidental |  | 2d | 2024-10-08 | 2024-10-09 | 277 |  |  | 2024-10-08 | 2024-10-09 | 2d | 63d | 0d | 4,794,038.85 | 4,794,038.85 |  |  |
| 279 | 2.3.2.1.4.5 | Sumidero costado orienta |  | 2d | 2024-10-10 | 2024-10-11 | 278 |  |  | 2024-10-10 | 2024-10-11 | 2d | 65d | 0d | 4,794,038.85 | 4,794,038.85 |  |  |
| 280 | 2.3.2.1.5 | Cargue de material de excavación |  | 3d | 2024-09-25 | 2024-09-27 | 275SS+1d |  |  | 2024-09-25 | 2024-09-27 | 3d | 81d |  | 3,627,044.03 | 3,627,044.03 |  |  |
| 281 | 2.3.2.1.6 | **Nivelación y colocación de cama de triturado para tuberia** |  | 3d | 2024-10-11 | 2024-10-13 |  |  |  | 2024-10-11 | 2024-10-13 | 3d | 63d |  | 6,885,137.54 | 6,885,137.54 |  |  |
| 282 | 2.3.2.1.6.1 | Sumidero costa occidental |  | 1d | 2024-10-11 | 2024-10-11 | 278FS+1d |  |  | 2024-10-11 | 2024-10-11 | 1d | 63d | 0d | 3,442,568.77 | 3,442,568.77 |  |  |
| 283 | 2.3.2.1.6.2 | Sumidero costado orienta |  | 1d | 2024-10-13 | 2024-10-13 | 279FS+1d |  |  | 2024-10-13 | 2024-10-13 | 1d | 65d | 0d | 3,442,568.77 | 3,442,568.77 |  |  |
| 284 | 2.3.2.1.7 | **Instalación de tuberia** |  | 3d | 2024-10-11 | 2024-10-13 |  |  |  | 2024-10-11 | 2024-10-13 | 3d | 63d |  | 3,693,024.54 | 3,693,024.54 |  |  |
| 285 | 2.3.2.1.7.1 | Sumidero costa occidental |  | 1d | 2024-10-11 | 2024-10-11 | 282SS |  |  | 2024-10-11 | 2024-10-11 | 1d | 63d | 0d | 1,846,512.27 | 1,846,512.27 |  |  |
| 286 | 2.3.2.1.7.2 | Sumidero costado orienta |  | 1d | 2024-10-13 | 2024-10-13 | 283SS |  |  | 2024-10-13 | 2024-10-13 | 1d | 65d |  | 1,846,512.27 | 1,846,512.27 |  |  |
| 287 | 2.3.2.1.8 | **Construcción de llenos** |  | 3d | 2024-10-13 | 2024-10-15 |  |  |  | 2024-10-13 | 2024-10-15 | 3d | 63d |  | 28,798,790.74 | 28,798,790.74 |  |  |
| 288 | 2.3.2.1.8.1 | Sumidero costa occidental |  | 3d | 2024-10-13 | 2024-10-15 | 285FS+1d |  |  | 2024-10-13 | 2024-10-15 | 3d | 63d | 0d | 14,399,395.37 | 14,399,395.37 |  |  |
| 289 | 2.3.2.1.8.2 | Sumidero costado orienta |  | 3d | 2024-10-13 | 2024-10-15 | 288SS |  |  | 2024-10-13 | 2024-10-15 | 3d | 63d |  | 14,399,395.37 | 14,399,395.37 |  |  |
| 290 | 2.3.2.1.9 | Construcción de camaras de inspección 1,20 MHL1A |  | 2d | 2024-09-29 | 2024-09-30 | 275FS+3d |  |  | 2024-09-29 | 2024-09-30 | 2d | 78d |  | 2,946,291.53 | 2,946,291.53 |  |  |

| ID | WBS | Task | Type | Duration | Start | Finish | Predecessors | Complete | Remaining | Baseline start | Baseline finish | Baseline duration | Total slack | Free slack | Cost | Baseline cost | Actual cost | Unidad |
| --- | --- | --- | --- | --- | --- | --- | --- | --- | --- | --- | --- | --- | --- | --- | --- | --- | --- | --- |
| 291 | 2.3.2.1.10 | **Construcción de carcamos** |  | 16d | 2024-09-30 | 2024-10-15 |  |  |  | 2024-09-30 | 2024-10-15 | 16d | 63d |  | 45,177,434.54 | 45,177,434.54 |  |  |
| 292 | 2.3.2.1.10.1 | Carcamo occidental |  | 8d | 2024-09-30 | 2024-10-07 | 276 |  |  | 2024-09-30 | 2024-10-07 | 8d | 71d |  | 22,588,717.27 | 22,588,717.27 |  |  |
| 293 | 2.3.2.1.10.2 | Carcamo Oriental |  | 8d | 2024-10-08 | 2024-10-15 | 277 |  |  | 2024-10-08 | 2024-10-15 | 8d | 63d |  | 22,588,717.27 | 22,588,717.27 |  |  |
| 294 | 2.3.2.2 | **Red de abastos (Edificio a tanque)** |  | 11d | 2024-09-18 A | 2024-09-28 |  | 22% | 8.56d | 2024-09-18 | 2024-09-28 | 11d | 80d |  | 27,117,708.96 | 27,117,708.96 | 867,245.16 |  |
| 295 | 2.3.2.2.1 | Construcción de cerramientos |  | 1d | 2024-09-18 A | 2024-09-18 A | 268 | 100% |  | 2024-09-18 | 2024-09-18 | 1d |  |  | 497,602.03 | 497,602.03 | 497,602.03 |  |
| 296 | 2.3.2.2.2 | Demoliciones y retiros red principal |  | 3d | 2024-09-19 A | 2024-09-21 A | 295 | 100% |  | 2024-09-19 | 2024-09-21 | 3d |  |  | 369,643.13 | 369,643.13 | 369,643.13 |  |
| 297 | 2.3.2.2.3 | Excavaciones y cargue red principal |  | 3d | 2024-09-21 A | 2024-09-23 | 296FS-1d |  | 3d | 2024-09-21 | 2024-09-23 | 3d | 0d |  | 5,638,030.13 | 5,638,030.13 |  |  |
| 298 | 2.3.2.2.4 | Instalación de tuberia a presión y accesorios red principal |  | 2d | 2024-09-22 A | 2024-09-23 | 297FS-2d |  | 2d | 2024-09-22 | 2024-09-23 | 2d | 0d |  | 4,973,594.18 | 4,973,594.18 |  |  |
| 299 | 2.3.2.2.5 | Construcción de llenos |  | 3d | 2024-09-22 A | 2024-09-24 | 298FS-2d |  | 3d | 2024-09-22 | 2024-09-24 | 3d | 0d |  | 5,691,651.13 | 5,691,651.13 |  |  |
| 300 | 2.3.2.2.6 | Anillo piso 3 costado norte |  | 3d | 2024-09-22 A | 2024-09-24 | 298SS |  | 3d | 2024-09-22 | 2024-09-24 | 3d | 80d | 0d | 4,973,594.18 | 4,973,594.18 |  |  |
| 301 | 2.3.2.2.7 | Anillo piso 3 costado sur |  | 3d | 2024-09-26 | 2024-09-28 | 300FS+1d |  |  | 2024-09-26 | 2024-09-28 | 3d | 80d |  | 4,973,594.18 | 4,973,594.18 |  |  |
| 302 | 2.3.2.3 | **Estructura de tanques** |  | 10d | 2024-09-18 A | 2024-09-27 |  | 64% | 3.57d | 2024-09-18 | 2024-09-27 | 10d | 47d |  | 188,097,632.37 | 188,097,632.37 | 23,872,469.25 |  |
| 303 | 2.3.2.3.1 | Construcción de cerramientos |  | 1d | 2024-09-18 A | 2024-09-18 A | 268 | 100% |  | 2024-09-18 | 2024-09-18 | 1d |  |  | 821,409.53 | 821,409.53 | 821,409.53 | un |
| 304 | 2.3.2.3.2 | Demoliciones |  | 2d | 2024-09-18 A | 2024-09-19 A | 303FS-1d | 100% |  | 2024-09-18 | 2024-09-19 | 2d |  |  | 565,491.73 | 565,491.73 | 565,491.73 |  |
| 305 | 2.3.2.3.3 | Excavaciones y entibados |  | 2d | 2024-09-19 A | 2024-09-20 A | 304FS-1d | 100% |  | 2024-09-19 | 2024-09-20 | 2d |  |  | 9,829,908.73 | 9,829,908.73 | 9,829,908.73 |  |
| 306 | 2.3.2.3.4 | Cargue de material de excavación |  | 2d | 2024-09-20 A | 2024-09-21 A | 305FS-1d | 100% |  | 2024-09-20 | 2024-09-21 | 2d |  |  | 1,446,151.53 | 1,446,151.53 | 1,446,151.53 |  |
| 307 | 2.3.2.3.5 | Construcción de llenos |  | 2d | 2024-09-21 A | 2024-09-22 A | 306FS-1d | 100% |  | 2024-09-21 | 2024-09-22 | 2d |  |  | 11,209,507.73 | 11,209,507.73 | 11,209,507.73 |  |
| 308 | 2.3.2.3.6 | Construcción de estructura de tanques |  | 5d | 2024-09-23 A | 2024-09-27 | 307FS-2d, 299FS-2d |  | 5d | 2024-09-23 | 2024-09-27 | 5d | 47d | 0d | 164,225,163.12 | 164,225,163.12 |  |  |
| 309 | 2.3.2.4 | **Tanques** |  | 6d | 2024-09-28 | 2024-10-03 |  |  |  | 2024-09-28 | 2024-10-03 | 6d | 47d |  | 283,206,052.8 | 283,206,052.8 |  |  |
| 310 | 2.3.2.4.1 | Construcción de sistema de bombeo |  | 5d | 2024-09-28 | 2024-10-02 | 308 |  |  | 2024-09-28 | 2024-10-02 | 5d | 47d | 0d | 58,367,569.45 | 58,367,569.45 |  |  |
| 311 | 2.3.2.4.2 | Instalación de tanques de almcenamiento |  | 5d | 2024-09-29 | 2024-10-03 | 310FS-4d |  |  | 2024-09-29 | 2024-10-03 | 5d | 47d | 0d | 224,838,483.35 | 224,838,483.35 |  |  |
| 312 | 2.3.2.5 | FIN EJECUCIÓN - FASE 3-2 | milestone | 0d | 2024-10-03 | 2024-10-03 | 311FF |  |  | 2024-10-03 | 2024-10-03 | 0d | 47d | 0d |  |  |  |  |
| 313 | 2.3.3 | **FASE 3-3** |  | 89d | 2024-07-22 A | 2024-10-18 |  | 5% | 84.47d | 2024-07-22 | 2024-10-18 | 89d | 60d |  | 311,717,596.54 | 311,717,596.54 | 3,587,434.53 |  |
| 314 | 2.3.3.1 | **Red de aguas lluvias (Externa)** |  | 89d | 2024-07-22 A | 2024-10-18 |  | 8% | 82.33d | 2024-07-22 | 2024-10-18 | 89d | 60d |  | 151,725,413.81 | 151,725,413.81 | 3,587,434.53 |  |
| 315 | 2.3.3.1.1 | Localización y replanteo |  | 1d | 2024-10-04 | 2024-10-04 | 312 |  |  | 2024-10-04 | 2024-10-04 | 1d | 60d | 0d | 3,236,328.53 | 3,236,328.53 |  | m2 |
| 316 | 2.3.3.1.2 | Demoliciones y retiros |  | 2d | 2024-10-05 | 2024-10-06 | 315 |  |  | 2024-10-05 | 2024-10-06 | 2d | 60d | 0d | 8,738,152.53 | 8,738,152.53 |  | m2 |

| ID | WBS | Task | Type | Duration | Start | Finish | Predecessors | Complete | Baseline start | Baseline finish | Baseline duration | Total slack | Free slack | Cost | Baseline cost | Actual cost | Unidad |
| --- | --- | --- | --- | --- | --- | --- | --- | --- | --- | --- | --- | --- | --- | --- | --- | --- | --- |
| 317 | 2.3.3.1.3 | **Excavaciones y entibados** |  | 6d | 2024-10-08 | 2024-10-13 |  |  | 2024-10-08 | 2024-10-13 | 6d | 60d |  | 44,267,135.55 | 44,267,135.55 |  |  |
| 318 | 2.3.3.1.3.1 | TramoMH LE1-MHLE2 |  | 2d | 2024-10-08 | 2024-10-09 | 316FS+1d |  | 2024-10-08 | 2024-10-09 | 2d | 60d | 0d | 8,853,427.11 | 8,853,427.11 |  |  |
| 319 | 2.3.3.1.3.2 | Tramo MHL1-MHL1A |  | 2d | 2024-10-10 | 2024-10-11 | 318 |  | 2024-10-10 | 2024-10-11 | 2d | 60d | 0d | 8,853,427.11 | 8,853,427.11 |  |  |
| 320 | 2.3.3.1.3.3 | Construcción de camaras de inspección 1,20 MHL1 |  | 2d | 2024-10-10 | 2024-10-11 | 319SS |  | 2024-10-10 | 2024-10-11 | 2d | 67d |  | 8,853,427.11 | 8,853,427.11 |  |  |
| 321 | 2.3.3.1.3.4 | Tramo MHL2-MHLE1 |  | 2d | 2024-10-12 | 2024-10-13 | 319 |  | 2024-10-12 | 2024-10-13 | 2d | 60d | 0d | 8,853,427.11 | 8,853,427.11 |  |  |
| 322 | 2.3.3.1.3.5 | Construcción de camaras de inspección 1,20 MHL2 |  | 2d | 2024-10-12 | 2024-10-13 | 321SS |  | 2024-10-12 | 2024-10-13 | 2d | 65d |  | 8,853,427.11 | 8,853,427.11 |  |  |
| 323 | 2.3.3.1.4 | Cargue de material de excavación |  | 2d | 2024-10-12 | 2024-10-13 | 318FS+2d |  | 2024-10-12 | 2024-10-13 | 2d | 65d |  | 6,535,579.53 | 6,535,579.53 |  |  |
| 324 | 2.3.3.1.5 | **Nivelación y colocación de cama de triturado para tuberia** |  | 6d | 2024-10-10 | 2024-10-15 |  |  | 2024-10-10 | 2024-10-15 | 6d | 62d |  | 7,885,137.54 | 7,885,137.54 |  |  |
| 325 | 2.3.3.1.5.1 | TramoMH LE1-MHLE2 |  | 2d | 2024-10-10 | 2024-10-11 | 318 |  | 2024-10-10 | 2024-10-11 | 2d | 66d | 0d | 2,628,379.18 | 2,628,379.18 |  |  |
| 326 | 2.3.3.1.5.2 | Tramo MHL1-MHL1A |  | 2d | 2024-10-12 | 2024-10-13 | 319 |  | 2024-10-12 | 2024-10-13 | 2d | 62d | 0d | 2,628,379.18 | 2,628,379.18 |  |  |
| 327 | 2.3.3.1.5.3 | Tramo MHL2-MHLE1 |  | 2d | 2024-10-14 | 2024-10-15 | 321 |  | 2024-10-14 | 2024-10-15 | 2d | 60d | 0d | 2,628,379.18 | 2,628,379.18 |  |  |
| 328 | 2.3.3.1.6 | **Instalación de tuberia** |  | 6d | 2024-10-10 | 2024-10-15 |  |  | 2024-10-10 | 2024-10-15 | 6d | 62d |  | 10,859,502.54 | 10,859,502.54 |  |  |
| 329 | 2.3.3.1.6.1 | TramoMH LE1-MHLE2 |  | 2d | 2024-10-10 | 2024-10-11 | 325SS |  | 2024-10-10 | 2024-10-11 | 2d | 66d | 0d | 3,619,834.18 | 3,619,834.18 |  |  |
| 330 | 2.3.3.1.6.2 | Tramo MHL1-MHL1A |  | 2d | 2024-10-12 | 2024-10-13 | 326SS |  | 2024-10-12 | 2024-10-13 | 2d | 62d | 0d | 3,619,834.18 | 3,619,834.18 |  |  |
| 331 | 2.3.3.1.6.3 | Tramo MHL2-MHLE1 |  | 2d | 2024-10-14 | 2024-10-15 | 327SS |  | 2024-10-14 | 2024-10-15 | 2d | 60d | 0d | 3,619,834.18 | 3,619,834.18 |  |  |
| 332 | 2.3.3.1.7 | **Construcción de llenos** |  | 8d | 2024-10-11 | 2024-10-18 |  |  | 2024-10-11 | 2024-10-18 | 8d | 60d |  | 55,352,360.52 | 55,352,360.52 |  |  |
| 333 | 2.3.3.1.7.1 | TramoMH LE1-MHLE2 |  | 2d | 2024-10-11 | 2024-10-12 | 329SS+1d |  | 2024-10-11 | 2024-10-12 | 2d | 66d |  | 18,450,786.84 | 18,450,786.84 |  |  |
| 334 | 2.3.3.1.7.2 | Tramo MHL1-MHL1A |  | 2d | 2024-10-15 | 2024-10-16 | 330FS+1d |  | 2024-10-15 | 2024-10-16 | 2d | 62d | 0d | 18,450,786.84 | 18,450,786.84 |  |  |
| 335 | 2.3.3.1.7.3 | Tramo MHL2-MHLE1 |  | 2d | 2024-10-17 | 2024-10-18 | 331FS+1d |  | 2024-10-17 | 2024-10-18 | 2d | 60d | 0d | 18,450,786.84 | 18,450,786.84 |  |  |
| 336 | 2.3.3.1.8 | **Construcción de camaras de inspección 1,20** |  | 4d | 2024-10-15 | 2024-10-18 |  |  | 2024-10-15 | 2024-10-18 | 4d | 60d |  | 11,263,782.54 | 11,263,782.54 |  |  |
| 337 | 2.3.3.1.8.1 | MHL1 |  | 2d | 2024-10-15 | 2024-10-16 | 334SS |  | 2024-10-15 | 2024-10-16 | 2d | 62d |  | 5,631,891.27 | 5,631,891.27 |  |  |
| 338 | 2.3.3.1.8.2 | MHL2 |  | 2d | 2024-10-17 | 2024-10-18 | 335SS |  | 2024-10-17 | 2024-10-18 | 2d | 60d |  | 5,631,891.27 | 5,631,891.27 |  |  |
| 339 | 2.3.3.1.9 | Construcción de sumideros |  | 3d | 2024-07-22 A | 2024-07-24 A |  | 100% | 2024-07-22 | 2024-07-24 | 3d |  |  | 3,587,434.53 | 3,587,434.53 | 3,587,434.53 |  |
| 340 | 2.3.3.2 | **Obras civiles** |  | 14d | 2024-10-04 | 2024-10-17 |  |  | 2024-10-04 | 2024-10-17 | 14d | 47d |  | 159,992,182.73 | 159,992,182.73 |  |  |
| 341 | 2.3.3.2.1 | Construcción de filtros |  | 5d | 2024-10-04 | 2024-10-08 | 312 |  | 2024-10-04 | 2024-10-08 | 5d | 47d | 0d | 20,968,299.22 | 20,968,299.22 |  | un |
| 342 | 2.3.3.2.2 | Construcción de losas |  | 5d | 2024-10-07 | 2024-10-11 | 341FS-2d |  | 2024-10-07 | 2024-10-11 | 5d | 47d | 0d | 115,832,251.53 | 115,832,251.53 |  |  |
| 343 | 2.3.3.2.3 | Construcción de andenes |  | 5d | 2024-10-10 | 2024-10-14 | 342FS-2d |  | 2024-10-10 | 2024-10-14 | 5d | 47d | 0d | 21,021,854.99 | 21,021,854.99 |  |  |
| 344 | 2.3.3.2.4 | Instalación de de grama tipo macana |  | 4d | 2024-10-14 | 2024-10-17 | 343FS-1d |  | 2024-10-14 | 2024-10-17 | 4d | 47d | 0d | 2,169,776.99 | 2,169,776.99 |  |  |
| 345 | 2.3.3.3 | FIN EJECUCIÓN - FASE 3-3 | milestone | 0d | 2024-10-17 | 2024-10-17 | 344FF |  | 2024-10-17 | 2024-10-17 | 0d | 47d | 0d |  |  |  |  |

| ID | WBS | Task | Type | Duration | Start | Finish | Predecessors | Complete | Remaining | Baseline start | Baseline finish | Baseline duration | Total slack | Free slack | Cost | Baseline cost | Actual cost |
| --- | --- | --- | --- | --- | --- | --- | --- | --- | --- | --- | --- | --- | --- | --- | --- | --- | --- |
| 346 | 2.4 | **FASE 4** |  | 14d | 2024-10-18 | 2024-10-31 |  |  |  | 2024-10-18 | 2024-10-31 | 14d | 47d |  | 490,690,288.59 | 490,690,288.59 |  |
| 347 | 2.4.1 | Pruebas y ensayos |  | 5d | 2024-10-18 | 2024-10-22 | 149, 236, 268, 312, 345 |  |  | 2024-10-18 | 2024-10-22 | 5d | 47d | 0d | 56,008,055.53 | 56,008,055.53 |  |
| 348 | 2.4.2 | Construcción de carpeta asfaltica |  | 5d | 2024-10-21 | 2024-10-25 | 347FS-2d |  |  | 2024-10-21 | 2024-10-25 | 5d | 47d | 0d | 246,278,413.53 | 246,278,413.53 |  |
| 349 | 2.4.3 | Señalización y demarcación vial |  | 6d | 2024-10-26 | 2024-10-31 | 348 |  |  | 2024-10-26 | 2024-10-31 | 6d | 47d |  | 188,403,819.53 | 188,403,819.53 |  |
| 350 | 3 | **ACTIVIDADES TRANSVERSALES** |  | 149d | 2024-07-22 A | 2024-12-17 |  | 45% | 81.95d | 2024-07-22 | 2024-12-17 | 149d | 0d |  | 98,141,099 | 98,141,099 | 52,242,052.4 |
| 351 | 3.1 | INVERSIÓN GESTIÓN SOCIAL Y COMUNICACIONES |  | 149d | 2024-07-22 A | 2024-12-17 | 1SS | 45% | 81.95d | 2024-07-22 | 2024-12-17 | 149d | 0d |  | 17,925,000 | 17,925,000 | 8,066,250 |
| 352 | 3.2 | INVERSIÓN GESTIÓN AMBIENTAL |  | 149d | 2024-07-22 A | 2024-12-17 | 1SS | 45% | 81.95d | 2024-07-22 | 2024-12-17 | 149d | 0d |  | 21,469,763 | 21,469,763 | 9,661,393.35 |
| 353 | 3.3 | INVERSIÓN SEGURIDAD Y SALUD EN EL TRABAJO |  | 149d | 2024-07-22 A | 2024-12-17 | 1SS | 45% | 81.95d | 2024-07-22 | 2024-12-17 | 149d | 0d |  | 17,026,904 | 17,026,904 | 7,662,106.8 |
| 354 | 3.4 | PRESUPUESTO PLAN DE MANEJO DE TRANSITO |  | 149d | 2024-07-22 A | 2024-12-17 | 1SS | 45% | 81.95d | 2024-07-22 | 2024-12-17 | 149d | 0d |  | 27,031,145 | 27,031,145 | 12,164,015.25 |
| 355 | 3.5 | POLIZAS | milestone | 0d | 2024-07-22 A | 2024-07-22 A | 1SS | 100% |  | 2024-07-22 | 2024-07-22 | 0d |  |  | 14,688,287 | 14,688,287 | 14,688,287 |
| 356 | 4 | FIN DEL PROYECTO | milestone | 0d | 2024-12-17 | 2024-12-17 | 137, 161, 224, 311, 339, 349, 351, 352, 353, 354, 355, 267 |  |  | 2024-12-17 | 2024-12-17 | 0d | 0d |  |  |  |  |
