# EDU_PDT_ESTANDAR v2.0

Schedule from MS Project, 2024-09-12 to 2025-01-10, status date 2024-10-12, costs in $, A marks actual dates.

## Calendars

- Estándar: Mon-Fri 09:00-13:00, 15:00-19:00; Sat-Sun off.

## Schedule

| ID | WBS | Task | Type | Duration | Start | Finish | Predecessors | Complete | Remaining | Total slack | Free slack | Constraint | Cost | Actual cost | Código BIM | %programado | Desviación % | % financiero ejecutado | Unidad |
| --- | --- | --- | --- | --- | --- | --- | --- | --- | --- | --- | --- | --- | --- | --- | --- | --- | --- | --- | --- |
| 1 | 1 | **S.E. VENTANITAS** |  | 87d? | 2024-09-12 09:00 A | 2025-01-10 19:00 |  | 30% | 60.89d? | 0d |  |  | 415,832,997 | 95,450,237.75 | SEV | 24% | -6% | 22.9539835555667% |  |
| 2 | 1.1 | INICIO | milestone | 0d | 2024-09-12 19:00 | 2024-09-12 19:00 |  |  |  | 86d |  | finish no earlier than 2024-09-12 19:00 |  |  |  | 100% | 100% |  |  |
| 3 | 1.2 | **Bloque 2** |  | 20d | 2024-09-24 09:00 A | 2024-10-21 19:00 |  | 71% | 5.86d | 59d |  |  | 48,220,249 | 40,464,974 | B2 | 79% | 8% | 83.9169743814471% |  |
| 4 | 1.2.1 | **Piso 1** |  | 20d | 2024-09-24 09:00 A | 2024-10-21 19:00 |  | 71% | 5.86d | 59d |  |  | 48,220,249 | 40,464,974 | B2_P1 | 79% | 8% | 83.9169743814471% |  |
| 5 | 1.2.1.1 | **Aula 3** |  | 6.5d | 2024-09-24 09:00 A | 2024-10-02 13:00 |  | 95% | 0.34d | 72.5d |  |  | 15,111,566 | 15,060,255 | B2_P1_AU3 | 100% | 5% | 99.6604521331542% |  |
| 6 | 1.2.1.1.1 | **Cubiertas** |  | 6.5d | 2024-09-24 09:00 A | 2024-10-02 13:00 |  | 95% | 0.34d | 72.5d |  |  | 15,111,566 | 15,060,255 | B2_P1_AU3_CB | 100% | 5% | 99.6604521331542% |  |
| 7 | 1.2.1.1.1.1 | **Canoas** |  | 5.5d | 2024-09-24 09:00 A | 2024-10-01 13:00 A |  | 100% |  |  |  |  | 2,288,669 | 2,288,669 | B2_P1_AU3_CB_CN | 100% | 0% | 100% |  |
| 8 | 1.2.1.1.1.1.1 | Retiro de canoas |  | 1d | 2024-09-24 09:00 A | 2024-09-24 19:00 A | 359SS+8d | 100% |  |  |  |  | 133,712 | 133,712 | B2_P1_AU3_CB_CN_RT | 100% | 0% | 100% | ml |
| 9 | 1.2.1.1.1.1.2 | Suministro y colocación de canoa en U en lamina galvanizada calibre 24 moldurada, grafada y soldada en las uniones, desarrollo 0.70 m., incluye:embudos, boquillas, tapas, ganchos de fijación, pintura anticorrosiva verde y de acabado color a definir por in |  | 2d | 2024-09-27 15:00 A | 2024-10-01 13:00 A | 14 | 100% |  |  |  |  | 2,154,957 | 2,154,957 | B2_P1_AU3_CB_CN_STI | 100% | 0% | 100% | ml |
| 10 | 1.2.1.1.1.2 | **Ruanas** |  | 6.5d | 2024-09-24 09:00 A | 2024-10-02 13:00 A |  | 100% |  |  |  |  | 1,908,660 | 1,908,660 |  | 100% | 0% | 100% |  |
| 11 | 1.2.1.1.1.2.1 | Retiro de ruanas |  | 1.5d | 2024-09-24 09:00 A | 2024-09-25 13:00 A | 8SS | 100% |  |  |  |  | 137,142 | 137,142 |  | 100% | 0% | 100% | ml |
| 12 | 1.2.1.1.1.2.2 | Suministro y colocación de ruanas en lámina galvanizada calibre 24, incluye mortero, pintura anticorrosiva y a base de aceite, desarrollo 33 cm., pestaña de 5 cm. Canchada de muro, faja en revoque impermeabilizado con filete y todo lo necesario para su co |  | 1d | 2024-10-01 15:00 A | 2024-10-02 13:00 A | 9 | 100% |  |  |  |  | 1,771,518 | 1,771,518 |  | 100% | 0% | 100% | ml |
| 13 | 1.2.1.1.1.3 | **Mantenimiento** |  | 3.5d | 2024-09-24 09:00 A | 2024-09-27 13:00 A |  | 100% |  |  |  |  | 10,862,926 | 10,862,926 |  | 100% | 0% | 100% |  |
| 14 | 1.2.1.1.1.3.1 | Reparación de techo en teja de barro. Incluye: retiro de manto existente si es necesario, retiro de teja existente, reistalación de la misma, suministro y colocación de teja (del 20%), tablilla (del 100 %) , impermeabilización con manto asfaltico imperpol |  | 3.5d | 2024-09-24 09:00 A | 2024-09-27 13:00 A | 11SS | 100% |  |  |  |  | 10,862,926 | 10,862,926 |  | 100% | 0% | 100% | m² |
| 15 | 1.2.1.1.1.4 | Retiro de bajantes |  | 0.5d | 2024-09-25 09:00 | 2024-09-25 13:00 | 8 |  |  | 77.5d |  |  | 51,311 |  |  | 100% | 100% | 0% | ml |
| 16 | 1.2.1.2 | **Aula 4** |  | 6d | 2024-10-02 15:00 A | 2024-10-10 13:00 |  | 56% | 2.67d | 66.5d |  |  | 16,527,856 | 12,713,748 | B2_P1_AU4 | 100% | 44% | 76.9231532510932% |  |
| 17 | 1.2.1.2.1 | **Cubierta** |  | 6d | 2024-10-02 15:00 A | 2024-10-10 13:00 |  | 56% | 2.67d | 66.5d |  |  | 16,527,856 | 12,713,748 |  | 100% | 44% | 76.9231532510932% |  |
| 18 | 1.2.1.2.1.1 | **Canoas** |  | 5d | 2024-10-02 15:00 | 2024-10-09 13:00 |  |  |  | 67.5d |  |  | 3,762,797 |  |  | 100% | 100% | 0% |  |
| 19 | 1.2.1.2.1.1.1 | Suministro y colocación de canoa en U en lamina galvanizada calibre 24 moldurada, grafada y soldada en las uniones, desarrollo 0.70 m., incluye:embudos, boquillas, tapas, ganchos de fijación, pintura anticorrosiva verde y de acabado color a definir por in |  | 2d | 2024-10-07 15:00 | 2024-10-09 13:00 | 25 |  |  | 67.5d |  |  | 3,547,755 |  |  | 100% | 100% | 0% | ml |
| 20 | 1.2.1.2.1.1.2 | Retiro de canoas |  | 1.5d | 2024-10-02 15:00 | 2024-10-03 19:00 | 12 |  |  | 70.5d | 0d |  | 215,042 |  |  | 100% | 100% | 0% | ml |
| 21 | 1.2.1.2.1.2 | **Ruanas** |  | 6d | 2024-10-02 15:00 A | 2024-10-10 13:00 A |  | 100% |  |  |  |  | 1,850,822 | 1,850,822 |  | 100% | 0% | 100% |  |
| 22 | 1.2.1.2.1.2.1 | Retiro de ruanas |  | 1d | 2024-10-02 15:00 A | 2024-10-03 13:00 A | 20SS | 100% |  |  |  |  | 132,986 | 132,986 |  | 100% | 0% | 100% | ml |
| 23 | 1.2.1.2.1.2.2 | Suministro y colocación de ruanas en lámina galvanizada calibre 24, incluye mortero, pintura anticorrosiva y a base de aceite, desarrollo 33 cm., pestaña de 5 cm. Canchada de muro, faja en revoque impermeabilizado con filete y todo lo necesario para su co |  | 1d | 2024-10-09 15:00 A | 2024-10-10 13:00 A | 19 | 100% |  |  |  |  | 1,717,836 | 1,717,836 |  | 100% | 0% | 100% | ml |
| 24 | 1.2.1.2.1.3 | **Mantenimiento** |  | 3d | 2024-10-02 15:00 A | 2024-10-07 13:00 A |  | 100% |  |  |  |  | 10,862,926 | 10,862,926 |  | 100% | 0% | 100% |  |
| 25 | 1.2.1.2.1.3.1 | Reparación de techo en teja de barro. Incluye: retiro de manto existente si es necesario, retiro de teja existente, reistalación de la misma, suministro y colocación de teja (del 20%), tablilla (del 100 %) , impermeabilización con manto asfaltico imperpol |  | 3d | 2024-10-02 15:00 A | 2024-10-07 13:00 A | 22SS | 100% |  |  |  |  | 10,862,926 | 10,862,926 |  | 100% | 0% | 100% | m² |
| 26 | 1.2.1.2.1.4 | Retiro de bajantes |  | 0.5d | 2024-10-04 09:00 | 2024-10-04 13:00 | 20 |  |  | 70.5d |  |  | 51,311 |  |  | 100% | 100% | 0% | ml |

Notes:
- 1: Comentarios: Todas las tareas se deberán programar de manera automática y deberán tener, por lo menos, una actividad predecesora y otra sucesora (con excepción de los hitos de inicio y fin)

| ID | WBS | Task | Duration | Start | Finish | Predecessors | Complete | Remaining | Total slack | Free slack | Constraint | Cost | Actual cost | Código BIM | %programado | Desviación % | % financiero ejecutado | Unidad |
| --- | --- | --- | --- | --- | --- | --- | --- | --- | --- | --- | --- | --- | --- | --- | --- | --- | --- | --- |
| 27 | 1.2.1.3 | **Circulación** | 7.5d | 2024-10-10 15:00 A | 2024-10-21 19:00 |  | 62% | 2.86d | 22.5d |  |  | 16,580,827 | 12,690,971 | B2_P1_C | 43% | -19% | 76.5400362720147% |  |
| 28 | 1.2.1.3.1 | **Cubierta** | 7.5d | 2024-10-10 15:00 A | 2024-10-21 19:00 |  | 62% | 2.86d | 22.5d |  |  | 16,580,827 | 12,690,971 |  | 43% | -19% | 76.5400362720147% |  |
| 29 | 1.2.1.3.1.1 | **Canoas** | 4.5d | 2024-10-10 15:00 A | 2024-10-16 19:00 |  | 50% | 2.25d | 22.5d |  |  | 1,755,980 | 113,626 |  | 50% | 0% | 6.47080262873153% |  |
| 30 | 1.2.1.3.1.1.1 | Retiro de canoas | 1d | 2024-10-10 15:00 A | 2024-10-11 13:00 A | 23 | 100% |  |  |  |  | 113,626 | 113,626 |  | 100% | 0% | 100% | ml |
| 31 | 1.2.1.3.1.1.2 | Suministro y colocación de canoa en U en lamina galvanizada calibre 24 moldurada, grafada y soldada en las uniones, desarrollo 0.70 m., incluye:embudos, boquillas, tapas, ganchos de fijación, pintura anticorrosiva verde y de acabado color a definir por in | 1d | 2024-10-16 09:00 | 2024-10-16 19:00 | 36 |  |  | 22.5d | 0d |  | 1,642,354 |  |  | 0% | 0% | 0% | ml |
| 32 | 1.2.1.3.1.2 | **Ruanas** | 7.5d | 2024-10-10 15:00 A | 2024-10-21 19:00 |  | 33% | 5d | 22.5d |  |  | 2,421,492 | 173,990 |  | 33% | 0% | 7.18523951349003% |  |
| 33 | 1.2.1.3.1.2.1 | Retiro de ruanas | 1.5d | 2024-10-10 15:00 A | 2024-10-11 19:00 A | 30SS | 100% |  |  |  |  | 173,990 | 173,990 |  | 100% | 0% | 100% | ml |
| 34 | 1.2.1.3.1.2.2 | Suministro y colocación de ruanas en lámina galvanizada calibre 24, incluye mortero, pintura anticorrosiva y a base de aceite, desarrollo 33 cm., pestaña de 5 cm. Canchada de muro, faja en revoque impermeabilizado con filete y todo lo necesario para su co | 3d | 2024-10-17 09:00 | 2024-10-21 19:00 | 31 |  |  | 22.5d | 0d |  | 2,247,502 |  |  | 0% | 0% | 0% | ml |
| 35 | 1.2.1.3.1.3 | **Mantenimientos** | 3.5d | 2024-10-10 15:00 A | 2024-10-15 19:00 A |  | 100% |  |  |  |  | 12,358,201 | 12,358,201 |  | 43% | -57% | 100% |  |
| 36 | 1.2.1.3.1.3.1 | Reparación de techo en teja de barro. Incluye: retiro de manto existente si es necesario, retiro de teja existente, reistalación de la misma, suministro y colocación de teja (del 20%), tablilla (del 100 %) , impermeabilización con manto asfaltico imperpol | 3.5d | 2024-10-10 15:00 A | 2024-10-15 19:00 A | 33SS | 100% |  |  |  |  | 12,358,201 | 12,358,201 |  | 43% | -57% | 100% | m² |
| 37 | 1.2.1.3.1.4 | Retiro de bajantes | 0.5d | 2024-10-11 15:00 A | 2024-10-11 19:00 A | 30 | 100% |  |  |  |  | 45,154 | 45,154 |  | 100% | 0% | 100% | ml |
| 38 | 1.3 | **Bloque 1** | 36.5d | 2024-10-22 09:00 | 2024-12-11 13:00 |  |  |  | 22.5d |  |  | 122,795,178 |  | BLQ1 | 0% | 0% | 0% |  |
| 39 | 1.3.1 | **Piso 1** | 36.5d | 2024-10-22 09:00 | 2024-12-11 13:00 |  |  |  | 22.5d |  |  | 122,795,178 |  | P1 | 0% | 0% | 0% |  |
| 40 | 1.3.1.1 | **Aula 5** | 8d | 2024-10-22 09:00 | 2024-10-31 19:00 |  |  |  | 22.5d |  |  | 20,257,442 |  | SEV_BLQ1_P1_AUL5 | 0% | 0% | 0% |  |
| 41 | 1.3.1.1.1 | **Cubierta** | 6d | 2024-10-22 09:00 | 2024-10-29 19:00 |  |  |  | 22.5d |  |  | 18,118,693 |  |  | 0% | 0% | 0% |  |
| 42 | 1.3.1.1.1.1 | **Canoas** | 5d | 2024-10-22 09:00 | 2024-10-28 19:00 |  |  |  | 22.5d |  |  | 2,498,522 |  |  | 0% | 0% | 0% |  |
| 43 | 1.3.1.1.1.1.1 | Retiro de canoas | 1d | 2024-10-22 09:00 | 2024-10-22 19:00 | 34 |  |  | 22.5d | 0d | start no earlier than 2024-09-12 09:00 | 137,848 |  |  | 0% | 0% | 0% | ml |
| 44 | 1.3.1.1.1.1.2 | Suministro y colocación de canoa en U en lamina galvanizada calibre 24 moldurada, grafada y soldada en las uniones, desarrollo 0.70 m., incluye:embudos, boquillas, tapas, ganchos de fijación, pintura anticorrosiva verde y de acabado color a definir por in | 1d | 2024-10-28 09:00 | 2024-10-28 19:00 | 49 |  |  | 22.5d | 0d | start no earlier than 2024-09-12 09:00 | 2,360,674 |  |  | 0% | 0% | 0% | ml |
| 45 | 1.3.1.1.1.2 | **Ruanas** | 6d | 2024-10-22 09:00 | 2024-10-29 19:00 |  |  |  | 22.5d |  |  | 1,619,470 |  |  | 0% | 0% | 0% |  |
| 46 | 1.3.1.1.1.2.1 | Retiro de ruanas | 1.5d | 2024-10-22 09:00 | 2024-10-23 13:00 | 43SS |  |  | 22.5d | 0d | start no earlier than 2024-09-12 09:00 | 116,363 |  |  | 0% | 0% | 0% | ml |
| 47 | 1.3.1.1.1.2.2 | Suministro y colocación de ruanas en lámina galvanizada calibre 24, incluye mortero, pintura anticorrosiva y a base de aceite, desarrollo 33 cm., pestaña de 5 cm. Canchada de muro, faja en revoque impermeabilizado con filete y todo lo necesario para su co | 1d | 2024-10-29 09:00 | 2024-10-29 19:00 | 44 |  |  | 22.5d | 0d | start no earlier than 2024-09-12 09:00 | 1,503,107 |  |  | 0% | 0% | 0% | ml |
| 48 | 1.3.1.1.1.3 | **Mantenimiento** | 4d | 2024-10-22 09:00 | 2024-10-25 19:00 |  |  |  | 22.5d |  |  | 14,000,701 |  |  | 0% | 0% | 0% |  |
| 49 | 1.3.1.1.1.3.1 | Reparación de techo en teja de barro. Incluye: retiro de manto existente si es necesario, retiro de teja existente, reistalación de la misma, suministro y colocación de teja (del 20%), tablilla (del 100 %) , impermeabilización con manto asfaltico imperpol | 4d | 2024-10-22 09:00 | 2024-10-25 19:00 | 46SS |  |  | 22.5d | 0d | start no earlier than 2024-09-12 09:00 | 14,000,701 |  |  | 0% | 0% | 0% | m² |
| 50 | 1.3.1.1.2 | **Piso** | 2d | 2024-10-30 09:00 | 2024-10-31 19:00 |  |  |  | 51d |  |  | 2,138,749 |  |  | 0% | 0% | 0% |  |
| 51 | 1.3.1.1.2.1 | PULIDA Y BRILLADA DE PISO EN BALDOSA GRANO EXISTENTE. Incluye todo lo necesario para su correcta construcción y funcionamiento. | 2d | 2024-10-30 09:00 | 2024-10-31 19:00 | 47 |  |  | 51d |  | start no earlier than 2024-09-12 09:00 | 2,138,749 |  |  | 0% | 0% | 0% | m² |

Notes:
- 38: Comentarios: Este capítulo deberá incluir toda la obra física a ejecutar, valorada en costo directo + AU.

| ID | WBS | Task | Duration | Start | Finish | Predecessors | Total slack | Free slack | Constraint | Cost | Código BIM | %programado | Desviación % | % financiero ejecutado | Unidad |
| --- | --- | --- | --- | --- | --- | --- | --- | --- | --- | --- | --- | --- | --- | --- | --- |
| 52 | 1.3.1.2 | **Aula 6** | 10d | 2024-10-30 09:00 | 2024-11-12 19:00 |  | 22.5d |  |  | 20,305,013 | SEV_BLQ1_P1_AUL6 | 0% | 0% | 0% |  |
| 53 | 1.3.1.2.1 | **Cubierta** | 7d | 2024-10-30 09:00 | 2024-11-07 19:00 |  | 22.5d |  |  | 18,165,744 |  | 0% | 0% | 0% |  |
| 54 | 1.3.1.2.1.1 | **Canoa** | 6d | 2024-10-30 09:00 | 2024-11-06 19:00 |  | 22.5d |  |  | 2,552,062 |  | 0% | 0% | 0% |  |
| 55 | 1.3.1.2.1.1.1 | Retiro de canoas | 1d | 2024-10-30 09:00 | 2024-10-30 19:00 | 47 | 22.5d | 0d | start no earlier than 2024-09-12 09:00 | 140,802 |  | 0% | 0% | 0% | ml |
| 56 | 1.3.1.2.1.1.2 | Suministro y colocación de canoa en U en lamina galvanizada calibre 24 moldurada, grafada y soldada en las uniones, desarrollo 0.70 m., incluye:embudos, boquillas, tapas, ganchos de fijación, pintura anticorrosiva verde y de acabado color a definir por in | 1d | 2024-11-06 09:00 | 2024-11-06 19:00 | 61FS+1d | 43d | 0d | start no earlier than 2024-09-12 09:00 | 2,411,260 |  | 0% | 0% | 0% | ml |
| 57 | 1.3.1.2.1.2 | **Ruanas** | 7d | 2024-10-30 09:00 | 2024-11-07 19:00 |  | 22.5d |  |  | 1,654,173 |  | 0% | 0% | 0% |  |
| 58 | 1.3.1.2.1.2.1 | Retiro de ruanas | 1d | 2024-10-30 09:00 | 2024-10-30 19:00 | 55SS | 22.5d | 0d | start no earlier than 2024-09-12 09:00 | 118,857 |  | 0% | 0% | 0% | ml |
| 59 | 1.3.1.2.1.2.2 | Suministro y colocación de ruanas en lámina galvanizada calibre 24, incluye mortero, pintura anticorrosiva y a base de aceite, desarrollo 33 cm., pestaña de 5 cm. Canchada de muro, faja en revoque impermeabilizado con filete y todo lo necesario para su co | 1d | 2024-11-07 09:00 | 2024-11-07 19:00 | 56 | 43d | 0d | start no earlier than 2024-09-12 09:00 | 1,535,316 |  | 0% | 0% | 0% | ml |
| 60 | 1.3.1.2.1.3 | **Mantenimiento** | 4d | 2024-10-30 09:00 | 2024-11-04 19:00 |  | 22.5d |  |  | 13,959,509 |  | 0% | 0% | 0% |  |
| 61 | 1.3.1.2.1.3.1 | Reparación de techo en teja de barro. Incluye: retiro de manto existente si es necesario, retiro de teja existente, reistalación de la misma, suministro y colocación de teja (del 20%), tablilla (del 100 %) , impermeabilización con manto asfaltico imperpol | 4d | 2024-10-30 09:00 | 2024-11-04 19:00 | 58SS | 22.5d | 0d | start no earlier than 2024-09-12 09:00 | 13,959,509 |  | 0% | 0% | 0% | m² |
| 62 | 1.3.1.2.2 | **Piso** | 3d | 2024-11-08 09:00 | 2024-11-12 19:00 |  | 43d |  |  | 2,139,269 |  | 0% | 0% | 0% |  |
| 63 | 1.3.1.2.2.1 | PULIDA Y BRILLADA DE PISO EN BALDOSA GRANO EXISTENTE. Incluye todo lo necesario para su correcta construcción y funcionamiento. | 3d | 2024-11-08 09:00 | 2024-11-12 19:00 | 59 | 43d |  | start no earlier than 2024-09-12 09:00 | 2,139,269 |  | 0% | 0% | 0% | m² |
| 64 | 1.3.1.3 | **Aula Preescola** | 9d | 2024-11-06 09:00 | 2024-11-18 19:00 |  | 22.5d |  |  | 21,872,891 | SEV_BLQ1_P1_AUL_PREE | 0% | 0% | 0% |  |
| 65 | 1.3.1.3.1 | **Cubierta** | 6d | 2024-11-06 09:00 | 2024-11-13 19:00 |  | 22.5d |  |  | 19,682,311 |  | 0% | 0% | 0% |  |
| 66 | 1.3.1.3.1.1 | **Canoa** | 5d | 2024-11-06 09:00 | 2024-11-12 19:00 |  | 22.5d |  |  | 3,936,586 |  | 0% | 0% | 0% |  |
| 67 | 1.3.1.3.1.1.1 | Retiro de canoas | 1d | 2024-11-06 09:00 | 2024-11-06 19:00 | 61FS+1d | 22.5d | 0d |  | 226,956 |  | 0% | 0% | 0% | ml |
| 68 | 1.3.1.3.1.1.2 | Suministro y colocación de canoa en U en lamina galvanizada calibre 24 moldurada, grafada y soldada en las uniones, desarrollo 0.70 m., incluye:embudos, boquillas, tapas, ganchos de fijación, pintura anticorrosiva verde y de acabado color a definir por in | 1d | 2024-11-12 09:00 | 2024-11-12 19:00 | 73 | 22.5d | 0d |  | 3,709,630 |  | 0% | 0% | 0% | ml |
| 69 | 1.3.1.3.1.2 | **Ruanas** | 6d | 2024-11-06 09:00 | 2024-11-13 19:00 |  | 22.5d |  |  | 1,777,561 |  | 0% | 0% | 0% |  |
| 70 | 1.3.1.3.1.2.1 | Retiro de ruanas | 1d | 2024-11-06 09:00 | 2024-11-06 19:00 | 67SS | 22.5d | 0d |  | 127,722 |  | 0% | 0% | 0% | ml |
| 71 | 1.3.1.3.1.2.2 | Suministro y colocación de ruanas en lámina galvanizada calibre 24, incluye mortero, pintura anticorrosiva y a base de aceite, desarrollo 33 cm., pestaña de 5 cm. Canchada de muro, faja en revoque impermeabilizado con filete y todo lo necesario para su co | 1d | 2024-11-13 09:00 | 2024-11-13 19:00 | 68 | 22.5d | 0d |  | 1,649,839 |  | 0% | 0% | 0% | ml |
| 72 | 1.3.1.3.1.3 | **Mantenimiento** | 4d | 2024-11-06 09:00 | 2024-11-11 19:00 |  | 22.5d |  |  | 13,968,164 |  | 0% | 0% | 0% |  |
| 73 | 1.3.1.3.1.3.1 | Reparación de techo en teja de barro. Incluye: retiro de manto existente si es necesario, retiro de teja existente, reistalación de la misma, suministro y colocación de teja (del 20%), tablilla (del 100 %) , impermeabilización con manto asfaltico imperpol | 4d | 2024-11-06 09:00 | 2024-11-11 19:00 | 70SS | 22.5d | 0d |  | 13,968,164 |  | 0% | 0% | 0% | m² |
| 74 | 1.3.1.3.2 | Retiro de bajantes | 1d | 2024-11-07 09:00 | 2024-11-07 19:00 | 67 | 46d |  |  | 51,311 |  | 0% | 0% | 0% | ml |
| 75 | 1.3.1.3.3 | **Piso** | 2d | 2024-11-15 09:00 | 2024-11-18 19:00 |  | 39d |  |  | 2,139,269 |  | 0% | 0% | 0% |  |
| 76 | 1.3.1.3.3.1 | PULIDA Y BRILLADA DE PISO EN BALDOSA GRANO EXISTENTE. Incluye todo lo necesario para su correcta construcción y funcionamiento. | 2d | 2024-11-15 09:00 | 2024-11-18 19:00 | 71FS+1d | 39d |  |  | 2,139,269 |  | 0% | 0% | 0% | m² |

| ID | WBS | Task | Duration | Start | Finish | Predecessors | Total slack | Free slack | Cost | Código BIM | %programado | Desviación % | % financiero ejecutado | Unidad |
| --- | --- | --- | --- | --- | --- | --- | --- | --- | --- | --- | --- | --- | --- | --- |
| 77 | 1.3.1.4 | **Baños Sociales** | 5d | 2024-11-14 09:00 | 2024-11-20 19:00 |  | 22.5d |  | 14,291,113 | SEV_BLQ1_P1_WC_SOC | 0% | 0% | 0% |  |
| 78 | 1.3.1.4.1 | **Cubierta** | 5d | 2024-11-14 09:00 | 2024-11-20 19:00 |  | 22.5d |  | 14,291,113 |  | 0% | 0% | 0% |  |
| 79 | 1.3.1.4.1.1 | **Ruanas** | 5d | 2024-11-14 09:00 | 2024-11-20 19:00 |  | 22.5d |  | 331,604 |  | 0% | 0% | 0% |  |
| 80 | 1.3.1.4.1.1.1 | Retiro de ruanas | 0.5d | 2024-11-14 09:00 | 2024-11-14 13:00 | 71 | 22.5d | 0d | 23,826 |  | 0% | 0% | 0% | ml |
| 81 | 1.3.1.4.1.1.2 | Suministro y colocación de ruanas en lámina galvanizada calibre 24, incluye mortero, pintura anticorrosiva y a base de aceite, desarrollo 33 cm., pestaña de 5 cm. Canchada de muro, faja en revoque impermeabilizado con filete y todo lo necesario para su co | 1d | 2024-11-20 09:00 | 2024-11-20 19:00 | 83 | 37d |  | 307,778 |  | 0% | 0% | 0% | ml |
| 82 | 1.3.1.4.1.2 | **Mantenimiento** | 4d | 2024-11-14 09:00 | 2024-11-19 19:00 |  | 22.5d |  | 13,959,509 |  | 0% | 0% | 0% |  |
| 83 | 1.3.1.4.1.2.1 | Reparación de techo en teja de barro. Incluye: retiro de manto existente si es necesario, retiro de teja existente, reistalación de la misma, suministro y colocación de teja (del 20%), tablilla (del 100 %) , impermeabilización con manto asfaltico imperpol | 4d | 2024-11-14 09:00 | 2024-11-19 19:00 | 80SS | 22.5d | 0d | 13,959,509 |  | 0% | 0% | 0% | m2 |
| 84 | 1.3.1.5 | **Tienda** | 5.5d | 2024-11-21 09:00 | 2024-11-28 13:00 |  | 22.5d |  | 15,431,957 | SEV_BLQ1_P1_TND | 0% | 0% | 0% |  |
| 85 | 1.3.1.5.1 | **Cubierta** | 5.5d | 2024-11-21 09:00 | 2024-11-28 13:00 |  | 22.5d |  | 15,431,957 |  | 0% | 0% | 0% |  |
| 86 | 1.3.1.5.1.1 | **Canoas** | 4.5d | 2024-11-21 09:00 | 2024-11-27 13:00 |  | 22.5d |  | 391,579 |  | 0% | 0% | 0% |  |
| 87 | 1.3.1.5.1.1.1 | Retiro de canoas | 0.5d | 2024-11-21 09:00 | 2024-11-21 13:00 | 83FS+1d | 22.5d | 0d | 29,047 |  | 0% | 0% | 0% | ml |
| 88 | 1.3.1.5.1.1.2 | Suministro y colocación de canoa en U en lamina galvanizada calibre 24 moldurada, grafada y soldada en las uniones, desarrollo 0.70 m., incluye:embudos, boquillas, tapas, ganchos de fijación, pintura anticorrosiva verde y de acabado color a definir por in | 0.5d | 2024-11-27 09:00 | 2024-11-27 13:00 | 93 | 22.5d | 0d | 362,532 |  | 0% | 0% | 0% | ml |
| 89 | 1.3.1.5.1.2 | **Ruanas** | 5.5d | 2024-11-21 09:00 | 2024-11-28 13:00 |  | 22.5d |  | 1,048,799 |  | 0% | 0% | 0% |  |
| 90 | 1.3.1.5.1.2.1 | Retiro de ruanas | 1d | 2024-11-21 09:00 | 2024-11-21 19:00 | 87SS | 22.5d | 0d | 75,358 |  | 0% | 0% | 0% | ml |
| 91 | 1.3.1.5.1.2.2 | Suministro y colocación de ruanas en lámina galvanizada calibre 24, incluye mortero, pintura anticorrosiva y a base de aceite, desarrollo 33 cm., pestaña de 5 cm. Canchada de muro, faja en revoque impermeabilizado con filete y todo lo necesario para su co | 1d | 2024-11-27 15:00 | 2024-11-28 13:00 | 88 | 22.5d | 0d | 973,441 |  | 0% | 0% | 0% | ml |
| 92 | 1.3.1.5.1.3 | **Mantenimiento** | 4d | 2024-11-21 09:00 | 2024-11-26 19:00 |  | 22.5d |  | 13,959,509 |  | 0% | 0% | 0% |  |
| 93 | 1.3.1.5.1.3.1 | Reparación de techo en teja de barro. Incluye: retiro de manto existente si es necesario, retiro de teja existente, reistalación de la misma, suministro y colocación de teja (del 20%), tablilla (del 100 %) , impermeabilización con manto asfaltico imperpol | 4d | 2024-11-21 09:00 | 2024-11-26 19:00 | 90SS | 22.5d | 0d | 13,959,509 |  | 0% | 0% | 0% | m² |
| 94 | 1.3.1.5.1.4 | Retiro de bajantes | 0.5d | 2024-11-21 15:00 | 2024-11-21 19:00 | 87 | 36d |  | 32,070 |  | 0% | 0% | 0% | ml |
| 95 | 1.3.1.6 | **Circulación** | 9d | 2024-11-28 15:00 | 2024-12-11 13:00 |  | 22.5d |  | 30,636,762 | SEV_BLQ1_P1_CIRC | 0% | 0% | 0% |  |
| 96 | 1.3.1.6.1 | **Cubierta** | 9d | 2024-11-28 15:00 | 2024-12-11 13:00 |  | 22.5d |  | 30,242,720 |  | 0% | 0% | 0% |  |
| 97 | 1.3.1.6.1.1 | **Canoas** | 6d | 2024-11-28 15:00 | 2024-12-06 13:00 |  | 22.5d |  | 8,734,855 |  | 0% | 0% | 0% |  |
| 98 | 1.3.1.6.1.1.1 | Retiro de canoas | 2d | 2024-11-28 15:00 | 2024-12-02 13:00 | 91 | 22.5d | 0d | 489,359 |  | 0% | 0% | 0% | ml |
| 99 | 1.3.1.6.1.1.2 | Suministro y colocación de canoa en U en lamina galvanizada calibre 24 moldurada, grafada y soldada en las uniones, desarrollo 0.70 m., incluye:embudos, boquillas, tapas, ganchos de fijación, pintura anticorrosiva verde y de acabado color a definir por in | 2d | 2024-12-04 15:00 | 2024-12-06 13:00 | 104 | 22.5d | 0d | 8,245,496 |  | 0% | 0% | 0% | ml |
| 100 | 1.3.1.6.1.2 | **Ruanas** | 9d | 2024-11-28 15:00 | 2024-12-11 13:00 |  | 22.5d |  | 7,330,027 |  | 0% | 0% | 0% |  |
| 101 | 1.3.1.6.1.2.1 | Retiro de ruanas | 4d | 2024-11-28 15:00 | 2024-12-04 13:00 | 98SS | 22.5d | 0d | 526,680 |  | 0% | 0% | 0% | ml |
| 102 | 1.3.1.6.1.2.2 | Suministro y colocación de ruanas en lámina galvanizada calibre 24, incluye mortero, pintura anticorrosiva y a base de aceite, desarrollo 33 cm., pestaña de 5 cm. Canchada de muro, faja en revoque impermeabilizado con filete y todo lo necesario para su co | 3d | 2024-12-06 15:00 | 2024-12-11 13:00 | 99 | 22.5d |  | 6,803,347 |  | 0% | 0% | 0% | ml |

| ID | WBS | Task | Duration | Start | Finish | Predecessors | Complete | Total slack | Free slack | Cost | Actual cost | %programado | Desviación % | % financiero ejecutado | Unidad | Código BIM |
| --- | --- | --- | --- | --- | --- | --- | --- | --- | --- | --- | --- | --- | --- | --- | --- | --- |
| 103 | 1.3.1.6.1.3 | **Mantenimiento** | 4d | 2024-11-28 15:00 | 2024-12-04 13:00 |  |  | 22.5d |  | 13,959,509 |  | 0% | 0% | 0% |  |  |
| 104 | 1.3.1.6.1.3.1 | Reparación de techo en teja de barro. Incluye: retiro de manto existente si es necesario, retiro de teja existente, reistalación de la misma, suministro y colocación de teja (del 20%), tablilla (del 100 %) , impermeabilización con manto asfaltico imperpol | 4d | 2024-11-28 15:00 | 2024-12-04 13:00 | 101SS |  | 22.5d | 0d | 13,959,509 |  | 0% | 0% | 0% | m² |  |
| 105 | 1.3.1.6.1.4 | Retiro de bajantes | 1.5d | 2024-12-02 15:00 | 2024-12-03 19:00 | 98 |  | 28d |  | 218,329 |  | 0% | 0% | 0% | ml |  |
| 106 | 1.3.1.6.2 | **Sistema Eléctrico** | 2d | 2024-12-05 15:00 | 2024-12-09 13:00 |  |  | 24.5d |  | 394,042 |  | 0% | 0% | 0% |  |  |
| 107 | 1.3.1.6.2.1 | Retiro de luminaria existente. Incluye el reintegro donde indique la interventoria dentro de la ciudad de Medellin y los elementos necesarios para su desinstalación. No incluye reparacion, ni chequeo, ni reinstalación. | 2d | 2024-12-05 15:00 | 2024-12-09 13:00 | 104FS+1d |  | 24.5d |  | 394,042 |  | 0% | 0% | 0% | un |  |
| 108 | 1.4 | **Bloque 3** | 20.5d | 2024-09-24 09:00 A | 2024-10-22 13:00 A |  | 100% |  |  | 47,309,826 | 47,309,826 | 72% | -28% | 100% |  | BLQ3 |
| 109 | 1.4.1 | **Piso 1** | 20.5d | 2024-09-24 09:00 A | 2024-10-22 13:00 A |  | 100% |  |  | 47,309,826 | 47,309,826 | 72% | -28% | 100% |  |  |
| 110 | 1.4.1.1 | **Coordinación** | 4d | 2024-09-24 09:00 A | 2024-09-27 19:00 A |  | 100% |  |  | 7,345,317 | 7,345,317 | 100% | 0% | 100% |  | SEV_BLQ3_P1_COOR |
| 111 | 1.4.1.1.1 | **Cubierta** | 4d | 2024-09-24 09:00 A | 2024-09-27 19:00 A |  | 100% |  |  | 7,345,317 | 7,345,317 | 100% | 0% | 100% |  |  |
| 112 | 1.4.1.1.1.1 | **Canoas** | 2.5d | 2024-09-24 09:00 A | 2024-09-26 13:00 A |  | 100% |  |  | 1,194,675 | 1,194,675 | 100% | 0% | 100% |  |  |
| 113 | 1.4.1.1.1.1.1 | Retiro de canoas | 0.5d | 2024-09-24 09:00 A | 2024-09-24 13:00 A | 8SS | 100% |  |  | 73,355 | 73,355 | 100% | 0% | 100% | ml |  |
| 114 | 1.4.1.1.1.1.2 | Suministro y colocación de canoa en U en lamina galvanizada calibre 24 moldurada, grafada y soldada en las uniones, desarrollo 0.70 m., incluye:embudos, boquillas, tapas, ganchos de fijación, pintura anticorrosiva verde y de acabado color a definir por in | 1d | 2024-09-25 15:00 A | 2024-09-26 13:00 A | 119 | 100% |  |  | 1,121,320 | 1,121,320 | 100% | 0% | 100% | ml |  |
| 115 | 1.4.1.1.1.2 | **Ruanas** | 4d | 2024-09-24 09:00 A | 2024-09-27 19:00 A |  | 100% |  |  | 1,014,097 | 1,014,097 | 100% | 0% | 100% |  |  |
| 116 | 1.4.1.1.1.2.1 | Retiro de ruanas | 1d | 2024-09-24 09:00 A | 2024-09-24 19:00 A | 113SS | 100% |  |  | 72,866 | 72,866 | 100% | 0% | 100% | ml |  |
| 117 | 1.4.1.1.1.2.2 | Suministro y colocación de ruanas en lámina galvanizada calibre 24, incluye mortero, pintura anticorrosiva y a base de aceite, desarrollo 33 cm., pestaña de 5 cm. Canchada de muro, faja en revoque impermeabilizado con filete y todo lo necesario para su co | 1.5d | 2024-09-26 15:00 A | 2024-09-27 19:00 A | 114 | 100% |  |  | 941,231 | 941,231 | 100% | 0% | 100% | ml |  |
| 118 | 1.4.1.1.1.3 | **Mantenimiento** | 1.5d | 2024-09-24 09:00 A | 2024-09-25 13:00 A |  | 100% |  |  | 5,085,234 | 5,085,234 | 100% | 0% | 100% |  |  |
| 119 | 1.4.1.1.1.3.1 | Reparación de techo en teja de barro. Incluye: retiro de manto existente si es necesario, retiro de teja existente, reistalación de la misma, suministro y colocación de teja (del 20%), tablilla (del 100 %) , impermeabilización con manto asfaltico imperpol | 1.5d | 2024-09-24 09:00 A | 2024-09-25 13:00 A | 116SS | 100% |  |  | 5,085,234 | 5,085,234 | 100% | 0% | 100% | m² |  |
| 120 | 1.4.1.1.1.4 | Retiro de bajantes | 0.5d | 2024-09-24 15:00 A | 2024-09-24 19:00 A | 113 | 100% |  |  | 51,311 | 51,311 | 100% | 0% | 100% | ml |  |
| 121 | 1.4.1.2 | **Sala de Profesores** | 4d | 2024-09-25 15:00 A | 2024-10-01 13:00 A |  | 100% |  |  | 7,361,212 | 7,361,212 | 100% | 0% | 100% |  | SEV_BLQ3_P1_SAL_PROF |
| 122 | 1.4.1.2.1 | **Cubierta** | 4d | 2024-09-25 15:00 A | 2024-10-01 13:00 A |  | 100% |  |  | 7,361,212 | 7,361,212 | 100% | 0% | 100% |  |  |
| 123 | 1.4.1.2.1.1 | **Canoas** | 2.5d | 2024-09-25 15:00 A | 2024-09-27 19:00 A |  | 100% |  |  | 1,194,675 | 1,194,675 | 100% | 0% | 100% |  |  |
| 124 | 1.4.1.2.1.1.1 | Retiro de canoas | 0.5d | 2024-09-25 15:00 A | 2024-09-25 19:00 A | 119 | 100% |  |  | 73,355 | 73,355 | 100% | 0% | 100% | ml |  |
| 125 | 1.4.1.2.1.1.2 | Suministro y colocación de canoa en U en lamina galvanizada calibre 24 moldurada, grafada y soldada en las uniones, desarrollo 0.70 m., incluye:embudos, boquillas, tapas, ganchos de fijación, pintura anticorrosiva verde y de acabado color a definir por in | 1d | 2024-09-27 09:00 A | 2024-09-27 19:00 A | 130 | 100% |  |  | 1,121,320 | 1,121,320 | 100% | 0% | 100% | ml |  |
| 126 | 1.4.1.2.1.2 | **Ruanas** | 4d | 2024-09-25 15:00 A | 2024-10-01 13:00 A |  | 100% |  |  | 1,025,663 | 1,025,663 | 100% | 0% | 100% |  |  |
| 127 | 1.4.1.2.1.2.1 | Retiro de ruanas | 1d | 2024-09-25 15:00 A | 2024-09-26 13:00 A | 124SS | 100% |  |  | 73,696 | 73,696 | 100% | 0% | 100% | ml |  |
| 128 | 1.4.1.2.1.2.2 | Suministro y colocación de ruanas en lámina galvanizada calibre 24, incluye mortero, pintura anticorrosiva y a base de aceite, desarrollo 33 cm., pestaña de 5 cm. Canchada de muro, faja en revoque impermeabilizado con filete y todo lo necesario para su co | 1.5d | 2024-09-30 09:00 A | 2024-10-01 13:00 A | 125 | 100% |  |  | 951,967 | 951,967 | 100% | 0% | 100% | ml |  |

| ID | WBS | Task | Duration | Start | Finish | Predecessors | Complete | Cost | Actual cost | %programado | Desviación % | % financiero ejecutado | Unidad | Código BIM |
| --- | --- | --- | --- | --- | --- | --- | --- | --- | --- | --- | --- | --- | --- | --- |
| 129 | 1.4.1.2.1.3 | **Mantenimiento** | 1.5d | 2024-09-25 15:00 A | 2024-09-26 19:00 A |  | 100% | 5,089,563 | 5,089,563 | 100% | 0% | 100% |  |  |
| 130 | 1.4.1.2.1.3.1 | Reparación de techo en teja de barro. Incluye: retiro de manto existente si es necesario, retiro de teja existente, reistalación de la misma, suministro y colocación de teja (del 20%), tablilla (del 100 %) , impermeabilización con manto asfaltico imperpol | 1.5d | 2024-09-25 15:00 A | 2024-09-26 19:00 A | 127SS | 100% | 5,089,563 | 5,089,563 | 100% | 0% | 100% | m² |  |
| 131 | 1.4.1.2.1.4 | Retiro de bajantes | 0.5d | 2024-09-26 09:00 A | 2024-09-26 13:00 A | 124 | 100% | 51,311 | 51,311 | 100% | 0% | 100% | ml |  |
| 132 | 1.4.1.3 | **Baños Niñas** | 4d | 2024-10-01 15:00 A | 2024-10-07 13:00 A |  | 100% | 7,878,565 | 7,878,565 | 100% | 0% | 100% |  | SEV_BLQ3_P1_SAL_WC_NIÑAS |
| 133 | 1.4.1.3.1 | **Cubierta** | 4d | 2024-10-01 15:00 A | 2024-10-07 13:00 A |  | 100% | 7,878,565 | 7,878,565 | 100% | 0% | 100% |  |  |
| 134 | 1.4.1.3.1.1 | **Canoas** | 2.5d | 2024-10-01 15:00 A | 2024-10-03 19:00 A |  | 100% | 1,096,518 | 1,096,518 | 100% | 0% | 100% |  |  |
| 135 | 1.4.1.3.1.1.1 | Retiro de canoas | 0.5d | 2024-10-01 15:00 A | 2024-10-01 19:00 A | 128 | 100% | 67,939 | 67,939 | 100% | 0% | 100% | ml |  |
| 136 | 1.4.1.3.1.1.2 | Suministro y colocación de canoa en U en lamina galvanizada calibre 24 moldurada, grafada y soldada en las uniones, desarrollo 0.70 m., incluye:embudos, boquillas, tapas, ganchos de fijación, pintura anticorrosiva verde y de acabado color a definir por in | 1d | 2024-10-03 09:00 A | 2024-10-03 19:00 A | 141 | 100% | 1,028,579 | 1,028,579 | 100% | 0% | 100% | ml |  |
| 137 | 1.4.1.3.1.2 | **Ruanas** | 4d | 2024-10-01 15:00 A | 2024-10-07 13:00 A |  | 100% | 1,303,288 | 1,303,288 | 100% | 0% | 100% |  |  |
| 138 | 1.4.1.3.1.2.1 | Retiro de ruanas | 1d | 2024-10-01 15:00 A | 2024-10-02 13:00 A | 135SS | 100% | 93,645 | 93,645 | 100% | 0% | 100% | ml |  |
| 139 | 1.4.1.3.1.2.2 | Suministro y colocación de ruanas en lámina galvanizada calibre 24, incluye mortero, pintura anticorrosiva y a base de aceite, desarrollo 33 cm., pestaña de 5 cm. Canchada de muro, faja en revoque impermeabilizado con filete y todo lo necesario para su co | 1.5d | 2024-10-04 09:00 A | 2024-10-07 13:00 A | 136 | 100% | 1,209,643 | 1,209,643 | 100% | 0% | 100% | ml |  |
| 140 | 1.4.1.3.1.3 | **Mantenimiento** | 1.5d | 2024-10-01 15:00 A | 2024-10-02 19:00 A |  | 100% | 5,453,103 | 5,453,103 | 100% | 0% | 100% |  |  |
| 141 | 1.4.1.3.1.3.1 | Reparación de techo en teja de barro. Incluye: retiro de manto existente si es necesario, retiro de teja existente, reistalación de la misma, suministro y colocación de teja (del 20%), tablilla (del 100 %) , impermeabilización con manto asfaltico imperpol | 1.5d | 2024-10-01 15:00 A | 2024-10-02 19:00 A | 138SS | 100% | 5,453,103 | 5,453,103 | 100% | 0% | 100% | m² |  |
| 142 | 1.4.1.3.1.4 | Retiro de bajantes | 0.5d | 2024-10-02 09:00 A | 2024-10-02 13:00 A | 135 | 100% | 25,656 | 25,656 | 100% | 0% | 100% | ml |  |
| 143 | 1.4.1.4 | **Baños Niños** | 4.5d | 2024-10-07 15:00 A | 2024-10-11 19:00 A |  | 100% | 8,286,212 | 8,286,212 | 100% | 0% | 100% |  | SEV_BLQ3_P1_SAL_WC_NIÑOS |
| 144 | 1.4.1.4.1 | **Cubierta** | 4.5d | 2024-10-07 15:00 A | 2024-10-11 19:00 A |  | 100% | 8,286,212 | 8,286,212 | 100% | 0% | 100% |  |  |
| 145 | 1.4.1.4.1.1 | **Canoa** | 2.5d | 2024-10-07 15:00 A | 2024-10-09 19:00 A |  | 100% | 1,150,058 | 1,150,058 | 100% | 0% | 100% |  |  |
| 146 | 1.4.1.4.1.1.1 | Retiro de canoas | 0.5d | 2024-10-07 15:00 A | 2024-10-07 19:00 A | 139 | 100% | 70,893 | 70,893 | 100% | 0% | 100% | ml |  |
| 147 | 1.4.1.4.1.1.2 | Suministro y colocación de canoa en U en lamina galvanizada calibre 24 moldurada, grafada y soldada en las uniones, desarrollo 0.70 m., incluye:embudos, boquillas, tapas, ganchos de fijación, pintura anticorrosiva verde y de acabado color a definir por in | 1d | 2024-10-09 09:00 A | 2024-10-09 19:00 A | 152 | 100% | 1,079,165 | 1,079,165 | 100% | 0% | 100% | ml |  |
| 148 | 1.4.1.4.1.2 | **Ruanas** | 4.5d | 2024-10-07 15:00 A | 2024-10-11 19:00 A |  | 100% | 1,592,478 | 1,592,478 | 100% | 0% | 100% |  |  |
| 149 | 1.4.1.4.1.2.1 | Retiro de ruanas | 1.5d | 2024-10-07 15:00 A | 2024-10-08 19:00 A | 146SS | 100% | 114,424 | 114,424 | 100% | 0% | 100% | ml |  |
| 150 | 1.4.1.4.1.2.2 | Suministro y colocación de ruanas en lámina galvanizada calibre 24, incluye mortero, pintura anticorrosiva y a base de aceite, desarrollo 33 cm., pestaña de 5 cm. Canchada de muro, faja en revoque impermeabilizado con filete y todo lo necesario para su co | 2d | 2024-10-10 09:00 A | 2024-10-11 19:00 A | 147 | 100% | 1,478,054 | 1,478,054 | 100% | 0% | 100% | ml |  |
| 151 | 1.4.1.4.1.3 | **Mantenimiento** | 1.5d | 2024-10-07 15:00 A | 2024-10-08 19:00 A |  | 100% | 5,518,020 | 5,518,020 | 100% | 0% | 100% |  |  |
| 152 | 1.4.1.4.1.3.1 | Reparación de techo en teja de barro. Incluye: retiro de manto existente si es necesario, retiro de teja existente, reistalación de la misma, suministro y colocación de teja (del 20%), tablilla (del 100 %) , impermeabilización con manto asfaltico imperpol | 1.5d | 2024-10-07 15:00 A | 2024-10-08 19:00 A | 149SS | 100% | 5,518,020 | 5,518,020 | 100% | 0% | 100% | m² |  |
| 153 | 1.4.1.4.1.4 | Retiro de bajantes | 0.5d | 2024-10-08 09:00 A | 2024-10-08 13:00 A | 146 | 100% | 25,656 | 25,656 | 100% | 0% | 100% | ml |  |

| ID | WBS | Task | Duration | Start | Finish | Predecessors | Complete | Total slack | Free slack | Constraint | Cost | Actual cost | Código BIM | %programado | Desviación % | % financiero ejecutado | Unidad |
| --- | --- | --- | --- | --- | --- | --- | --- | --- | --- | --- | --- | --- | --- | --- | --- | --- | --- |
| 154 | 1.4.1.5 | **Circulación** | 6.5d | 2024-10-14 09:00 A | 2024-10-22 13:00 A |  | 100% |  |  |  | 16,438,520 | 16,438,520 | SEV_BLQ3_P1_SAL_CIRC | 0% | -100% | 100% |  |
| 155 | 1.4.1.5.1 | **Cubierta** | 6.5d | 2024-10-14 09:00 A | 2024-10-22 13:00 A |  | 100% |  |  |  | 16,438,520 | 16,438,520 |  | 0% | -100% | 100% |  |
| 156 | 1.4.1.5.1.1 | **Canoas** | 4.5d | 2024-10-14 09:00 A | 2024-10-18 13:00 A |  | 100% |  |  |  | 1,016,208 | 1,016,208 |  | 0% | -100% | 100% |  |
| 157 | 1.4.1.5.1.1.1 | Retiro de canoas | 0.5d | 2024-10-14 09:00 A | 2024-10-14 13:00 A | 150 | 100% |  |  |  | 63,508 | 63,508 |  | 0% | -100% | 100% | ml |
| 158 | 1.4.1.5.1.1.2 | Suministro y colocación de canoa en U en lamina galvanizada calibre 24 moldurada, grafada y soldada en las uniones, desarrollo 0.70 m., incluye:embudos, boquillas, tapas, ganchos de fijación, pintura anticorrosiva verde y de acabado color a definir por in | 1d | 2024-10-17 15:00 A | 2024-10-18 13:00 A | 163 | 100% |  |  |  | 952,700 | 952,700 |  | 0% | -100% | 100% | ml |
| 159 | 1.4.1.5.1.2 | **Ruanas** | 6.5d | 2024-10-14 09:00 A | 2024-10-22 13:00 A |  | 100% |  |  |  | 2,919,673 | 2,919,673 |  | 0% | -100% | 100% |  |
| 160 | 1.4.1.5.1.2.1 | Retiro de ruanas | 2d | 2024-10-14 09:00 A | 2024-10-15 19:00 A | 157SS | 100% |  |  |  | 209,786 | 209,786 |  | 0% | -100% | 100% | ml |
| 161 | 1.4.1.5.1.2.2 | Suministro y colocación de ruanas en lámina galvanizada calibre 24, incluye mortero, pintura anticorrosiva y a base de aceite, desarrollo 33 cm., pestaña de 5 cm. Canchada de muro, faja en revoque impermeabilizado con filete y todo lo necesario para su co | 2d | 2024-10-18 15:00 A | 2024-10-22 13:00 A | 158 | 100% |  |  |  | 2,709,887 | 2,709,887 |  | 0% | -100% | 100% | ml |
| 162 | 1.4.1.5.1.3 | **Mantenimiento** | 3.5d | 2024-10-14 09:00 A | 2024-10-17 13:00 A |  | 100% |  |  |  | 12,457,742 | 12,457,742 |  | 0% | -100% | 100% |  |
| 163 | 1.4.1.5.1.3.1 | Reparación de techo en teja de barro. Incluye: retiro de manto existente si es necesario, retiro de teja existente, reistalación de la misma, suministro y colocación de teja (del 20%), tablilla (del 100 %) , impermeabilización con manto asfaltico imperpol | 3.5d | 2024-10-14 09:00 A | 2024-10-17 13:00 A | 160SS | 100% |  |  |  | 12,457,742 | 12,457,742 |  | 0% | -100% | 100% | m² |
| 164 | 1.4.1.5.1.4 | Retiro de bajantes | 0.5d | 2024-10-14 15:00 A | 2024-10-14 19:00 A | 157 | 100% |  |  |  | 44,897 | 44,897 |  | 0% | -100% | 100% | ml |
| 165 | 1.5 | **Bloque 4** | 19.5d | 2024-10-22 15:00 | 2024-11-18 19:00 |  |  | 39d |  |  | 46,859,083 |  | BLQ3 | 0% | 0% | 0% |  |
| 166 | 1.5.1 | **Piso 1** | 19.5d | 2024-10-22 15:00 | 2024-11-18 19:00 |  |  | 39d |  |  | 46,859,083 |  | P1 | 0% | 0% | 0% |  |
| 167 | 1.5.1.1 | **Aula 1** | 6.5d | 2024-10-22 15:00 | 2024-10-30 19:00 |  |  | 39d |  |  | 15,287,674 |  | SEV_BLQ4_P1_AUL1 | 0% | 0% | 0% |  |
| 168 | 1.5.1.1.1 | **Cubierta** | 6.5d | 2024-10-22 15:00 | 2024-10-30 19:00 |  |  | 39d |  |  | 15,287,674 |  |  | 0% | 0% | 0% |  |
| 169 | 1.5.1.1.1.1 | **Canoas** | 5d | 2024-10-22 15:00 | 2024-10-29 13:00 |  |  | 39d |  |  | 2,454,704 |  |  | 0% | 0% | 0% |  |
| 170 | 1.5.1.1.1.1.1 | Retiro de canoas | 1d | 2024-10-22 15:00 | 2024-10-23 13:00 | 161 |  | 39d | 0d |  | 161,478 |  |  | 0% | 0% | 0% | ml |
| 171 | 1.5.1.1.1.1.2 | Suministro y colocación de canoa en U en lamina galvanizada calibre 24 moldurada, grafada y soldada en las uniones, desarrollo 0.70 m., incluye:embudos, boquillas, tapas, ganchos de fijación, pintura anticorrosiva verde y de acabado color a definir por in | 1.5d | 2024-10-28 09:00 | 2024-10-29 13:00 | 176 |  | 39d | 0d |  | 2,293,226 |  |  | 0% | 0% | 0% | ml |
| 172 | 1.5.1.1.1.2 | **Ruanas** | 6.5d | 2024-10-22 15:00 | 2024-10-30 19:00 |  |  | 39d |  |  | 1,897,094 |  |  | 0% | 0% | 0% |  |
| 173 | 1.5.1.1.1.2.1 | Retiro de ruanas | 1.5d | 2024-10-22 15:00 | 2024-10-23 19:00 | 170SS |  | 39d | 0d |  | 136,312 |  |  | 0% | 0% | 0% | ml |
| 174 | 1.5.1.1.1.2.2 | Suministro y colocación de ruanas en lámina galvanizada calibre 24, incluye mortero, pintura anticorrosiva y a base de aceite, desarrollo 33 cm., pestaña de 5 cm. Canchada de muro, faja en revoque impermeabilizado con filete y todo lo necesario para su co | 1.5d | 2024-10-29 15:00 | 2024-10-30 19:00 | 171 |  | 39d | 0d | start no earlier than 2024-09-12 09:00 | 1,760,782 |  |  | 0% | 0% | 0% | ml |
| 175 | 1.5.1.1.1.3 | **Mantenimiento** | 3.5d | 2024-10-22 15:00 | 2024-10-25 19:00 |  |  | 39d |  |  | 10,884,565 |  |  | 0% | 0% | 0% |  |
| 176 | 1.5.1.1.1.3.1 | Reparación de techo en teja de barro. Incluye: retiro de manto existente si es necesario, retiro de teja existente, reistalación de la misma, suministro y colocación de teja (del 20%), tablilla (del 100 %) , impermeabilización con manto asfaltico imperpol | 3.5d | 2024-10-22 15:00 | 2024-10-25 19:00 | 173SS |  | 39d | 0d |  | 10,884,565 |  |  | 0% | 0% | 0% | m² |
| 177 | 1.5.1.1.1.4 | Retiro de bajantes | 0.5d | 2024-10-23 15:00 | 2024-10-23 19:00 | 170 |  | 57d |  |  | 51,311 |  |  | 0% | 0% | 0% | ml |

| ID | WBS | Task | Duration | Start | Finish | Predecessors | Total slack | Free slack | Cost | Código BIM | %programado | Desviación % | % financiero ejecutado | Unidad |
| --- | --- | --- | --- | --- | --- | --- | --- | --- | --- | --- | --- | --- | --- | --- |
| 178 | 1.5.1.2 | **Aula 2** | 6.5d | 2024-10-31 09:00 | 2024-11-08 13:00 |  | 39d |  | 15,456,292 | SEV_BLQ4_P1_AUL2 | 0% | 0% | 0% |  |
| 179 | 1.5.1.2.1 | **Cubierta** | 6.5d | 2024-10-31 09:00 | 2024-11-08 13:00 |  | 39d |  | 15,456,292 |  | 0% | 0% | 0% |  |
| 180 | 1.5.1.2.1.1 | **Canoas** | 5d | 2024-10-31 09:00 | 2024-11-06 19:00 |  | 39d |  | 2,623,324 |  | 0% | 0% | 0% |  |
| 181 | 1.5.1.2.1.1.1 | Retiro de canoas | 1d | 2024-10-31 09:00 | 2024-10-31 19:00 | 174 | 39d | 0d | 161,479 |  | 0% | 0% | 0% | ml |
| 182 | 1.5.1.2.1.1.2 | Suministro y colocación de canoa en U en lamina galvanizada calibre 24 moldurada, grafada y soldada en las uniones, desarrollo 0.70 m., incluye:embudos, boquillas, tapas, ganchos de fijación, pintura anticorrosiva verde y de acabado color a definir por in | 1.5d | 2024-11-05 15:00 | 2024-11-06 19:00 | 187 | 39d | 0d | 2,461,845 |  | 0% | 0% | 0% | ml |
| 183 | 1.5.1.2.1.2 | **Ruanas** | 6.5d | 2024-10-31 09:00 | 2024-11-08 13:00 |  | 39d |  | 1,897,092 |  | 0% | 0% | 0% |  |
| 184 | 1.5.1.2.1.2.1 | Retiro de ruanas | 1.5d | 2024-10-31 09:00 | 2024-11-01 13:00 | 181SS | 39d | 0d | 136,310 |  | 0% | 0% | 0% | ml |
| 185 | 1.5.1.2.1.2.2 | Suministro y colocación de ruanas en lámina galvanizada calibre 24, incluye mortero, pintura anticorrosiva y a base de aceite, desarrollo 33 cm., pestaña de 5 cm. Canchada de muro, faja en revoque impermeabilizado con filete y todo lo necesario para su co | 1.5d | 2024-11-07 09:00 | 2024-11-08 13:00 | 182 | 39d | 0d | 1,760,782 |  | 0% | 0% | 0% | ml |
| 186 | 1.5.1.2.1.3 | **Mantenimiento** | 3.5d | 2024-10-31 09:00 | 2024-11-05 13:00 |  | 39d |  | 10,884,565 |  | 0% | 0% | 0% |  |
| 187 | 1.5.1.2.1.3.1 | Reparación de techo en teja de barro. Incluye: retiro de manto existente si es necesario, retiro de teja existente, reistalación de la misma, suministro y colocación de teja (del 20%), tablilla (del 100 %) , impermeabilización con manto asfaltico imperpol | 3.5d | 2024-10-31 09:00 | 2024-11-05 13:00 | 184SS | 39d | 0d | 10,884,565 |  | 0% | 0% | 0% | m² |
| 188 | 1.5.1.2.1.4 | Retiro de bajantes | 0.5d | 2024-11-01 09:00 | 2024-11-01 13:00 | 181 | 50.5d |  | 51,311 |  | 0% | 0% | 0% | ml |
| 189 | 1.5.1.3 | **Circulación** | 6.5d | 2024-11-08 15:00 | 2024-11-18 19:00 |  | 39d |  | 16,115,117 | SEV_BLQ4_P1_CIRC | 0% | 0% | 0% |  |
| 190 | 1.5.1.3.1 | **Cubierta** | 6.5d | 2024-11-08 15:00 | 2024-11-18 19:00 |  | 39d |  | 16,115,117 |  | 0% | 0% | 0% |  |
| 191 | 1.5.1.3.1.1 | **Canoas** | 5d | 2024-11-08 15:00 | 2024-11-15 13:00 |  | 39d |  | 2,177,158 |  | 0% | 0% | 0% |  |
| 192 | 1.5.1.3.1.1.1 | Retiro de canoas | 1d | 2024-11-08 15:00 | 2024-11-11 13:00 | 185 | 39d | 0d | 136,862 |  | 0% | 0% | 0% | ml |
| 193 | 1.5.1.3.1.1.2 | Suministro y colocación de canoa en U en lamina galvanizada calibre 24 moldurada, grafada y soldada en las uniones, desarrollo 0.70 m., incluye:embudos, boquillas, tapas, ganchos de fijación, pintura anticorrosiva verde y de acabado color a definir por in | 1.5d | 2024-11-14 09:00 | 2024-11-15 13:00 | 198 | 39d | 0d | 2,040,296 |  | 0% | 0% | 0% | ml |
| 194 | 1.5.1.3.1.2 | **Ruanas** | 6.5d | 2024-11-08 15:00 | 2024-11-18 19:00 |  | 39d |  | 2,151,581 |  | 0% | 0% | 0% |  |
| 195 | 1.5.1.3.1.2.1 | Retiro de ruanas | 1.5d | 2024-11-08 15:00 | 2024-11-11 19:00 | 192SS | 39d | 0d | 154,597 |  | 0% | 0% | 0% | ml |
| 196 | 1.5.1.3.1.2.2 | Suministro y colocación de ruanas en lámina galvanizada calibre 24, incluye mortero, pintura anticorrosiva y a base de aceite, desarrollo 33 cm., pestaña de 5 cm. Canchada de muro, faja en revoque impermeabilizado con filete y todo lo necesario para su co | 1.5d | 2024-11-15 15:00 | 2024-11-18 19:00 | 193 | 39d |  | 1,996,984 |  | 0% | 0% | 0% | ml |
| 197 | 1.5.1.3.1.3 | **Mantenimiento** | 3.5d | 2024-11-08 15:00 | 2024-11-13 19:00 |  | 39d |  | 11,741,481 |  | 0% | 0% | 0% |  |
| 198 | 1.5.1.3.1.3.1 | Reparación de techo en teja de barro. Incluye: retiro de manto existente si es necesario, retiro de teja existente, reistalación de la misma, suministro y colocación de teja (del 20%), tablilla (del 100 %) , impermeabilización con manto asfaltico imperpol | 3.5d | 2024-11-08 15:00 | 2024-11-13 19:00 | 195SS | 39d | 0d | 11,741,481 |  | 0% | 0% | 0% | m² |
| 199 | 1.5.1.3.1.4 | Retiro de bajantes | 0.5d | 2024-11-11 15:00 | 2024-11-11 19:00 | 192 | 44d |  | 44,897 |  | 0% | 0% | 0% | ml |
| 200 | 1.6 | **Bloque 5** | 30.5d | 2024-10-10 09:00 | 2024-11-21 13:00 |  | 36.5d | 0d | 96,397,426 | BLQ5 | 6% | 6% | 0% |  |
| 201 | 1.6.1 | **Piso 1** | 30.5d | 2024-10-10 09:00 | 2024-11-21 13:00 |  | 36.5d |  | 96,397,426 | P1 | 6% | 6% | 0% |  |
| 202 | 1.6.1.1 | **Cocina** | 9d | 2024-10-10 09:00 | 2024-10-22 19:00 |  | 36.5d |  | 18,551,991 | SEV_BLQ5_P1_COC | 29% | 29% | 0% |  |
| 203 | 1.6.1.1.1 | **Cubierta** | 5d | 2024-10-10 09:00 | 2024-10-16 19:00 |  | 36.5d |  | 12,719,036 |  | 54% | 54% | 0% |  |
| 204 | 1.6.1.1.1.1 | **Canoas** | 4d | 2024-10-10 09:00 | 2024-10-15 19:00 |  | 36.5d |  | 669,247 |  | 50% | 50% | 0% |  |
| 205 | 1.6.1.1.1.1.1 | Retiro de canoas | 0.5d | 2024-10-10 09:00 | 2024-10-10 13:00 | 34FS-8d | 36.5d | 0d | 36,923 |  | 100% | 100% | 0% | ml |
| 206 | 1.6.1.1.1.1.2 | Suministro y colocación de canoa en U en lamina galvanizada calibre 24 moldurada, grafada y soldada en las uniones, desarrollo 0.70 m., incluye:embudos, boquillas, tapas, ganchos de fijación, pintura anticorrosiva verde y de acabado color a definir por in | 0.5d | 2024-10-15 15:00 | 2024-10-15 19:00 | 211 | 36.5d | 0d | 632,324 |  | 0% | 0% | 0% | ml |

| ID | WBS | Task | Duration | Start | Finish | Predecessors | Total slack | Free slack | Constraint | Cost | %programado | Desviación % | % financiero ejecutado | Unidad | Código BIM |
| --- | --- | --- | --- | --- | --- | --- | --- | --- | --- | --- | --- | --- | --- | --- | --- |
| 207 | 1.6.1.1.1.2 | **Ruanas** | 5d | 2024-10-10 09:00 | 2024-10-16 19:00 |  | 36.5d |  |  | 1,176,043 | 50% | 50% | 0% |  |  |
| 208 | 1.6.1.1.1.2.1 | Retiro de ruanas | 1d | 2024-10-10 09:00 | 2024-10-10 19:00 | 205SS | 36.5d | 0d |  | 84,502 | 100% | 100% | 0% | ml |  |
| 209 | 1.6.1.1.1.2.2 | Suministro y colocación de ruanas en lámina galvanizada calibre 24, incluye mortero, pintura anticorrosiva y a base de aceite, desarrollo 33 cm., pestaña de 5 cm. Canchada de muro, faja en revoque impermeabilizado con filete y todo lo necesario para su co | 1d | 2024-10-16 09:00 | 2024-10-16 19:00 | 206 | 36.5d | 0d |  | 1,091,541 | 0% | 0% | 0% | ml |  |
| 210 | 1.6.1.1.1.3 | **Mantenimiento** | 3.5d | 2024-10-10 09:00 | 2024-10-15 13:00 |  | 36.5d |  |  | 10,873,746 | 57% | 57% | 0% |  |  |
| 211 | 1.6.1.1.1.3.1 | Reparación de techo en teja de barro. Incluye: retiro de manto existente si es necesario, retiro de teja existente, reistalación de la misma, suministro y colocación de teja (del 20%), tablilla (del 100 %) , impermeabilización con manto asfaltico imperpol | 3.5d | 2024-10-10 09:00 | 2024-10-15 13:00 | 208SS | 36.5d | 0d |  | 10,873,746 | 57% | 57% | 0% | m² |  |
| 212 | 1.6.1.1.2 | **Muros** | 5d | 2024-10-15 15:00 | 2024-10-22 13:00 |  | 58d |  |  | 4,868,540 | 0% | 0% | 0% |  |  |
| 213 | 1.6.1.1.2.1 | **Pintura** | 5d | 2024-10-15 15:00 | 2024-10-22 13:00 |  | 58d |  |  | 4,868,540 | 0% | 0% | 0% |  |  |
| 214 | 1.6.1.1.2.1.1 | Retiro de pintura base aceite con removedor, grata metalica hasta encontrar superficie original. Para cocina | 2d | 2024-10-15 15:00 | 2024-10-17 13:00 | 211 | 58d | 0d |  | 595,466 | 0% | 0% | 0% | m² |  |
| 215 | 1.6.1.1.2.1.2 | Pintura a base de agua, vinilo de primera calidad sobre pintura existente, tres manos, incluye resanes, con estuco plastico tipo plastestuco o similar diluido en agua proporciòn 1:2, adecuación de la superficie a intervenir, (rasquetiada). En muro | 2d | 2024-10-17 15:00 | 2024-10-21 13:00 | 214 | 58d | 0d |  | 2,137,897 | 0% | 0% | 0% | m² |  |
| 216 | 1.6.1.1.2.1.3 | Suministro y aplicación de PINTURA EPOXICA EN MUROS Y CIELOS (dos componentes proporción 1:3, no tóxica) tipo epoxiconstrucción de pintuco o equivalente, de primera calidad, semimate, sobre estuco plástico, 2 a 3 manos o las necesarias para lograr una sue | 1d | 2024-10-21 15:00 | 2024-10-22 13:00 | 215 | 58d | 0d |  | 2,135,177 | 0% | 0% | 0% | m² |  |
| 217 | 1.6.1.1.3 | **Sistema Eléctrico** | 0.5d | 2024-10-22 15:00 | 2024-10-22 19:00 |  | 58d |  |  | 964,415 | 0% | 0% | 0% |  |  |
| 218 | 1.6.1.1.3.1 | Suministro, transporte e instalación de luminaria industrial tipo hermética, con tubo LED difusor en policarbonato, 2x18W T8. Chasis en policarbonato resistente al impacto, 6500°K, 3600lm, IRC=70, 40.000 Horas - L70, IP=65, IK=06, 36W, 100-240V 50/60Hz. I | 0.5d | 2024-10-22 15:00 | 2024-10-22 19:00 | 216 | 58d |  |  | 964,415 | 0% | 0% | 0% | un |  |
| 219 | 1.6.1.2 | **Cuarto de Alimento** | 6d | 2024-10-17 09:00 | 2024-10-24 19:00 |  | 36.5d |  |  | 17,055,376 | 0% | 0% | 0% |  | SEV_BLQ5_P1_CRT_ALM |
| 220 | 1.6.1.2.1 | **Cubierta** | 6d | 2024-10-17 09:00 | 2024-10-24 19:00 |  | 36.5d |  |  | 13,730,580 | 0% | 0% | 0% |  |  |
| 221 | 1.6.1.2.1.1 | **Canoas** | 4.5d | 2024-10-17 09:00 | 2024-10-23 13:00 |  | 36.5d |  |  | 578,968 | 0% | 0% | 0% |  |  |
| 222 | 1.6.1.2.1.1.1 | Retiro de canoas | 0.5d | 2024-10-17 09:00 | 2024-10-17 13:00 | 209 | 36.5d | 0d | start no earlier than 2024-09-12 09:00 | 39,385 | 0% | 0% | 0% | ml |  |
| 223 | 1.6.1.2.1.1.2 | Suministro y colocación de canoa en U en lamina galvanizada calibre 24 moldurada, grafada y soldada en las uniones, desarrollo 0.70 m., incluye:embudos, boquillas, tapas, ganchos de fijación, pintura anticorrosiva verde y de acabado color a definir por in | 1d | 2024-10-22 15:00 | 2024-10-23 13:00 | 228 | 36.5d | 0d |  | 539,583 | 0% | 0% | 0% | ml |  |
| 224 | 1.6.1.2.1.2 | **Ruanas** | 6d | 2024-10-17 09:00 | 2024-10-24 19:00 |  | 36.5d |  |  | 925,411 | 0% | 0% | 0% |  |  |
| 225 | 1.6.1.2.1.2.1 | Retiro de ruanas | 1d | 2024-10-17 09:00 | 2024-10-17 19:00 | 222SS | 36.5d | 0d | start no earlier than 2024-09-12 09:00 | 66,493 | 0% | 0% | 0% | ml |  |
| 226 | 1.6.1.2.1.2.2 | Suministro y colocación de ruanas en lámina galvanizada calibre 24, incluye mortero, pintura anticorrosiva y a base de aceite, desarrollo 33 cm., pestaña de 5 cm. Canchada de muro, faja en revoque impermeabilizado con filete y todo lo necesario para su co | 1.5d | 2024-10-23 15:00 | 2024-10-24 19:00 | 223 | 36.5d | 0d |  | 858,918 | 0% | 0% | 0% | ml |  |
| 227 | 1.6.1.2.1.3 | **Mantenimiento** | 3.5d | 2024-10-17 09:00 | 2024-10-22 13:00 |  | 36.5d |  |  | 12,226,201 | 0% | 0% | 0% |  |  |
| 228 | 1.6.1.2.1.3.1 | Reparación de techo en teja de barro. Incluye: retiro de manto existente si es necesario, retiro de teja existente, reistalación de la misma, suministro y colocación de teja (del 20%), tablilla (del 100 %) , impermeabilización con manto asfaltico imperpol | 3.5d | 2024-10-17 09:00 | 2024-10-22 13:00 | 225SS | 36.5d | 0d |  | 12,226,201 | 0% | 0% | 0% | m² |  |
| 229 | 1.6.1.2.2 | **Muros** | 2d | 2024-10-22 15:00 | 2024-10-24 13:00 |  | 56.5d |  |  | 3,324,796 | 0% | 0% | 0% |  |  |
| 230 | 1.6.1.2.2.1 | **Pintura** | 2d | 2024-10-22 15:00 | 2024-10-24 13:00 |  | 56.5d |  |  | 3,324,796 | 0% | 0% | 0% |  |  |
| 231 | 1.6.1.2.2.1.1 | Retiro de pintura base aceite con removedor, grata metalica hasta encontrar superficie original. Para cocina | 0.5d | 2024-10-22 15:00 | 2024-10-22 19:00 | 228 | 56.5d | 0d | start no earlier than 2024-09-12 09:00 | 25,656 | 0% | 0% | 0% | m² |  |
| 232 | 1.6.1.2.2.1.2 | Pintura a base de agua, vinilo de primera calidad sobre pintura existente, tres manos, incluye resanes, con estuco plastico tipo plastestuco o similar diluido en agua proporciòn 1:2, adecuación de la superficie a intervenir, (rasquetiada). En muro | 1d | 2024-10-23 09:00 | 2024-10-23 19:00 | 231 | 56.5d | 0d |  | 2,668,971 | 0% | 0% | 0% | m² |  |
| 233 | 1.6.1.2.2.1.3 | Suministro y aplicación de PINTURA EPOXICA EN MUROS Y CIELOS (dos componentes proporción 1:3, no tóxica) tipo epoxiconstrucción de pintuco o equivalente, de primera calidad, semimate, sobre estuco plástico, 2 a 3 manos o las necesarias para lograr una sue | 0.5d | 2024-10-24 09:00 | 2024-10-24 13:00 | 232 | 56.5d |  |  | 630,169 | 0% | 0% | 0% | m² |  |

| ID | WBS | Task | Duration | Start | Finish | Predecessors | Total slack | Free slack | Constraint | Cost | Código BIM | %programado | Desviación % | % financiero ejecutado | Unidad |
| --- | --- | --- | --- | --- | --- | --- | --- | --- | --- | --- | --- | --- | --- | --- | --- |
| 234 | 1.6.1.3 | **Baño de Cambio** | 3.5d | 2024-10-25 09:00 | 2024-10-30 13:00 |  | 36.5d |  |  | 12,356,465 | SEV_BLQ5_P1_WC_CAM | 0% | 0% | 0% |  |
| 235 | 1.6.1.3.1 | **Cubierta** | 3.5d | 2024-10-25 09:00 | 2024-10-30 13:00 |  | 36.5d |  |  | 12,356,465 |  | 0% | 0% | 0% |  |
| 236 | 1.6.1.3.1.1 | **Canoas** | 3.5d | 2024-10-25 09:00 | 2024-10-30 13:00 |  | 36.5d |  |  | 918,051 |  | 0% | 0% | 0% |  |
| 237 | 1.6.1.3.1.1.1 | Retiro de canoas | 0.5d | 2024-10-25 09:00 | 2024-10-25 13:00 | 226 | 36.5d | 0d | start no earlier than 2024-09-12 09:00 | 58,092 |  | 0% | 0% | 0% | ml |
| 238 | 1.6.1.3.1.1.2 | Suministro y colocación de canoa en U en lamina galvanizada calibre 24 moldurada, grafada y soldada en las uniones, desarrollo 0.70 m., incluye:embudos, boquillas, tapas, ganchos de fijación, pintura anticorrosiva verde y de acabado color a definir por in | 0.5d | 2024-10-30 09:00 | 2024-10-30 13:00 | 243 | 36.5d | 0d |  | 859,959 |  | 0% | 0% | 0% | ml |
| 239 | 1.6.1.3.1.2 | **Ruanas** | 3.5d | 2024-10-25 09:00 | 2024-10-30 13:00 |  | 36.5d |  |  | 917,700 |  | 0% | 0% | 0% |  |
| 240 | 1.6.1.3.1.2.1 | Retiro de ruanas | 1d | 2024-10-25 09:00 | 2024-10-25 19:00 | 237SS | 36.5d | 0d |  | 65,940 |  | 0% | 0% | 0% | ml |
| 241 | 1.6.1.3.1.2.2 | Suministro y colocación de ruanas en lámina galvanizada calibre 24, incluye mortero, pintura anticorrosiva y a base de aceite, desarrollo 33 cm., pestaña de 5 cm. Canchada de muro, faja en revoque impermeabilizado con filete y todo lo necesario para su co | 1d | 2024-10-29 15:00 | 2024-10-30 13:00 | 238FS-1d | 36.5d | 0d |  | 851,760 |  | 0% | 0% | 0% | ml |
| 242 | 1.6.1.3.1.3 | **Mantenimiento** | 3d | 2024-10-25 09:00 | 2024-10-29 19:00 |  | 36.5d |  |  | 10,495,058 |  | 0% | 0% | 0% |  |
| 243 | 1.6.1.3.1.3.1 | Reparación de techo en teja de barro. Incluye: retiro de manto existente si es necesario, retiro de teja existente, reistalación de la misma, suministro y colocación de teja (del 20%), tablilla (del 100 %) , impermeabilización con manto asfaltico imperpol | 3d | 2024-10-25 09:00 | 2024-10-29 19:00 | 240SS | 36.5d | 0d |  | 10,495,058 |  | 0% | 0% | 0% | m2 |
| 244 | 1.6.1.3.1.4 | Retiro de bajantes | 0.5d | 2024-10-25 15:00 | 2024-10-25 19:00 | 237 | 55d |  |  | 25,656 |  | 0% | 0% | 0% | ml |
| 245 | 1.6.1.4 | **Comedor** | 9d | 2024-10-30 15:00 | 2024-11-12 13:00 |  | 36.5d |  |  | 24,137,291 | SEV_BLQ5_P1_CMD | 0% | 0% | 0% |  |
| 246 | 1.6.1.4.1 | **Cubierta** | 7.5d | 2024-10-30 15:00 | 2024-11-08 19:00 |  | 36.5d |  |  | 20,225,021 |  | 0% | 0% | 0% |  |
| 247 | 1.6.1.4.1.1 | **Canoas** | 5.5d | 2024-10-30 15:00 | 2024-11-06 19:00 |  | 36.5d |  |  | 2,641,295 |  | 0% | 0% | 0% |  |
| 248 | 1.6.1.4.1.1.1 | Retiro de canoas | 1d | 2024-10-30 15:00 | 2024-10-31 13:00 | 241 | 36.5d | 0d | start no earlier than 2024-09-12 09:00 | 145,725 |  | 0% | 0% | 0% | ml |
| 249 | 1.6.1.4.1.1.2 | Suministro y colocación de canoa en U en lamina galvanizada calibre 24 moldurada, grafada y soldada en las uniones, desarrollo 0.70 m., incluye:embudos, boquillas, tapas, ganchos de fijación, pintura anticorrosiva verde y de acabado color a definir por in | 1d | 2024-11-06 09:00 | 2024-11-06 19:00 | 254 | 36.5d | 0d |  | 2,495,570 |  | 0% | 0% | 0% | ml |
| 250 | 1.6.1.4.1.2 | **Ruanas** | 7.5d | 2024-10-30 15:00 | 2024-11-08 19:00 |  | 36.5d |  |  | 2,760,809 |  | 0% | 0% | 0% |  |
| 251 | 1.6.1.4.1.2.1 | Retiro de ruanas | 1.5d | 2024-10-30 15:00 | 2024-10-31 19:00 | 248SS | 36.5d | 0d |  | 198,371 |  | 0% | 0% | 0% | ml |
| 252 | 1.6.1.4.1.2.2 | Suministro y colocación de ruanas en lámina galvanizada calibre 24, incluye mortero, pintura anticorrosiva y a base de aceite, desarrollo 33 cm., pestaña de 5 cm. Canchada de muro, faja en revoque impermeabilizado con filete y todo lo necesario para su co | 2d | 2024-11-07 09:00 | 2024-11-08 19:00 | 249 | 43.5d | 0d |  | 2,562,438 |  | 0% | 0% | 0% | ml |
| 253 | 1.6.1.4.1.3 | **Mantenimiento** | 4.5d | 2024-10-30 15:00 | 2024-11-05 19:00 |  | 36.5d |  |  | 14,822,917 |  | 0% | 0% | 0% |  |
| 254 | 1.6.1.4.1.3.1 | Reparación de techo en teja de barro. Incluye: retiro de manto existente si es necesario, retiro de teja existente, reistalación de la misma, suministro y colocación de teja (del 20%), tablilla (del 100 %) , impermeabilización con manto asfaltico imperpol | 4.5d | 2024-10-30 15:00 | 2024-11-05 19:00 | 251SS | 36.5d | 0d |  | 14,822,917 |  | 0% | 0% | 0% | m2 |
| 255 | 1.6.1.4.2 | **Muros** | 1.5d | 2024-11-11 09:00 | 2024-11-12 13:00 |  | 43.5d |  |  | 3,912,270 |  | 0% | 0% | 0% |  |
| 256 | 1.6.1.4.2.1 | **Pintura** | 1.5d | 2024-11-11 09:00 | 2024-11-12 13:00 |  | 43.5d |  |  | 2,754,972 |  | 0% | 0% | 0% |  |
| 257 | 1.6.1.4.2.1.1 | Suministro y aplicación de PINTURA EPOXICA EN MUROS Y CIELOS (dos componentes proporción 1:3, no tóxica) tipo epoxiconstrucción de pintuco o equivalente, de primera calidad, semimate, sobre estuco plástico, 2 a 3 manos o las necesarias para lograr una sue | 1.5d | 2024-11-11 09:00 | 2024-11-12 13:00 | 252 | 43.5d | 0d |  | 2,754,972 |  | 0% | 0% | 0% | m2 |

| ID | WBS | Task | Duration | Start | Finish | Predecessors | Total slack | Free slack | Constraint | Cost | %programado | Desviación % | % financiero ejecutado | Unidad | Código BIM |
| --- | --- | --- | --- | --- | --- | --- | --- | --- | --- | --- | --- | --- | --- | --- | --- |
| 258 | 1.6.1.4.2.2 | **Sistema Eléctrico** | 0.5d | 2024-11-11 15:00 | 2024-11-11 19:00 |  | 44d |  |  | 1,157,298 | 0% | 0% | 0% |  |  |
| 259 | 1.6.1.4.2.2.1 | Suministro, transporte e instalación de luminaria industrial tipo hermética, con tubo LED difusor en policarbonato, 2x18W T8. Chasis en policarbonato resistente al impacto, 6500°K, 3600lm, IRC=70, 40.000 Horas - L70, IP=65, IK=06, 36W, 100-240V 50/60Hz. I | 0.5d | 2024-11-11 15:00 | 2024-11-11 19:00 | 257FS-1d | 44d |  |  | 1,157,298 | 0% | 0% | 0% | un |  |
| 260 | 1.6.1.5 | **Biblioteca** | 5.5d | 2024-11-07 09:00 | 2024-11-14 13:00 |  | 36.5d |  |  | 18,281,905 | 0% | 0% | 0% |  | SEV_BLQ5_P1_BBL |
| 261 | 1.6.1.5.1 | **Cubierta** | 5d | 2024-11-07 09:00 | 2024-11-13 19:00 |  | 36.5d |  |  | 17,317,490 | 0% | 0% | 0% |  |  |
| 262 | 1.6.1.5.1.1 | **Canoas** | 4d | 2024-11-07 09:00 | 2024-11-12 19:00 |  | 36.5d |  |  | 5,040,612 | 0% | 0% | 0% |  |  |
| 263 | 1.6.1.5.1.1.1 | Retiro de canoas | 1d | 2024-11-07 09:00 | 2024-11-07 19:00 | 249 | 36.5d | 0d | start no earlier than 2024-09-12 09:00 | 285,541 | 0% | 0% | 0% | ml |  |
| 264 | 1.6.1.5.1.1.2 | Suministro y colocación de canoa en U en lamina galvanizada calibre 24 moldurada, grafada y soldada en las uniones, desarrollo 0.70 m., incluye:embudos, boquillas, tapas, ganchos de fijación, pintura anticorrosiva verde y de acabado color a definir por in | 1.5d | 2024-11-11 15:00 | 2024-11-12 19:00 | 269 | 36.5d | 0d |  | 4,755,071 | 0% | 0% | 0% | ml |  |
| 265 | 1.6.1.5.1.2 | **Ruanas** | 5d | 2024-11-07 09:00 | 2024-11-13 19:00 |  | 36.5d |  |  | 3,894,439 | 0% | 0% | 0% |  |  |
| 266 | 1.6.1.5.1.2.1 | Retiro de ruanas | 1.5d | 2024-11-07 09:00 | 2024-11-08 13:00 | 263SS | 36.5d | 0d |  | 279,825 | 0% | 0% | 0% | ml |  |
| 267 | 1.6.1.5.1.2.2 | Suministro y colocación de ruanas en lámina galvanizada calibre 24, incluye mortero, pintura anticorrosiva y a base de aceite, desarrollo 33 cm., pestaña de 5 cm. Canchada de muro, faja en revoque impermeabilizado con filete y todo lo necesario para su co | 1d | 2024-11-13 09:00 | 2024-11-13 19:00 | 264 | 36.5d | 0d |  | 3,614,614 | 0% | 0% | 0% | ml |  |
| 268 | 1.6.1.5.1.3 | **Mantenimiento** | 2.5d | 2024-11-07 09:00 | 2024-11-11 13:00 |  | 36.5d |  |  | 8,331,128 | 0% | 0% | 0% |  |  |
| 269 | 1.6.1.5.1.3.1 | Reparación de techo en teja de barro. Incluye: retiro de manto existente si es necesario, retiro de teja existente, reistalación de la misma, suministro y colocación de teja (del 20%), tablilla (del 100 %) , impermeabilización con manto asfaltico imperpol | 2.5d | 2024-11-07 09:00 | 2024-11-11 13:00 | 266SS | 36.5d | 0d |  | 8,331,128 | 0% | 0% | 0% | m2 |  |
| 270 | 1.6.1.5.1.4 | Retiro de bajantes | 0.5d | 2024-11-08 09:00 | 2024-11-08 13:00 | 263 | 45.5d |  |  | 51,311 | 0% | 0% | 0% | ml |  |
| 271 | 1.6.1.5.2 | **Sistema Eléctrico** | 0.5d | 2024-11-14 09:00 | 2024-11-14 13:00 |  | 41.5d |  |  | 964,415 | 0% | 0% | 0% |  |  |
| 272 | 1.6.1.5.2.1 | Suministro, transporte e instalación de luminaria industrial tipo hermética, con tubo LED difusor en policarbonato, 2x18W T8. Chasis en policarbonato resistente al impacto, 6500°K, 3600lm, IRC=70, 40.000 Horas - L70, IP=65, IK=06, 36W, 100-240V 50/60Hz. I | 0.5d | 2024-11-14 09:00 | 2024-11-14 13:00 | 267 | 41.5d |  |  | 964,415 | 0% | 0% | 0% | un |  |
| 273 | 1.6.1.6 | **Circulación** | 5.5d | 2024-11-14 09:00 | 2024-11-21 13:00 |  | 36.5d |  |  | 6,014,398 | 0% | 0% | 0% |  | SEV_BLQ5_P1_POC |
| 274 | 1.6.1.6.1 | **Cubierta** | 5d | 2024-11-14 09:00 | 2024-11-20 19:00 |  | 36.5d |  |  | 5,435,749 | 0% | 0% | 0% |  |  |
| 275 | 1.6.1.6.1.1 | **Canoas** | 3d | 2024-11-14 09:00 | 2024-11-18 19:00 |  | 36.5d |  |  | 2,369,779 | 0% | 0% | 0% |  |  |
| 276 | 1.6.1.6.1.1.1 | Retiro de canoas | 1d | 2024-11-14 09:00 | 2024-11-14 19:00 | 267 | 36.5d | 0d | start no earlier than 2024-09-12 09:00 | 137,257 | 0% | 0% | 0% | ml |  |
| 277 | 1.6.1.6.1.1.2 | Suministro y colocación de canoa en U en lamina galvanizada calibre 24 moldurada, grafada y soldada en las uniones, desarrollo 0.70 m., incluye:embudos, boquillas, tapas, ganchos de fijación, pintura anticorrosiva verde y de acabado color a definir por in | 1.5d | 2024-11-15 15:00 | 2024-11-18 19:00 | 282 | 36.5d | 0d |  | 2,232,522 | 0% | 0% | 0% | ml |  |
| 278 | 1.6.1.6.1.2 | **Ruanas** | 5d | 2024-11-14 09:00 | 2024-11-20 19:00 |  | 37d |  |  | 2,163,148 | 0% | 0% | 0% |  |  |
| 279 | 1.6.1.6.1.2.1 | Retiro de ruanas | 1.5d | 2024-11-14 09:00 | 2024-11-15 13:00 | 276SS | 40.5d |  |  | 155,427 | 0% | 0% | 0% | ml |  |
| 280 | 1.6.1.6.1.2.2 | Suministro y colocación de ruanas en lámina galvanizada calibre 24, incluye mortero, pintura anticorrosiva y a base de aceite, desarrollo 33 cm., pestaña de 5 cm. Canchada de muro, faja en revoque impermeabilizado con filete y todo lo necesario para su co | 2d | 2024-11-19 09:00 | 2024-11-20 19:00 | 277 | 36.5d | 0d |  | 2,007,721 | 0% | 0% | 0% | ml |  |
| 281 | 1.6.1.6.1.3 | **Mantenimiento** | 0.5d | 2024-11-15 09:00 | 2024-11-15 13:00 |  | 36.5d |  |  | 861,243 | 0% | 0% | 0% |  |  |
| 282 | 1.6.1.6.1.3.1 | Reparación de techo en teja de barro. Incluye: retiro de manto existente si es necesario, retiro de teja existente, reistalación de la misma, suministro y colocación de teja (del 20%), tablilla (del 100 %) , impermeabilización con manto asfaltico imperpol | 0.5d | 2024-11-15 09:00 | 2024-11-15 13:00 | 283SS | 36.5d | 0d |  | 861,243 | 0% | 0% | 0% | m2 |  |
| 283 | 1.6.1.6.1.4 | Retiro de bajantes | 0.5d | 2024-11-15 09:00 | 2024-11-15 13:00 | 276 | 36.5d | 0d |  | 41,579 | 0% | 0% | 0% | ml |  |

| ID | WBS | Task | Duration | Start | Finish | Predecessors | Total slack | Free slack | Cost | %programado | Desviación % | % financiero ejecutado | Unidad | Código BIM |
| --- | --- | --- | --- | --- | --- | --- | --- | --- | --- | --- | --- | --- | --- | --- |
| 284 | 1.6.1.6.2 | **Sistema Eléctrico** | 0.5d | 2024-11-21 09:00 | 2024-11-21 13:00 |  | 36.5d |  | 578,649 | 0% | 0% | 0% |  |  |
| 285 | 1.6.1.6.2.1 | Suministro, transporte e instalación de luminaria industrial tipo hermética, con tubo LED difusor en policarbonato, 2x18W T8. Chasis en policarbonato resistente al impacto, 6500°K, 3600lm, IRC=70, 40.000 Horas - L70, IP=65, IK=06, 36W, 100-240V 50/60Hz. I | 0.5d | 2024-11-21 09:00 | 2024-11-21 13:00 | 280 | 36.5d |  | 578,649 | 0% | 0% | 0% | un |  |
| 286 | 1.7 | **Bloque 6** | 50.75d? | 2024-09-12 09:00 | 2024-11-21 17:00 |  | 36.25d |  | 29,652,741 | 2% | 2% | 0% |  | BLQ6 |
| 287 | 1.7.1 | **Piso 1** | 50.75d? | 2024-09-12 09:00 | 2024-11-21 17:00 |  | 36.25d |  | 29,652,741 | 2% | 2% | 0% |  | P1 |
| 288 | 1.7.1.1 | **Portería** | 50.75d? | 2024-09-12 09:00 | 2024-11-21 17:00 |  | 36.25d |  | 29,652,741 | 2% | 2% | 0% |  | SEV_BLQ6_P1_PORT |
| 289 | 1.7.1.1.1 | **Piso** | 16.25d | 2024-10-17 09:00 | 2024-11-08 11:00 |  | 36.25d |  | 3,669,722 | 0% | 0% | 0% |  |  |
| 290 | 1.7.1.1.1.1 | Corte de pisos en concreto por medios mecanicos hasta 2" | 0.5d | 2024-10-17 09:00 | 2024-10-17 13:00 | 200SS+5d | 36.25d | 0d | 67,284 | 0% | 0% | 0% | ml |  |
| 291 | 1.7.1.1.1.2 | DEMOLICIÓN DE ANDENES Y PISOS en concreto (acabado y soporte) de espesor máximo de 0.30 m. incluye cargue, transporte y botada de escombros en sitio oficial. Incluye compresor neumático con martillo, retiros de tapas de instalaciones de servicios públicos | 0.5d | 2024-10-17 15:00 | 2024-10-17 19:00 | 290 | 36.25d | 0d | 113,087 | 0% | 0% | 0% | m² |  |
| 292 | 1.7.1.1.1.3 | Excavacion a mano o a maquina en material heterogeneo ( rocas hasta volumenes de 0.10 ) bajo cualquier grado de humedad, para estructuras( diferentes a pilas),para redes y obras complementarias. De 0.00 a 2.00 mt. De profundidad. A mano | 0.5d | 2024-10-18 09:00 | 2024-10-18 13:00 | 291 | 36.25d | 0d | 78,776 | 0% | 0% | 0% | m³ |  |
| 293 | 1.7.1.1.1.4 | Cargue y botada de escombros provenientes de explanaciones y excavaciones, medido en sitio compactado. El precio incluye el factor de expansión de material,empacado en costales | 0.5d | 2024-10-18 15:00 | 2024-10-18 19:00 | 292 | 60d |  | 528,944 | 0% | 0% | 0% | m³ |  |
| 294 | 1.7.1.1.1.5 | Malla electrosoldada tipo D 84. | 0.5d | 2024-10-23 15:00 | 2024-10-23 19:00 | 297 | 36.25d | 0d | 25,883 | 0% | 0% | 0% | m² |  |
| 295 | 1.7.1.1.1.6 | Suministro y colocacion de concreto f' c= 21 Mpa (210 Kg/cm2), incluye formaleta, desmoltante, proteccion y curado para estructuras de acuerdo con las diferentes dimensiones establecidas en los planos y diseños.. Para vigas de amarre de fundación. | 1d | 2024-10-22 09:00 | 2024-10-22 19:00 | 302 | 36.25d | 0d | 1,425,298 | 0% | 0% | 0% | m³ |  |
| 296 | 1.7.1.1.1.7 | Construcción de piso en concreto de 21 Mpa., Incluye juntas de dilatación y acabado como lo determine la interventoría. De espesor 0,08 m. | 3d | 2024-10-24 09:00 | 2024-10-28 19:00 | 294 | 36.25d | 0d | 544,298 | 0% | 0% | 0% | m² |  |
| 297 | 1.7.1.1.1.8 | Construccion de llenos compactados con material de subbase granular. | 0.5d | 2024-10-23 09:00 | 2024-10-23 13:00 | 295 | 36.25d | 0d | 196,661 | 0% | 0% | 0% | m³ |  |
| 298 | 1.7.1.1.1.9 | Suminstro e instalacion de enchape pared 30 X 60 cm, enchape rectificado, pasta blanca de Corona o similar Incluye: pegacor, concolor , varilla tipo wing en aluminio anodizado blanco en esquinas y cambio de dirección y todos los demás elementos necesarios | 1d | 2024-11-06 11:00 | 2024-11-07 11:00 | 327 | 45.75d | 0d | 265,854 | 0% | 0% | 0% | m² |  |
| 299 | 1.7.1.1.1.10 | Suministro e instalación de piso ceramica tipo mikonos de 33,8 mm. X33,8 mm. color a definir en obra ,para unidades sanitarias y restaurantes , incluye mortero de nivelación 1:5 y pegacor. | 1d | 2024-11-07 11:00 | 2024-11-08 11:00 | 298 | 45.75d |  | 423,637 | 0% | 0% | 0% | m² |  |
| 300 | 1.7.1.1.2 | **Muro** | 21.5d | 2024-10-18 15:00 | 2024-11-18 19:00 |  | 36.25d |  | 9,181,704 | 0% | 0% | 0% |  |  |
| 301 | 1.7.1.1.2.1 | **Viga** | 13.5d | 2024-10-18 15:00 | 2024-11-06 19:00 |  | 36.25d |  | 2,093,166 | 0% | 0% | 0% |  |  |
| 302 | 1.7.1.1.2.1.1 | F y = 420 Mpa. (4200 kg/cm².) | 1.5d | 2024-10-18 15:00 | 2024-10-21 19:00 | 292 | 36.25d | 0d | 1,134,452 | 0% | 0% | 0% | kg |  |
| 303 | 1.7.1.1.2.1.2 | Viga area de 0,20x 0,20 acabado a la vista | 2d | 2024-11-05 09:00 | 2024-11-06 19:00 | 304 | 39d | 0d | 958,714 | 0% | 0% | 0% | ml |  |
| 304 | 1.7.1.1.2.2 | Construcción de MAMPOSTERÍA EN BLOQUE DE CONCRETO 13 Mpa. TIPO CATALÁN DE 10 x 15 x 30 cm, ESPESOR DE 15 cm. Color ROJO, NEGRO, VERDE OLIVA, JASPE, TERRACOTA, MARRÓN, ANTICADO,ARENA, OCRE que cumpla norma NTC 4026 y 4076. Incluye: mortero de pega 0.25:1:4 | 3d | 2024-10-31 09:00 | 2024-11-04 19:00 | 296FS+2d | 36.25d | 0d | 4,424,109 | 0% | 0% | 0% | m² |  |
| 305 | 1.7.1.1.2.3 | Concreto grauting para vaciado en mamposteria estructural. | 2d | 2024-11-01 09:00 | 2024-11-04 19:00 | 304SS+1d | 49d |  | 630,688 | 0% | 0% | 0% | m³ |  |
| 306 | 1.7.1.1.2.4 | Construcción de dinteles en concreto de 21 Mpa. Incluye: formaleta, protección y curado. No incluye refuerzo. De 0,15x0,20m. | 1d | 2024-11-01 09:00 | 2024-11-01 19:00 | 304SS+1d | 50d |  | 257,840 | 0% | 0% | 0% | ml |  |
| 307 | 1.7.1.1.2.5 | Suministro y colocacion de chapa en catalan 10x30 cm. Utilizar cortadora. | 0.5d | 2024-11-15 15:00 | 2024-11-15 19:00 | 318 | 39d | 0d | 85,039 | 0% | 0% | 0% | m² |  |
| 308 | 1.7.1.1.2.6 | Suministro y aplicaciòn de hidrófugo impermeabilizante del tipo siliconite o similar para mamposteria de fachadas dos manos | 1d | 2024-11-18 09:00 | 2024-11-18 19:00 | 307 | 39d |  | 1,690,862 | 0% | 0% | 0% | m² |  |

| ID | WBS | Task | Duration | Start | Finish | Predecessors | Total slack | Free slack | Cost | %programado | Desviación % | % financiero ejecutado | Unidad |
| --- | --- | --- | --- | --- | --- | --- | --- | --- | --- | --- | --- | --- | --- |
| 309 | 1.7.1.1.3 | **Cubierta** | 46.5d? | 2024-09-12 09:00 | 2024-11-15 13:00 |  | 40.5d |  | 3,896,011 | 22% | 22% | 0% |  |
| 310 | 1.7.1.1.3.1 | **Teja** | 44.5d? | 2024-09-12 09:00 | 2024-11-13 13:00 |  | 42.5d |  | 1,850,863 | 40% | 40% | 0% |  |
| 311 | 1.7.1.1.3.1.1 | Construcción de techo en teja de barro.El contratista calculara la estructura para una carga de 210 kg/m2 se requiere diseño estructural y memorias con previa aprobaciòn de la interventoria, incluye: alfardas de secciòn 21/2"x6" comerciales, solera 21/2"x | 1.5d | 2024-11-12 09:00 | 2024-11-13 13:00 | 303FS+3d | 39d | 0d | 1,850,863 | 0% | 0% | 0% | m² |
| 312 | 1.7.1.1.3.1.2 | <Tarea nueva> | 1d? | 2024-09-12 09:00 | 2024-09-12 19:00 |  | 86d |  |  | 100% | 100% |  |  |
| 313 | 1.7.1.1.3.2 | **Mantenimiento** | 0.5d | 2024-11-13 15:00 | 2024-11-13 19:00 |  | 39d |  | 1,103,604 | 0% | 0% | 0% |  |
| 314 | 1.7.1.1.3.2.1 | Reparación de techo en teja de barro. Incluye: retiro de manto existente si es necesario, retiro de teja existente, reistalación de la misma, suministro y colocación de teja (del 20%), tablilla (del 100 %) , impermeabilización con manto asfaltico imperpol | 0.5d | 2024-11-13 15:00 | 2024-11-13 19:00 | 311 | 39d | 0d | 1,103,604 | 0% | 0% | 0% | m2 |
| 315 | 1.7.1.1.3.3 | **Canoa** | 0.5d | 2024-11-14 09:00 | 2024-11-14 13:00 |  | 39d |  | 433,352 | 0% | 0% | 0% |  |
| 316 | 1.7.1.1.3.3.1 | Suministro y colocación de canoa en U en lamina galvanizada calibre 24 moldurada, grafada y soldada en las uniones, desarrollo 0.70 m., incluye:embudos, boquillas, tapas, ganchos de fijación, pintura anticorrosiva verde y de acabado color a definir por in | 0.5d | 2024-11-14 09:00 | 2024-11-14 13:00 | 314 | 39d | 0d | 433,352 | 0% | 0% | 0% | ml |
| 317 | 1.7.1.1.3.4 | **Ruana** | 1d | 2024-11-14 15:00 | 2024-11-15 13:00 |  | 39d |  | 508,192 | 0% | 0% | 0% |  |
| 318 | 1.7.1.1.3.4.1 | Suministro y colocación de ruanas en lámina galvanizada calibre 24, incluye mortero, pintura anticorrosiva y a base de aceite, desarrollo 33 cm., pestaña de 5 cm. Canchada de muro, faja en revoque impermeabilizado con filete y todo lo necesario para su co | 1d | 2024-11-14 15:00 | 2024-11-15 13:00 | 316 | 39d | 0d | 508,192 | 0% | 0% | 0% | ml |
| 319 | 1.7.1.1.4 | **Red Sanitaria** | 4.25d | 2024-10-31 09:00 | 2024-11-06 11:00 |  | 36.25d |  | 3,236,956 | 0% | 0% | 0% |  |
| 320 | 1.7.1.1.4.1 | Suministro y colocación de tubería PVC-S para aguas negras y aguas lluvias. Incluye: accesorios, limpiador y soldaduras . Ø = 2". | 1d | 2024-10-31 09:00 | 2024-10-31 19:00 | 304SS | 36.25d | 0d | 260,883 | 0% | 0% | 0% | ml |
| 321 | 1.7.1.1.4.2 | Suministro y colocación de tubería PVC-S para aguas negras y aguas lluvias. Incluye: accesorios, limpiador y soldaduras . Ø = 4". | 1d | 2024-11-01 09:00 | 2024-11-01 19:00 | 320 | 45.75d | 0d | 516,612 | 0% | 0% | 0% | ml |
| 322 | 1.7.1.1.4.3 | Construcción de salidas sanitarias en tuberia PVC-S; incluye accesorios ( considerada de la Yee al aparato). En 2 pulgadas, de L=1,50/2,00 m. | 0.5d | 2024-11-04 09:00 | 2024-11-04 13:00 | 321 | 45.75d | 0d | 350,404 | 0% | 0% | 0% | sal |
| 323 | 1.7.1.1.4.4 | Construcción de salidas sanitarias en tuberia PVC-S; incluye accesorios ( considerada de la Yee al aparato). En 4 pulgadas, de L=1,50/2,00 m. | 0.5d | 2024-11-04 09:00 | 2024-11-04 13:00 | 322SS | 45.75d | 0d | 182,194 | 0% | 0% | 0% | sal |
| 324 | 1.7.1.1.4.5 | Suministro y colocación de Sanitario bajo consumo, a color. Incluye: brida de fijación, tapon con rosca para brida del color del sanitario, grifería, abasto metálico,( con manguera flexible), emboquillado con silicona antihongos y todos los elementos nece | 0.25d | 2024-11-04 17:00 | 2024-11-04 19:00 | 331 | 45.75d | 0d | 750,572 | 0% | 0% | 0% | un |
| 325 | 1.7.1.1.4.6 | Suministro y colocación de Lavamanos Integral, a color. Incluye Griferia Koral metalica, baja para lavamanos, llave de abastos y todos los elementos necesarios para su correcto funcionamiento. | 0.25d | 2024-11-04 17:00 | 2024-11-04 19:00 | 324SS | 45.75d | 0d | 547,413 | 0% | 0% | 0% | un |
| 326 | 1.7.1.1.4.7 | Suministro y colocación de rejilla de piso anti cucarachas en acero inoxidable 10X10 tipo grival o similar. Ø = 2". | 0.25d | 2024-11-05 11:00 | 2024-11-05 13:00 | 332 | 45.75d | 0d | 64,556 | 0% | 0% | 0% | un |
| 327 | 1.7.1.1.4.8 | Suministro, transporte e instalación de lavaescobas prefabricado en granito + cemento blanco de 0,60 m. x 0,42 x 0,25 m. tipo Cimbrados. Incluye : desagüe conformado por 1 unión, tubería PVC- S de 11/2", 1 sifón con tapón roscado, 1 codo de 90 c x c, 1 ad | 0.5d | 2024-11-05 17:00 | 2024-11-06 11:00 | 333 | 45.75d | 0d | 564,322 | 0% | 0% | 0% | un |
| 328 | 1.7.1.1.5 | **Red Hidraúlica** | 1.25d | 2024-11-04 15:00 | 2024-11-05 17:00 |  | 45.75d |  | 1,156,151 | 0% | 0% | 0% |  |
| 329 | 1.7.1.1.5.1 | Suministro y colocación de tubería PVC. Presión , incluye accesorios,limpiador y soldaduras Ø = ½" RDE 9 | 0.5d | 2024-11-04 15:00 | 2024-11-04 19:00 | 323 | 45.75d | 0d | 111,101 | 0% | 0% | 0% | ml |
| 330 | 1.7.1.1.5.2 | Suministro y colocación de tubería PVC. Presión , incluye accesorios,limpiador y soldaduras. Ø = ¾".RDE 11 | 0.25d | 2024-11-04 15:00 | 2024-11-04 17:00 | 329SS | 45.75d | 0d | 66,205 | 0% | 0% | 0% | ml |
| 331 | 1.7.1.1.5.3 | Construcción de salida hidraulica en tuberia PVC-P; incluye: tuberia , accesorios, camara de aire y terminales en cobre, limpiador , soldadura, L= 0,50 a 2,00 m. ( considerada de red principal al aparato). Ø = ½" RDE 9, 500 PSI | 0.25d | 2024-11-04 15:00 | 2024-11-04 17:00 | 330SS | 45.75d | 0d | 431,946 | 0% | 0% | 0% | un |
| 332 | 1.7.1.1.5.4 | Suministro, transporte e instalación de abasto llave metalica.Incluye: retiro del existente. Griferia Koral metalica, baja para lavamanos | 0.25d | 2024-11-05 09:00 | 2024-11-05 11:00 | 325 | 45.75d | 0d | 341,751 | 0% | 0% | 0% | un |
| 333 | 1.7.1.1.5.5 | Suministro e instalación de llaves de paso, tipo Red white. Incluye todos los accesorios necesarios para su correcto funcionamiento, de : Diametro 3/4" | 0.25d | 2024-11-05 15:00 | 2024-11-05 17:00 | 326 | 45.75d | 0d | 205,148 | 0% | 0% | 0% | un |

| ID | WBS | Task | Duration | Start | Finish | Predecessors | Complete | Remaining | Total slack | Free slack | Constraint | Cost | Actual cost | %programado | Desviación % | % financiero ejecutado | Unidad |
| --- | --- | --- | --- | --- | --- | --- | --- | --- | --- | --- | --- | --- | --- | --- | --- | --- | --- |
| 334 | 1.7.1.1.6 | **Carpintería Metálica** | 1d | 2024-11-18 09:00 | 2024-11-18 19:00 |  |  |  | 39d |  |  | 2,364,823 |  | 0% | 0% | 0% |  |
| 335 | 1.7.1.1.6.1 | **Puerta** | 0.5d | 2024-11-18 09:00 | 2024-11-18 13:00 |  |  |  | 39d |  |  | 1,667,768 |  | 0% | 0% | 0% |  |
| 336 | 1.7.1.1.6.1.1 | Suministro, transporte e instalación de puerta metálica, un (1) ala batiente en lámina cold rolled calibre 18, entamborada lisa, rellena con porón (poliuretano expandido), con bastidor perimetral en tubería PTS de 40x40x2 mm. y refuerzos horizontales en t | 0.5d | 2024-11-18 09:00 | 2024-11-18 13:00 | 307 |  |  | 39d | 0d |  | 1,667,768 |  | 0% | 0% | 0% | un |
| 337 | 1.7.1.1.6.2 | **Ventana** | 0.5d | 2024-11-18 15:00 | 2024-11-18 19:00 |  |  |  | 39d |  |  | 697,055 |  | 0% | 0% | 0% |  |
| 338 | 1.7.1.1.6.2.1 | Suministro, transporte y colocación de ventanas en aluminio anodizado natural y cristal templado de 6 mm., sistema 8025 de alúmina o equivalente y sistema Vp-3831. parte superior en celosía fija de aluminio anodizado natural, parte inferior dividida en va | 0.5d | 2024-11-18 15:00 | 2024-11-18 19:00 | 336 |  |  | 39d |  |  | 697,055 |  | 0% | 0% | 0% | m2 |
| 339 | 1.7.1.1.7 | **Sistema Eléctrico** | 13.75d | 2024-11-04 09:00 | 2024-11-21 17:00 |  |  |  | 36.25d |  |  | 6,147,374 |  | 0% | 0% | 0% |  |
| 340 | 1.7.1.1.7.1 | Inspección, diagnóstico y adecuación de redes electricas ante fallas de energía y emergencias que afecten la continuidad del proceso educativo. Incluye: diagnóstico, restablecimiento del servicio de energía, reencendido de equipos, corrección/aislamiento | 1d | 2024-11-04 09:00 | 2024-11-04 19:00 | 320SS+2d |  |  | 36.25d | 0d |  | 348,598 |  | 0% | 0% | 0% | pareja/día |
| 341 | 1.7.1.1.7.2 | Mano de obra para la organización de cableados varios existentes en canaleta 11x5/12x5 cm. No incluye canaleta. | 2d | 2024-11-19 11:00 | 2024-11-21 11:00 | 354 |  |  | 36.25d | 0d |  | 697,196 |  | 0% | 0% | 0% | pareja/día |
| 342 | 1.7.1.1.7.3 | Retiro de instalaciones y elementos eléctricos existentes. Incluye el reintegro donde la interventoría/supervisión lo indique. | 1d | 2024-11-08 09:00 | 2024-11-08 19:00 | 340FS+3d |  |  | 36.25d | 0d |  | 348,598 |  | 0% | 0% | 0% | pareja/día |
| 343 | 1.7.1.1.7.4 | Suministro, transporte e instalación de tubería metálica EMT 1/2". Incluye adaptadores, uniones, grapas doble ala, marcación y demás accesorios necesarios para su correcta instalación. | 0.5d | 2024-11-11 09:00 | 2024-11-11 13:00 | 342 |  |  | 36.25d | 0d |  | 976,679 |  | 0% | 0% | 0% | ml |
| 344 | 1.7.1.1.7.5 | Suministro, transporte e instalación de caja metálica 12X12X5cm, de sobreponer, con tapa atornillada (tapa lisa/tapa toma/tapa suiche), calibre 20, pintura electrostática gris. Incluye accesorios de fijación y demás elementos necesarios para su correcta i | 0.5d | 2024-11-11 15:00 | 2024-11-11 19:00 | 343 |  |  | 36.25d | 0d |  | 164,646 |  | 0% | 0% | 0% | un |
| 345 | 1.7.1.1.7.6 | Suministro, transporte e instalación de tablero de 6 circuitos monofásico 3H, 120V con puerta y chapa, para breaker enchufable, de lamina cold rolled con aplicación de pintura electrostática: Blanco RAL 9003, barraje en cobre de 75A, barra de neutro y bar | 0.5d | 2024-11-12 09:00 | 2024-11-12 13:00 | 344 |  |  | 36.25d | 0d |  | 198,552 |  | 0% | 0% | 0% | un |
| 346 | 1.7.1.1.7.7 | Suministro, transporte e instalación de SALIDA eléctrica para TOMACORRIENTE doble con polo a tierra color blanco, 15A, 125V, en tubería EMT. Incluye: 3m de cable de cobre 1xNº12 AWG Libre de halógenos (HF) y Resistente a la llama (FR), marcación, caja met | 0.25d | 2024-11-12 15:00 | 2024-11-12 17:00 | 345 |  |  | 36.25d | 0d |  | 77,079 |  | 0% | 0% | 0% | un |
| 347 | 1.7.1.1.7.8 | Suministro, transporte e instalación de SALIDA eléctrica para TOMACORRIENTE doble GFCI, 15A, 125V, en tubería EMT. Incluye: 3m de cable de cobre 1xNº12 AWG Libre de halógenos (HF) y Resistente a la llama (FR), marcación, caja metálica 12x12x5cm, aparato c | 0.25d | 2024-11-12 17:00 | 2024-11-12 19:00 | 346 |  |  | 36.25d | 0d |  | 144,570 |  | 0% | 0% | 0% | un |
| 348 | 1.7.1.1.7.9 | Suministro, transporte e instalación de salida eléctrica para iluminación 120V, en tubería EMT. Incluye: 3m de cable de cobre 1xNº12 AWG Libre de halógenos (HF) y Resistente a la llama (FR), marcación, caja metálica 12x12x5cm con tapa, conectores tipo res | 0.5d | 2024-11-13 09:00 | 2024-11-13 13:00 | 347 |  |  | 36.25d | 0d |  | 144,956 |  | 0% | 0% | 0% | un |
| 349 | 1.7.1.1.7.10 | Suministro, transporte e instalación de salida eléctrica para switch doble, 15A, 120V, en tubería EMT. Incluye: 4m de cable de cobre 1xNº12 AWG Libre de halógenos (HF) y Resistente a la llama (FR), marcación, caja metálica 12x12x5cm con tapa, aparato, con | 0.25d | 2024-11-13 15:00 | 2024-11-13 17:00 | 348 |  |  | 36.25d | 0d |  | 218,577 |  | 0% | 0% | 0% | un |
| 350 | 1.7.1.1.7.11 | Suministro e instalación de interruptor (breaker) termomagnético enchufable 1x20A, Icc=10kA, 120/240V, Certificado UL SWD. | 0.5d | 2024-11-13 17:00 | 2024-11-14 11:00 | 349 |  |  | 36.25d | 0d |  | 70,025 |  | 0% | 0% | 0% | un |
| 351 | 1.7.1.1.7.12 | Suministro, transporte e instalación de alimentador en cable de cobre 3xNo12 AWG, Libre de halógenos (HF), resistente a la llama (FR), 90°C. Incluye accesorios para su correcta instalación y funcionamiento según RETIE. | 1d | 2024-11-14 11:00 | 2024-11-15 11:00 | 350 |  |  | 36.25d | 0d |  | 282,371 |  | 0% | 0% | 0% | ml |
| 352 | 1.7.1.1.7.13 | Suministro, transporte e instalación de alimentador en cable de cobre 1xNo12 AWG, Libre de halógenos (HF), resistente a la llama (FR), 90°C. Incluye accesorios para su correcta instalación y funcionamiento según RETIE. | 0.5d | 2024-11-15 11:00 | 2024-11-15 17:00 | 351 |  |  | 36.25d | 0d |  | 98,682 |  | 0% | 0% | 0% | ml |
| 353 | 1.7.1.1.7.14 | Suministro, transporte e instalación de alimentador en cable de cobre 1xNo10 AWG, Libre de halógenos (HF), resistente a la llama (FR), 90°C. Incluye accesorios para su correcta instalación y funcionamiento según RETIE. | 1d | 2024-11-15 17:00 | 2024-11-18 17:00 | 352 |  |  | 36.25d | 0d |  | 139,322 |  | 0% | 0% | 0% | ml |
| 354 | 1.7.1.1.7.15 | Suministro, transporte e instalación de alimentador en cable de cobre encauchetado 3xNo12 AWG PVC Retardante a la llama (FR) Resistente a la intemperie (SR), 90ºC. Incluye accesorios para su correcta instalación y funcionamiento según RETIE. | 1.5d | 2024-11-15 17:00 | 2024-11-19 11:00 | 353SS |  |  | 36.25d | 0d |  | 636,288 |  | 0% | 0% | 0% | ml |
| 355 | 1.7.1.1.7.16 | Suministro, transporte e instalación de luminaria industrial tipo hermética, con tubo LED difusor en policarbonato, 2x18W T8. Chasis en policarbonato resistente al impacto, 6500°K, 3600lm, IRC=70, 40.000 Horas - L70, IP=65, IK=06, 36W, 100-240V 50/60Hz. I | 0.5d | 2024-11-21 11:00 | 2024-11-21 17:00 | 341 |  |  | 36.25d | 0d |  | 578,649 |  | 0% | 0% | 0% | un |
| 356 | 1.7.1.1.7.17 | Suministro, transporte e instalación de luminaria LED tipo reflector 200W para interiores o exteriores, con soporte metálico para instalar sobrepuesto y driver integrado en la luminaria. Chasis en alumino extruído resistente a la humedad, 6500°K, 20000lm, | 0.5d | 2024-11-21 11:00 | 2024-11-21 17:00 | 355SS |  |  | 36.25d |  |  | 1,022,586 |  | 0% | 0% | 0% | un |
| 357 | 1.8 | **ÁREAS TRANSVERSALES** | 87d | 2024-09-12 09:00 A | 2025-01-10 19:00 |  | 44% | 48.94d | 0d |  |  | 24,598,494 | 7,675,437.75 | 25% | -19% | 31.2028766883046% |  |
| 358 | 1.8.1 | Ambiental | 87d | 2024-09-12 09:00 A | 2025-01-10 19:00 |  | 25% | 65.25d | 0d |  | start no earlier than 2024-09-12 09:00 | 13,514,707 | 3,378,676.75 | 25% | 0% | 25% |  |
| 359 | 1.8.2 | Seguridad y salud en el trabajo | 87d | 2024-09-12 09:00 A | 2025-01-10 19:00 |  | 25% | 65.25d | 0d |  | start no earlier than 2024-09-12 09:00 | 3,089,368 | 772,342 | 25% | 0% | 25% |  |
| 360 | 1.8.3 | Social | 87d | 2024-09-12 09:00 A | 2025-01-10 19:00 |  | 25% | 65.25d | 0d |  | start no earlier than 2024-09-12 09:00 | 5,960,000 | 1,490,000 | 25% | 0% | 25% |  |
| 361 | 1.8.4 | Poliza | 87d | 2024-09-12 09:00 A | 2025-01-10 19:00 A |  | 100% |  |  |  | start no earlier than 2024-09-12 09:00 | 2,034,419 | 2,034,419 | 25% | -75% | 100% |  |

Notes:
- 357: Comentarios: Comprende las demás áreas de apoyo que son transversales al proyecto. Se deberán incluir aquellas requeridas en el proyecto y se desglosarán según sus entregables principales.

| ID | WBS | Task | Type | Duration | Start | Finish | Total slack | Constraint | %programado | Desviación % |
| --- | --- | --- | --- | --- | --- | --- | --- | --- | --- | --- |
| 362 | 1.9 | **GERENCIA DE PROYECTO** |  | 87d | 2024-09-12 09:00 | 2025-01-10 19:00 | 0d |  | 25% | 25% |
| 363 | 1.9.1 | Gestión de adquisiciones |  | 87d | 2024-09-12 09:00 | 2025-01-10 19:00 | 0d | start no earlier than 2024-09-12 09:00 | 25% | 25% |
| 364 | 1.9.2 | FIN | milestone | 0d | 2025-01-10 19:00 | 2025-01-10 19:00 | 0d | finish no earlier than 2025-01-10 19:00 | 0% | 0% |

Notes:
- 362: Comentarios: Comprende las áreas del conocimiento del PMBOK 6ed del PMI. Como mínimo, deberá abarcar el componente de las adquisiciones.
- 363: Comentarios: Se deberán listar las adquisiciones de insumos críticos para el desarrollo de la obra.
