# PROGRAMA - MANTENIMIENTO DE REDES SEDE CARIBE

Schedule from MS Project, 2024-07-22 to 2024-12-18, 9 hours a day, costs in $.

## Calendars

- REDES SEDE CARIBE: Mon-Sun 07:00-12:00, 13:00-17:00.

## Schedule

| ID | WBS | Task | Type | Duration | Start | Finish | Predecessors | Total slack | Free slack | Cost | Unidad | Text1 |
| --- | --- | --- | --- | --- | --- | --- | --- | --- | --- | --- | --- | --- |
| 1 | 1 | ACTA DE INICIO | milestone | 0d | 2024-07-22 | 2024-07-22 |  | 0d |  |  |  |  |
| 2 | 2 | POLIZAS | milestone | 0d | 2024-07-22 | 2024-07-22 |  | 150d |  | 14,570,802 |  |  |
| 3 | 3 | **FASE 1** |  | 30d | 2024-07-22 | 2024-08-20 |  | 120d |  | 559,935,998.91 |  |  |
| 4 | 3.1 | **PRELIMINARES** |  | 8d | 2024-07-22 | 2024-07-29 |  | 120d |  | 23,690,305 |  |  |
| 5 | 3.1.1 | CONSTRUCCIÓN DE CAMPAMENTO |  | 8d | 2024-07-22 | 2024-07-29 | 1SS | 120d | 0d | 5,139,559 | glb |  |
| 6 | 3.1.2 | LOCALIZACIÓN, TRAZADO Y REPLANTEO. Se utilizará personal experto con equipo de precisión. Se hará con la frecuencia que lo indique la interventoría. Incluye demarcación con pintura, línea de trazado, corte de piso, libretas y planos. |  | 8d | 2024-07-22 | 2024-07-29 | 5SS | 120d | 0d | 15,312,671 | día | 1.1.1 |
| 7 | 3.1.3 | Instalación de CERRAMIENTO PROVISIONAL en tela verde polietileno de alta densidad y resistencia 65 gr/m2 con una altura de 2,10 m, estacones de madera común para fijación vertical de altura de 2,50 m puesto mínimo cada 2,0 m y para apuntalamiento mínimo c |  | 8d | 2024-07-22 | 2024-07-29 | 6SS | 142d |  | 3,238,075 |  | 4.1.1 |
| 8 | 3.2 | **DEMOLICIONES Y RETIROS** |  | 20d | 2024-08-01 | 2024-08-20 |  | 120d |  | 57,025,284 |  |  |
| 9 | 3.2.1 | **DEMOLICIONES** |  | 20d | 2024-08-01 | 2024-08-20 |  | 120d |  | 22,500,283 |  |  |
| 10 | 3.2.1.1 | DEMOLICIÓN ANDENES O PISOS, cargue, transporte y botada de escombros de ESPESOR MÁXIMO DE 0.25m en CONCRETO. Incluye retiro de cordones, retiro de enchape (baldosa, baldosín forros en arenón, madera, vinilo, granito esmerilado, concreto, pisos en gres, en |  | 20d | 2024-08-01 | 2024-08-20 | 6SS+10d | 120d | 0d | 3,648,744 | m2 | 1.2.1.1 |
| 11 | 3.2.1.2 | DEMOLICIÓN ESTRUCTURAS DE CONCRETO cargue, transporte y botada de escombros, manual o mecánicamente, de cualquier resistencia, reforzado o ciclópeo, y en cualquier clase de estructura. Incluye retiro de refuerzo y cualquier tipo de acabado (revoques y enc |  | 20d | 2024-08-01 | 2024-08-20 | 10SS | 120d |  | 5,021,374 | m3 | 1.2.1.2 |
| 12 | 3.2.1.3 | DEMOLICIÓN PAVIMENTO ASFÁLTICO (para brecha), cargue, transporte y botada de escombros, HASTA ESPESOR DE 4". Incluye corte con máquina de disco según trazado y compresor neumático con martillo, además recuperación de los materiales aprovechables o su tran |  | 20d | 2024-08-01 | 2024-08-20 | 6SS+10d | 120d |  | 4,125,954 | m2 | 1.2.1.3 |
| 13 | 3.2.1.4 | DEMOLICIÓN PISO EN CONCRETO de cualquier resistencia con espesor hasta de 12 cm, manual o mecánicamente. Incluye cargue, transporte y botada de escombros, retiro de refuerzo e instalaciones embebidas, compresor neumático con martillo, además recuperación |  | 20d | 2024-08-01 | 2024-08-20 | 10SS | 120d | 0d | 6,555,116 | m2 | 1.2.1.4 |
| 14 | 3.2.1.5 | DEMOLICIÓN CAJAS DE CONCRETO cargue, transporte y botada de escombros, manual o mecánicamente, de cualquier resistencia, reforzado o ciclópeo, y en cualquier clase de estructura. Incluye retiro de refuerzo y cualquier tipo de acabado (revoques y enchapes) |  | 20d | 2024-08-01 | 2024-08-20 | 13SS, 10SS | 120d | 0d | 351,600 | un | 1.2.1.5 |
| 15 | 3.2.1.6 | DEMOLICIÓN CAMARA DE INSPECCIÓN cargue, transporte y botada de escombros, manual o mecánicamente, de cualquier resistencia, reforzado o ciclópeo, y en cualquier clase de estructura. Incluye retiro de refuerzo y cualquier tipo de acabado (revoques y enchap |  | 20d | 2024-08-01 | 2024-08-20 | 14SS | 120d | 0d | 203,024 | un | 1.2.1.6 |
| 16 | 3.2.1.7 | DEMOLICIÓN MAMPOSTERÍA CANCHAS para instalaciones eléctricas y/o hidrosanitarias DESARROLLO 0.10m. cargue, transporte y botada de escombros. Incluye botada del material proveniente de estas canchas en botaderos oficiales o donde indique la interventoría. |  | 20d | 2024-08-01 | 2024-08-20 | 15SS | 120d |  | 2,594,471 |  | 4.2.1.2 |
| 17 | 3.2.2 | **RETIRO** |  | 20d | 2024-08-01 | 2024-08-20 |  | 120d |  | 34,525,001 |  |  |
| 18 | 3.2.2.1 | RETIRO DE TUBERÍA DE ALCANTARILLADO enterrada y/o confinada. Incluye el cargue y transporte de los materiales aprovechables hasta la bodega o donde lo indique la interventoría, el cargue transporte y botada de los escombros generados en botaderos oficiale |  | 20d | 2024-08-01 | 2024-08-20 | 26SS | 120d | 0d | 30,538,900 |  | 1.2.2.1 |
| 19 | 3.2.2.2 | ANULACIÓN CAJAS DE CONCRETO incluye lleno en arenilla compactado al 95% y tapa en concreto de 21 Mpa |  | 20d | 2024-08-01 | 2024-08-20 | 18SS | 120d | 0d | 203,788 | un | 1.2.2.2 |
| 20 | 3.2.2.3 | ANULACIÓN CÁMARA DE INSPECCIÓN EXISTENTE incluye tapa en concreto reforzado |  | 20d | 2024-08-01 | 2024-08-20 | 19SS | 120d |  | 243,672 | un | 1.2.2.3 |
| 21 | 3.2.2.4 | RETIRO de cerramiento en malla y bloque de concreto, Incluye el cargue y transporte de los materiales hasta la bodega o donde lo indique la interventoría, el cargue transporte y botada de los escombros generados en botaderos oficiales o donde lo indique l |  | 20d | 2024-08-01 | 2024-08-20 | 1SS+10d | 120d | 0d | 2,475,862 |  | 1.2.2.4 |
| 22 | 3.2.2.5 | RETIRO Y REINSTALACION de estructura porteria cancha existente. Incluye el cargue y transporte de los materiales hasta la bodega o donde lo indique la interventoría, el cargue transporte y botada de los escombros generados en botaderos oficiales o donde l |  | 20d | 2024-08-01 | 2024-08-20 | 21SS | 120d | 0d | 665,531 | un | 1.2.2.5 |
| 23 | 3.2.2.6 | RETIRO Y REUBICACIÓN PERRERAS existentes, Incluye el cargue y transporte de los materiales hasta la bodega o donde lo indique la interventoría, el cargue transporte y botada de los escombros generados en botaderos oficiales o donde lo indique la intervent |  | 20d | 2024-08-01 | 2024-08-20 | 22SS | 120d |  | 397,248 | un | 1.2.2.6 |
| 24 | 3.3 | **MOVIMIENTO DE TIERRAS** |  | 20d | 2024-08-01 | 2024-08-20 |  | 120d |  | 178,371,985 |  |  |
| 25 | 3.3.1 | **EXCAVACIÓN** |  | 20d | 2024-08-01 | 2024-08-20 |  | 120d |  | 129,579,313 |  |  |
| 26 | 3.3.1.1 | EXCAVACIÓN MANUAL de material heterogéneo DE 0-2 m., bajo cualquier grado de humedad. Incluye: roca descompuesta, bolas de roca de volumen inferior a 0.35 m³., el cargue, transporte interno y externo, botada de material proveniente de las excavaciones en |  | 20d | 2024-08-01 | 2024-08-20 | 10SS, 13SS | 120d | 0d | 3,406,015 | m3 | 1.3.1.1 |
| 27 | 3.3.1.2 | EXCAVACIÓN MECÁNICA de material heterogéneo DE 2-4 m, bajo cualquier grado de humedad. Incluye: roca descompuesta, bolas de roca de volumen inferior a 0.35 m³., el cargue, transporte interno y externo y botada de material proveniente de las excavaciones e |  | 20d | 2024-08-01 | 2024-08-20 | 26SS | 120d | 0d | 90,297,948 | m3 | 1.3.1.2 |
| 28 | 3.3.1.3 | EXCAVACIÓN EN ROCA con CUÑA HIDRÁULICA. Incluye perforaciones con taladro neumático rotopercutor de 2" de diámetro, desembombe, transporte interno y acopio donde lo indique la interventoría y todos los demás elementos necesarios para su correcta ejecución |  | 20d | 2024-08-01 | 2024-08-20 | 27SS, 26SS | 120d | 0d | 20,409,569 | m3 | 1.3.1.3 |
| 29 | 3.3.1.4 | Construcción de ENTIBADO TEMPORAL en tablón de madera (6 usos), bajo cualquier altura y grado de humedad. Incluye suministro, transporte y colocación de elementos en madera, el cargue, transporte interno y externo y botada de material sobrantes en los sit |  | 20d | 2024-08-01 | 2024-08-20 | 26SS, 27SS, 28SS | 120d |  | 13,077,174 | m2 | 1.3.1.4 |
| 30 | 3.3.1.5 | Suministro, transporte e instalación de bomba sumergible para aguas lluvias 3/4HP descarga de 3", incluye cheque mipel de 3" universal, flotador eléctrico mércury o similar, arrancador termomagnético, alarma para mal funcionamiento de bomba, accesorios el |  | 20d | 2024-08-01 | 2024-08-20 | 26SS, 27SS, 28SS | 120d |  | 2,388,607 | un | 1.3.1.5 |

| ID | WBS | Task | Duration | Start | Finish | Predecessors | Total slack | Free slack | Cost | Text1 | Unidad |
| --- | --- | --- | --- | --- | --- | --- | --- | --- | --- | --- | --- |
| 31 | 3.3.2 | **LLENOS** | 20d | 2024-08-01 | 2024-08-20 |  | 120d |  | 48,792,672 |  |  |
| 32 | 3.3.2.1 | LLENOS EN ARENILLA, compactados mecánicamente hasta obtener una densidad del 98% de la máxima obtenida en el ensayo del Próctor modificado. Incluye el suministro, transporte, colocación de la arenilla, la compactación de la misma y transporte interno. Y s | 20d | 2024-08-01 | 2024-08-20 | 44SS | 120d | 0d | 3,041,387 | 1.3.2.1 | m3 |
| 33 | 3.3.2.2 | LLENOS EN MATERIAL PROVENIENTES DE LA EXCAVACIÓN, compactados mecánicamente hasta obtener una densidad del 95% de la máxima obtenida en el ensayo del próctor modificado. Incluye transporte interno. Su medida será en sitio ya compactado. | 20d | 2024-08-01 | 2024-08-20 | 32SS | 120d | 0d | 10,382,269 | 1.3.2.2 | m3 |
| 34 | 3.3.2.3 | Suministro, transporte y colocación de base granular de máximo Ø 1½", reacomodado con medios MANUALES y compactado al 100% mínimo del ensayo del proctor modificado, según normas para la construcción de pavimentos del INVIAS, y todo lo necesario para su co | 20d | 2024-08-01 | 2024-08-20 | 35SS | 120d | 63d | 12,887,013 | 1.3.2.3 | m3 |
| 35 | 3.3.2.4 | Suministro, transporte y colocación de subbase granular de máximo Ø 2½", reacomodado con medios mecánicos y compactado al 100% mínimo del ensayo del proctor modificado según normas para la construcción de pavimentos del INVIAS. Incluye todo lo necesario p | 20d | 2024-08-01 | 2024-08-20 | 33SS | 120d | 0d | 14,770,660 | 1.3.2.4 | m3 |
| 36 | 3.3.2.5 | Suministro, transporte y colocación de TRITURADO de 3/4 " (19mm) y 1" (25mm) para construcción de CIMENTACIÓN TIPO C1. Incluye transporte interno y todo lo necesario para su correcta instalación. | 20d | 2024-08-01 | 2024-08-20 | 26SS, 27SS, 28SS | 120d | 0d | 7,711,343 | 1.3.2.6 | m3 |
| 37 | 3.4 | **CARGUE Y TRANSPORTE MANUAL** | 14d | 2024-08-07 | 2024-08-20 |  | 120d |  | 6,361,785 |  |  |
| 38 | 3.4.1 | CARGUE MECANICO, TRANSPORTE Y BOTADA DE ESCOMBROS, incluye, el cargue con máquina, repaleo, transporte interno y externo y botada de material tipo escombro en los sitios donde lo indique la interventoría y su medida será en el sitio. | 14d | 2024-08-07 | 2024-08-20 | 26FF, 27FF, 28FF | 120d |  | 6,361,785 | 1.3.3.1 | m3 |
| 39 | 3.5 | **ACARREOS** | 20d | 2024-08-01 | 2024-08-20 |  | 120d |  | 14,097,237 |  |  |
| 40 | 3.5.1 | Acarreo interno de materiales en condiciones de fácil acceso, 0 - 100 metros | 20d | 2024-08-01 | 2024-08-20 | 26SS, 27SS, 28SS | 120d |  | 3,446,919 | 1.3.4.1 | m3 |
| 41 | 3.5.2 | Acarreo interno de materiales para lugares de dificil acceso, pendiente, escalas y senderos en piedra o en tierra. Entre 0 a 100 m. (Incluye cargue, suministro y llenado de canecas de 5 galónes) | 20d | 2024-08-01 | 2024-08-20 | 26SS, 27SS, 28SS | 120d |  | 10,650,318 | 1.3.4.2 | m3 |
| 42 | 3.6 | **REDES RESIDUALES** | 20d | 2024-08-01 | 2024-08-20 |  | 120d |  | 127,254,655.87 |  |  |
| 43 | 3.6.1 | **Red residual externa** | 20d | 2024-08-01 | 2024-08-20 |  | 120d |  | 21,547,055 |  |  |
| 44 | 3.6.1.1 | Suministro, transporte e instalación de TUBERÍA PVC-NOVAFORT, con un DIÁMETRO DE 200 mm. Incluye suministro y transporte de los materiales, bocas, accesorios, acondicionador de superficie y adhesivo Novafort y todos los elementos necesarios para su correc | 20d | 2024-08-01 | 2024-08-20 | 36SS | 120d | 0d | 21,547,055 | 1.6.1.5 |  |
| 45 | 3.6.2 | **Red residual interna (sotano)** | 15d | 2024-08-06 | 2024-08-20 |  | 120d |  | 105,707,600.87 |  |  |
| 46 | 3.6.2.1 | Suministro, transporte e instalación de TUBERÍA PVC-SANITARIA, COLGADA O EN BAJANTE con un DIÁMETRO DE 3", de aguas residuales. Incluye suministro y transporte de los materiales, bocas, accesorios, pegante, limpiador, wash primer, acabado en esmalte mate, | 15d | 2024-08-06 | 2024-08-20 | 44SS+5d | 120d | 0d | 466,297 | 4.6.3.1 |  |
| 47 | 3.6.2.2 | Suministro, transporte e instalación de TUBERÍA PVC-SANITARIA, COLGADA O EN BAJANTES con un DIÁMETRO DE 4", agua RESIDUAL. Incluye suministro y transporte de los materiales, bocas, accesorios, pegante, limpiador, wash primer, acabado en esmalte mate, colo | 15d | 2024-08-06 | 2024-08-20 | 46SS | 120d | 0d | 20,804,579 | 1.6.1.1 |  |
| 48 | 3.6.2.3 | Suministro, transporte e instalación de TUBERÍA PVC-SANITARIA, con un DIÁMETRO DE 4", para aguas residuales o lluvia ENTERRADA y/o EMPOTRADA por losas. Incluye suministro y transporte de los materiales, accesorios, pegante, limpiador y todos los elementos | 15d | 2024-08-06 | 2024-08-20 | 36SS+5d | 120d | 0d | 7,993,109 | 1.6.1.2 |  |
| 49 | 3.6.2.4 | Suministro, transporte e instalación de TUBERÍA PVC-SANITARIA, COLGADA O EN BAJANTES con un DIÁMETRO DE 6", agua RESIDUAL O LLÚVIA. Incluye suministro y transporte de los materiales, bocas, accesorios, pegante, limpiador, wash primer, acabado en esmalte m | 15d | 2024-08-06 | 2024-08-20 | 47SS | 120d | 0d | 11,780,736 | 1.6.1.3 |  |
| 50 | 3.6.2.5 | Suministro, transporte e instalación de TUBERÍA PVC-SANITARIA, con un DIÁMETRO DE 6", para aguas residuales o lluvia ENTERRADA y/o EMPOTRADA por losas. Incluye suministro y transporte de los materiales, accesorios, pegante, limpiador y todos los elementos | 15d | 2024-08-06 | 2024-08-20 | 36SS+5d | 120d | 6d | 3,519,230 | 1.6.1.4 |  |
| 51 | 3.6.2.6 | Suministro, transporte e instalación de TUBERÍA PVC-NOVAFORT, con un DIÁMETRO DE 200 mm. Incluye suministro y transporte de los materiales, bocas, accesorios, acondicionador de superficie y adhesivo Novafort y todos los elementos necesarios para su correc | 15d | 2024-08-06 | 2024-08-20 | 36SS+5d | 120d | 0d | 13,543,086 | 1.6.1.5 |  |
| 52 | 3.6.2.7 | Suministro, transporte e instalación de TUBERÍA PVC-VENTILACIÓN, con un DIÁMETRO DE 3", para bajantes de aguas lluvias o reventilación. Incluye suministro y transporte de los materiales, bocas, accesorios, pegante, limpiador, wash primer, acabado en esmal | 15d | 2024-08-06 | 2024-08-20 | 49SS | 120d | 0d | 10,232,918 | 4.6.3.4 |  |
| 53 | 3.6.2.8 | Suministro, transporte e instalación de TUBERÍA PVC-VENTILACIÓN, con un DIÁMETRO DE 4", para bajantes de aguas lluvias o reventilación. Incluye suministro y transporte de los materiales, bocas, accesorios, pegante, limpiador, wash primer, acabado en esmal | 15d | 2024-08-06 | 2024-08-20 | 52SS | 120d | 0d | 210,215 | 4.6.3.5 |  |
| 54 | 3.6.2.9 | **OBRAS COMPLEMENTARIAS REDES RESIDUALES** | 15d | 2024-08-06 | 2024-08-20 |  | 120d |  | 37,157,430.87 |  |  |
| 55 | 3.6.2.9.1 | Construcción de cajas de registro de 60 x 60 x altura hasta 120 cm. en concreto de 21Mpa. con impermeabilizante integral tipo Sika o equivalente, con concrefibra el piso y tapa en concreto, la tapa con su respectivo herraje. Incluye suministro, transporte | 9d | 2024-08-12 | 2024-08-20 | 48SS+6d, 50SS, 51SS | 120d |  | 6,954,020 | 1.6.2.1 | un |
| 56 | 3.6.2.9.2 | Suministro e instalación de abrazaderas diametro 3" | 15d | 2024-08-06 | 2024-08-20 | 46SS | 120d |  | 1,699,067 | 1.6.2.3 | un |
| 57 | 3.6.2.9.3 | Suministro e instalación de abrazaderas diametro 4" | 15d | 2024-08-06 | 2024-08-20 | 47SS | 120d |  | 2,560,760 | 1.6.2.4 | un |
| 58 | 3.6.2.9.4 | Suministro e instalación de abrazaderas diametro 6" | 15d | 2024-08-06 | 2024-08-20 | 49SS | 120d |  | 538,217 | 1.6.2.5 | un |
| 59 | 3.6.2.9.5 | Suministro, transporte e instalación de CUELLO PREFABRICADO EN CONCRETO PARA CÁMARA DE INSPECCIÓN Ø=1.20M. Incluye mortero para ajuste y pega del cuello al cono Según especificaciones técnicas de EEPP de Medellín y de diseño. Incluye suministro, transport | 15d | 2024-08-06 | 2024-08-20 | 51SS | 120d | 0d | 3,191,308 | 1.6.2.6 | un |
| 60 | 3.6.2.9.6 | Suministro, transporte e instalación de CILINDRO PREFABRICADO EN CONCRETO PARA CÁMARA DE INSPECCIÓN de 1,20m de diámetro. Incluye mortero para ajuste, pega y resane de las juntas y perforaciones del cilindro, Según especificaciones técnicas de EEPP de Med | 15d | 2024-08-06 | 2024-08-20 | 59SS | 120d | 0d | 6,522,897 | 1.6.2.7 |  |
| 61 | 3.6.2.9.7 | Suministro, transporte e instalación de CONO PREFABRICADO EN CONCRETO PARA CÁMARA DE INSPECCIÓN de 1,20m de diámetro. Incluye mortero para ajuste y pega del cono al cilindro y resane de las perforaciones, Según especificaciones técnicas de EEPP de Medellí | 15d | 2024-08-06 | 2024-08-20 | 60SS | 120d |  | 4,148,280 | 1.6.2.8 | un |
| 62 | 3.6.2.9.8 | Suministro e instalación soporte vertical riel mecano + fijador 4"-3"-2" pulgadas tuberia vertical | 15d | 2024-08-06 | 2024-08-20 | 46SS, 47SS, 49SS | 120d |  | 5,594,806 | 1.6.2.10 | un |
| 63 | 3.6.2.9.9 | Suministro transporte y Pintura esmalte para TUBERIAS COLGANTES y BAJANTES de diferentes diámetros hasta 8", color a definir por la Interventoria | 15d | 2024-08-06 | 2024-08-20 | 46SS, 47SS, 49SS | 120d |  | 2,516,293.87 | 1.6.2.11 |  |
| 64 | 3.6.2.9.10 | Suministro e instalación de Empalme a caja, de bajantes de aguas residuales B.A.R. en sótano, incluye accesorios de tuberias, resane en la pared de la caja, transporte de materiales | 15d | 2024-08-06 | 2024-08-20 | 46SS, 47SS | 120d |  | 316,659 | 4.7.10 | un |
| 65 | 3.6.2.9.11 | Suministro, colocación e instalación de Empalme de bajantes B.A.R. a Tuberia P.V.C. Sanitaria Ø6" provisional, colgada en sótano incluye accesorios (codos, unión, buje), las abrazaderas se pagan en su respectivo item y todo lo demás para su correcta ejecu | 15d | 2024-08-06 | 2024-08-20 | 49SS | 120d |  | 2,495,952 | 4.7.11 | un |
| 66 | 3.6.2.9.12 | Remate de ventilación en diámetro 3" en cubiertas, incluye todos los accesorios, codos, para su correcta instalación y funcionamiento. El sello a la cubierta se pagará en su respectivo item | 15d | 2024-08-06 | 2024-08-20 | 52SS | 120d |  | 581,888 | 4.8.7 | un |
| 67 | 3.6.2.9.13 | Remate de ventilación en diámetro 4" en cubiertas, incluye todos los accesorios, codos,para su correcta instalación y funcionamiento. El sello a la cubierta se pagará en su respectivo item | 15d | 2024-08-06 | 2024-08-20 | 53SS | 120d | 0d | 37,283 | 4.8.8 | un |

| ID | WBS | Task | Duration | Start | Finish | Predecessors | Total slack | Free slack | Cost | Text1 | Unidad |
| --- | --- | --- | --- | --- | --- | --- | --- | --- | --- | --- | --- |
| 68 | 3.7 | **AGUAS LLUVIAS** | 15d | 2024-08-06 | 2024-08-20 |  | 120d |  | 49,996,305.87 |  |  |
| 69 | 3.7.1 | **Red ALL externa** | 10d | 2024-08-11 | 2024-08-20 |  | 120d |  | 16,547,828 |  |  |
| 70 | 3.7.1.1 | Suministro, transporte e instalación de TUBERÍA PVC-NOVAFORT, con un DIÁMETRO DE 315 mm. Incluye suministro y transporte de los materiales, bocas, accesorios, acondicionador de superficie y adhesivo Novafort y todos los elementos necesarios para su correc | 10d | 2024-08-11 | 2024-08-20 | 36SS+10d | 120d | 0d | 11,968,758 | 2.6.1.4 |  |
| 71 | 3.7.1.2 | Suministro, transporte e instalación de TUBERÍA PVC-NOVAFORT, con un DIÁMETRO DE 355 mm. Incluye suministro y transporte de los materiales, bocas, accesorios, acondicionador de superficie y adhesivo Novafort y todos los elementos necesarios para su correc | 10d | 2024-08-11 | 2024-08-20 | 70SS | 120d | 0d | 4,579,070 | 2.6.1.5 |  |
| 72 | 3.7.2 | **Red ALL interna (sotano)** | 15d | 2024-08-06 | 2024-08-20 |  | 120d |  | 21,717,346.87 |  |  |
| 73 | 3.7.2.1 | Suministro, transporte e instalación de TUBERÍA PVC-SANITARIA, COLGADA O EN BAJANTES con un DIÁMETRO DE 6", agua RESIDUAL O LLÚVIA. Incluye suministro y transporte de los materiales, bocas, accesorios, pegante, limpiador, wash primer, acabado en esmalte m | 15d | 2024-08-06 | 2024-08-20 | 36SS+5d | 120d | 0d | 11,780,736 | 1.7.1 |  |
| 74 | 3.7.2.2 | Construcción de cajas de registro de 60 x 60 x altura hasta 120 cm. en concreto de 21Mpa. con impermeabilizante integral tipo Sika o equivalente, con concrefibra el piso y tapa en concreto, la tapa con su respectivo herraje. Incluye suministro, transporte | 9d | 2024-08-12 | 2024-08-20 | 73SS+6d | 120d |  | 6,954,020 | 1.7.2 | un |
| 75 | 3.7.2.3 | Suministro, transporte e instalación de TUBERÍA PVC-SANITARIA, COLGADA O EN BAJANTE con un DIÁMETRO DE 3", de aguas residuales. Incluye suministro y transporte de los materiales, bocas, accesorios, pegante, limpiador, wash primer, acabado en esmalte mate, | 15d | 2024-08-06 | 2024-08-20 | 67SS | 120d | 0d | 466,297 | 1.7.3 |  |
| 76 | 3.7.2.4 | Suministro transporte y Pintura esmalte para TUBERIAS COLGANTES y BAJANTES de diferentes diámetros hasta 8", color a definir por la Interventoria | 15d | 2024-08-06 | 2024-08-20 | 75SS | 120d |  | 2,516,293.87 | 1.7.4 |  |
| 77 | 3.7.3 | **OBRAS COMPLEMENTARIAS ALL externa** | 10d | 2024-08-11 | 2024-08-20 |  | 120d |  | 11,731,131 |  |  |
| 78 | 3.7.3.1 | Suministro, transporte e instalación de CUELLO PREFABRICADO EN CONCRETO PARA CÁMARA DE INSPECCIÓN Ø=1.20M. Incluye mortero para ajuste y pega del cuello al cono Según especificaciones técnicas de EEPP de Medellín y de diseño. Incluye suministro, transport | 10d | 2024-08-11 | 2024-08-20 | 70SS, 71SS | 120d | 0d | 1,914,785 | 2.6.2.1 | un |
| 79 | 3.7.3.2 | Suministro, transporte e instalación de CILINDRO PREFABRICADO EN CONCRETO PARA CÁMARA DE INSPECCIÓN de 1,20m de diámetro. Incluye mortero para ajuste, pega y resane de las juntas y perforaciones del cilindro, Según especificaciones técnicas de EEPP de Med | 10d | 2024-08-11 | 2024-08-20 | 78SS | 120d | 0d | 3,913,738 | 2.6.2.2 |  |
| 80 | 3.7.3.3 | Suministro, transporte e instalación de CONO PREFABRICADO EN CONCRETO PARA CÁMARA DE INSPECCIÓN de 1,20m de diámetro. Incluye mortero para ajuste y pega del cono al cilindro y resane de las perforaciones, Según especificaciones técnicas de EEPP de Medellí | 10d | 2024-08-11 | 2024-08-20 | 79SS | 120d |  | 2,488,968 | 2.6.2.3 | un |
| 81 | 3.7.3.4 | Construcción de SUMIDERO de aguas lluvias TIPO B (1.10m x 0.80m medidas externas y prof=0.90m e=0.20m), en concreto de 17.5 Mpa. Incluye suministro, transporte y colocación del concreto, reja metálica, formaleta, vibrado y todo lo necesario para su correc | 10d | 2024-08-11 | 2024-08-20 | 70SS, 71SS | 120d |  | 3,413,640 | 2.6.2.4 | un |
| 82 | 3.8 | **RED DE ABASTOS (edificio)** | 10d | 2024-08-11 | 2024-08-20 |  | 120d |  | 50,355,742.17 |  |  |
| 83 | 3.8.1 | RETIRO DE CIELO FALSO, en cualquier material, madera, drywall. Incluye lámina, perfiles, estructura de madera, cargue, transporte y botada de escombros en botaderos oficiales y la recuperación de los materiales aprovechables y/o su transporte hasta la bod | 10d | 2024-08-11 | 2024-08-20 | 1SS+20d | 120d | 0d | 12,538,987 | 4.2.2.3 | m2 |
| 84 | 3.8.2 | RETIRO DE TUBERÍA DE ACUEDUCTO. Incluye retiro de vávulas existentes, accesorios y tuberias de cualquier material. Incluye el cargue y transporte de los materiales aprovechables hasta la bodega o donde lo indique la interventoría, el cargue transporte y b | 10d | 2024-08-11 | 2024-08-20 | 83SS | 120d | 0d | 13,989,025 | 4.2.2.2 |  |
| 85 | 3.8.3 | **TUBERIA** | 10d | 2024-08-11 | 2024-08-20 |  | 120d |  | 14,834,998.17 |  |  |
| 86 | 3.8.3.1 | Suministro, transporte e instalación de TUBERÍA PVC-PRESIÓN, con un DIÁMETRO DE 2" RDE 21, 200 PSI. Incluye todos los accesorios en PVC de diámetro 2" incluyendo todos los accesorios reducidos que se requieran para su correcta instalación y funcionamiento | 10d | 2024-08-11 | 2024-08-20 | 84SS | 120d | 0d | 4,593,885 | 3.6.1.2 |  |
| 87 | 3.8.3.2 | Suministro, transporte e instalación de TUBERÍA PVC-PRESIÓN, con un DIÁMETRO DE 3" RDE 21, 200 PSI. Incluye todos los accesorios en PVC de diámetro 3" incluyendo todos los accesorios reducidos que se requieran para su instalación. Estos deberán estar corr | 10d | 2024-08-11 | 2024-08-20 | 84SS | 120d | 0d | 9,943,032.17 | 3.6.1.3 |  |
| 88 | 3.8.3.3 | Suministro, transporte e Instalación de tubería PVC-P, RDE 21, 200 PSI, diámetro 1 1/2", incluye todos los accesorios en PVC de diámetro 1 1/2" incluyendo todos los accesorios reducidos que se requieran para su correcta instalación. Estos deberán estar co | 10d | 2024-08-11 | 2024-08-20 | 87SS | 120d |  | 298,081 | 4.6.1.1 |  |
| 89 | 3.8.4 | **ACCESORIOS COMPLEMENTARIOS** | 10d | 2024-08-11 | 2024-08-20 |  | 120d |  | 8,992,732 |  |  |
| 90 | 3.8.4.1 | Suministro, transporte e instalación de válvula compuerta marca RW 1 1/2" o equivalente. Se entregará debidamente instalada sin presencia de fugas ni fisuras, sometida al sistema ya presurizado. Incluye todos los elementos requeridos para su correcta inst | 2d | 2024-08-19 | 2024-08-20 | 84FF | 120d |  | 100,785 | 4.6.2.3 | un |
| 91 | 3.8.4.2 | Tee en anillos principales Tee Ø3" x Ø2 1/2", Ø3" x Ø2", Ø3" x Ø1 1/2", Ø3" x Ø1",Ø3" x Ø3/4",Ø3" x Ø1/2" | 2d | 2024-08-19 | 2024-08-20 | 87FS-2d | 120d |  | 1,531,184 | 3.6.3.1 | un |
| 92 | 3.8.4.3 | Tee en anillos principales Tee Ø2" x Ø2",Ø2" x Ø1 1/2", Ø2" x Ø1",Ø2" x Ø3/4",Ø2" x Ø 1/2" | 2d | 2024-08-19 | 2024-08-20 | 86FS-2d | 120d |  | 1,544,773 | 3.6.3.2 | un |
| 93 | 3.8.4.4 | Suministro e instalación de abrazaderas diametro 2" | 10d | 2024-08-11 | 2024-08-20 | 86SS | 120d |  | 953,408 | 3.6.5.1 | un |
| 94 | 3.8.4.5 | Suministro e instalación de abrazaderas diametro 3" | 10d | 2024-08-11 | 2024-08-20 | 87SS | 120d |  | 1,132,712 | 3.6.5.2 | un |
| 95 | 3.8.4.6 | Suministro e instalación soporte vertical riel mecano + fijador 4"-3"-2" pulgadas tuberia vertical | 10d | 2024-08-11 | 2024-08-20 | 86SS, 87SS | 120d |  | 3,729,870 | 3.6.5.7 | un |

| ID | WBS | Task | Duration | Start | Finish | Predecessors | Total slack | Free slack | Cost | Text1 | Unidad |
| --- | --- | --- | --- | --- | --- | --- | --- | --- | --- | --- | --- |
| 96 | 3.9 | **OBRAS COMPLEMENTARIAS (edificio)** | 15d | 2024-08-06 | 2024-08-20 |  | 120d |  | 52,782,699 |  |  |
| 97 | 3.9.1 | Registro en cielo falso para válvulas, dimensiones 0.40m x 0.40m. Se deja etiqueta de localización de válvula. | 10d | 2024-08-11 | 2024-08-20 | 99SS, 100SS | 120d |  | 1,418,640 | 4.8.9 | un |
| 98 | 3.9.2 | Construcción de MUROS PARA BUITRONES EN DRYWALL 1/2" una cara. Incluye estructura en perfil galvanizado de 6 cms, tornillos, bisel esquinero en PVC, acabado en pintura y todos los demás elementos necesarios para su correcta construcción y funcionamiento. | 15d | 2024-08-06 | 2024-08-20 | 46SS, 47SS, 49SS, 52SS, 53SS | 120d |  | 3,566,882 | 4.8.10 | un |
| 99 | 3.9.3 | Suministro e instalación de cielo raso nuevo con lámina mineral color blanco de 1,24x0.62 m. y varillas de aluminio natural de 1". | 10d | 2024-08-11 | 2024-08-20 | 86SS, 87SS | 120d | 0d | 6,527,623 | 4.8.11 | m2 |
| 100 | 3.9.4 | Recuperación e reinstalación de cielo raso existente con lámina mineral color blanco de 1,24x0.62 m. y varillas de aluminio natural de 1". | 10d | 2024-08-11 | 2024-08-20 | 86SS, 87SS | 120d | 0d | 13,841,794 | 4.8.12 | m2 |
| 101 | 3.9.5 | Suministro transporte e instalación de sellos e impermeabilización de empates entre montantes y cubierta, aprobado por interventoria, no incluye manto o revestimientos adicionales , para este caso deberan ser conteplado en cada item adicional. | 10d | 2024-08-11 | 2024-08-20 | 100SS | 120d |  | 1,276,694 | 4.8.13 | un |
| 102 | 3.9.6 | Construcción de MAMPOSTERÍA EN LADRILLO PARA REVOCAR O ENCHAPAR una cara o dos caras, DE 15 x 20 x 40 cm. ESPESOR DE 15 cm. Incluye el suministro y transporte del ladrillo, el mortero de pega 1:4 espesor max=0.01 m y todos los demás elementos necesarios p | 8d | 2024-08-13 | 2024-08-20 | 1SS+22d | 120d | 0d | 10,082,107 | 4.8.1 | m2 |
| 103 | 3.9.7 | Colocación de REVOQUE con mortero 1:4 IMPERMEABILIZADO con Sika 1 o equivalente, EN MUROS. Incluye suministro y transporte de los materiales, ranuras, filetes, y todos los demás elementos necesarios para su correcta construcción. | 8d | 2024-08-13 | 2024-08-20 | 102SS | 120d | 0d | 5,032,478 | 4.8.2 | m2 |
| 104 | 3.9.8 | Colocación de ENCHAPE CERÁMICO PARED BLANCO DE 30 x 60 cm. Incluye suministro y transporte de los materiales, mortero adhesivo para enchapes tipo pegacor o equivalente, lechada preparada (boquilla) tipo concolor de sumicol o equivalente del mismo color de | 8d | 2024-08-13 | 2024-08-20 | 102SS | 120d |  | 4,261,722 | 4.8.3 | m2 |
| 105 | 3.9.9 | RESANE Y REPINTE de PINTURA ACRÍLICA tipo Koraza o equivalente para exteriores (hidrorepelente) de primera calidad que cumpla con la Norma NTC 1335, 2 manos o las que sean necesarias para obtener una superficie pareja y homogénea, a satisfacción de la int | 8d | 2024-08-13 | 2024-08-20 | 103SS | 120d |  | 4,318,284 | 4.8.4 | m2 |
| 106 | 3.9.10 | Aplicación de PINTURA EPOXIPOLIAMIDA BASE SOLVENTE EN MUROS (dos componentes proporción 1:3, no tóxica) tipo epoxiconstrucción de pintuco o equivalente de primera calidad, esmalte de poliuretano, semimate, sobre estuco plástico, 2 a 3 manos o las necesari | 8d | 2024-08-13 | 2024-08-20 | 103SS | 120d |  | 2,456,475 | 4.8.5 | m2 |
| 107 | 4 | **FASE 2** | 62d | 2024-08-21 | 2024-10-21 |  | 58d |  | 382,420,841.74 |  |  |
| 108 | 4.1 | **PRELIMINARES** | 8d | 2024-08-21 | 2024-08-28 |  | 88d |  | 8,342,299 |  |  |
| 109 | 4.1.1 | LOCALIZACIÓN, TRAZADO Y REPLANTEO. Se utilizará personal experto con equipo de precisión. Se hará con la frecuencia que lo indique la interventoría. Incluye demarcación con pintura, línea de trazado, corte de piso, libretas y planos. | 8d | 2024-08-21 | 2024-08-28 | 1SS+30d | 88d | 0d | 5,104,224 | 1.1.1 | día |
| 110 | 4.1.2 | Instalación de CERRAMIENTO PROVISIONAL en tela verde polietileno de alta densidad y resistencia 65 gr/m2 con una altura de 2,10 m, estacones de madera común para fijación vertical de altura de 2,50 m puesto mínimo cada 2,0 m y para apuntalamiento mínimo c | 8d | 2024-08-21 | 2024-08-28 | 109SS | 112d |  | 3,238,075 | 4.1.1 |  |
| 111 | 4.2 | **DEMOLICIONES Y RETIROS** | 30d | 2024-08-23 | 2024-09-21 |  | 58d |  | 74,096,931 |  |  |
| 112 | 4.2.1 | **DEMOLICIONES** | 15d | 2024-08-30 | 2024-09-13 |  | 88d |  | 16,481,047 |  |  |
| 113 | 4.2.1.1 | DEMOLICIÓN ANDENES O PISOS, cargue, transporte y botada de escombros de ESPESOR MÁXIMO DE 0.25m en CONCRETO. Incluye retiro de cordones, retiro de enchape (baldosa, baldosín forros en arenón, madera, vinilo, granito esmerilado, concreto, pisos en gres, en | 15d | 2024-08-30 | 2024-09-13 | 109FS+1d | 88d | 0d | 465,498 | 2.2.1.1 | m2 |
| 114 | 4.2.1.2 | DEMOLICIÓN PAVIMENTO ASFÁLTICO (para brecha), cargue, transporte y botada de escombros, HASTA ESPESOR DE 4". Incluye corte con máquina de disco según trazado y compresor neumático con martillo, además recuperación de los materiales aprovechables o su tran | 15d | 2024-08-30 | 2024-09-13 | 109FS+1d | 88d | 0d | 1,492,988 | 2.2.1.2 | m2 |
| 115 | 4.2.1.3 | DEMOLICIÓN PISO EN CONCRETO de cualquier resistencia con espesor hasta de 12 cm, manual o mecánicamente. Incluye cargue, transporte y botada de escombros, retiro de refuerzo e instalaciones embebidas, compresor neumático con martillo, además recuperación | 15d | 2024-08-30 | 2024-09-13 | 113SS | 88d | 0d | 6,555,116 | 2.2.1.1 | m2 |
| 116 | 4.2.1.4 | DEMOLICIÓN ESTRUCTURAS DE CONCRETO cargue, transporte y botada de escombros, manual o mecánicamente, de cualquier resistencia, reforzado o ciclópeo, y en cualquier clase de estructura. Incluye retiro de refuerzo y cualquier tipo de acabado (revoques y enc | 15d | 2024-08-30 | 2024-09-13 | 113SS | 96d |  | 5,021,374 | 1.2.1.2 | m3 |
| 117 | 4.2.1.5 | DEMOLICIÓN CAJAS DE CONCRETO cargue, transporte y botada de escombros, manual o mecánicamente, de cualquier resistencia, reforzado o ciclópeo, y en cualquier clase de estructura. Incluye retiro de refuerzo y cualquier tipo de acabado (revoques y enchapes) | 10d | 2024-08-30 | 2024-09-08 | 113SS | 101d |  | 351,600 | 1.2.1.5 | un |
| 118 | 4.2.1.6 | DEMOLICIÓN MAMPOSTERÍA CANCHAS para instalaciones eléctricas y/o hidrosanitarias DESARROLLO 0.10m. cargue, transporte y botada de escombros. Incluye botada del material proveniente de estas canchas en botaderos oficiales o donde indique la interventoría. | 10d | 2024-08-30 | 2024-09-08 | 113SS | 101d |  | 2,594,471 | 4.2.1.2 |  |
| 119 | 4.2.2 | **RETIRO** | 30d | 2024-08-23 | 2024-09-21 |  | 58d |  | 57,615,884 |  |  |
| 120 | 4.2.2.1 | RETIRO DE TUBERÍA DE ALCANTARILLADO enterrada y/o confinada. Incluye el cargue y transporte de los materiales aprovechables hasta la bodega o donde lo indique la interventoría, el cargue transporte y botada de los escombros generados en botaderos oficiale | 10d | 2024-08-30 | 2024-09-08 | 128SS, 129SS, 130SS | 99d | 0d | 30,538,900 | 1.2.2.1 |  |
| 121 | 4.2.2.2 | ANULACIÓN CAJAS DE CONCRETO incluye lleno en arenilla compactado al 95% y tapa en concreto de 21 Mpa | 2d | 2024-09-09 | 2024-09-10 | 120 | 99d |  | 203,788 | 1.2.2.2 | un |
| 122 | 4.2.2.3 | ANULACIÓN CÁMARA DE INSPECCIÓN EXISTENTE incluye tapa en concreto reforzado | 2d | 2024-09-09 | 2024-09-10 | 120 | 99d |  | 243,672 | 1.2.2.3 | un |
| 123 | 4.2.2.4 | RETIRO Y DEMOLICIÓN CAMARA DE INSPECCIÓN cargue, transporte y botada de escombros, manual o mecánicamente, de cualquier resistencia, reforzado o ciclópeo, y en cualquier clase de estructura. Incluye retiro de refuerzo y cualquier tipo de acabado (revoques | 2d | 2024-09-09 | 2024-09-10 | 120 | 99d |  | 101,512 | 2.2.2.1 | un |
| 124 | 4.2.2.5 | RETIRO DE CIELO FALSO, en cualquier material, madera, drywall. Incluye lámina, perfiles, estructura de madera, cargue, transporte y botada de escombros en botaderos oficiales y la recuperación de los materiales aprovechables y/o su transporte hasta la bod | 30d | 2024-08-23 | 2024-09-21 | 1SS+32d | 58d | 0d | 12,538,987 | 4.2.2.3 | m2 |
| 125 | 4.2.2.6 | RETIRO DE TUBERÍA DE ACUEDUCTO. Incluye retiro de vávulas existentes, accesorios y tuberias de cualquier material. Incluye el cargue y transporte de los materiales aprovechables hasta la bodega o donde lo indique la interventoría, el cargue transporte y b | 30d | 2024-08-23 | 2024-09-21 | 124SS | 88d |  | 13,989,025 | 4.2.2.2 |  |

| ID | WBS | Task | Duration | Start | Finish | Predecessors | Total slack | Free slack | Cost | Text1 | Unidad |
| --- | --- | --- | --- | --- | --- | --- | --- | --- | --- | --- | --- |
| 126 | 4.3 | **MOVIMIENTO DE TIERRAS** | 23d | 2024-08-30 | 2024-09-21 |  | 88d |  | 83,268,637 |  |  |
| 127 | 4.3.1 | **EXCAVACIÓN** | 23d | 2024-08-30 | 2024-09-21 |  | 88d |  | 34,475,965 |  |  |
| 128 | 4.3.1.1 | EXCAVACIÓN MANUAL de material heterogéneo DE 0-2 m., bajo cualquier grado de humedad. Incluye: roca descompuesta, bolas de roca de volumen inferior a 0.35 m³., el cargue, transporte interno y externo, botada de material proveniente de las excavaciones en | 23d | 2024-08-30 | 2024-09-21 | 113SS, 114SS, 115SS | 88d | 0d | 3,406,015 | 2.3.1.1 | m3 |
| 129 | 4.3.1.2 | EXCAVACIÓN MECÁNICA de material heterogéneo DE 2-4 m, bajo cualquier grado de humedad. Incluye: roca descompuesta, bolas de roca de volumen inferior a 0.35 m³., el cargue, transporte interno y externo y botada de material proveniente de las excavaciones e | 23d | 2024-08-30 | 2024-09-21 | 128SS | 88d | 0d | 15,220,745 | 2.3.1.2 | m3 |
| 130 | 4.3.1.3 | EXCAVACIÓN EN ROCA con CUÑA HIDRÁULICA. Incluye perforaciones con taladro neumático rotopercutor de 2" de diámetro, desembombe, transporte interno y acopio donde lo indique la interventoría y todos los demás elementos necesarios para su correcta ejecución | 23d | 2024-08-30 | 2024-09-21 | 128SS, 129SS | 88d | 0d | 2,772,031 | 2.3.1.3 | m3 |
| 131 | 4.3.1.4 | Construcción de ENTIBADO TEMPORAL en tablón de madera (6 usos), bajo cualquier altura y grado de humedad. Incluye suministro, transporte y colocación de elementos en madera, el cargue, transporte interno y externo y botada de material sobrantes en los sit | 23d | 2024-08-30 | 2024-09-21 | 128SS, 129SS, 130SS | 88d |  | 13,077,174 | 2.3.1.4 | m2 |
| 132 | 4.3.2 | **LLENOS** | 23d | 2024-08-30 | 2024-09-21 |  | 88d |  | 48,792,672 |  |  |
| 133 | 4.3.2.1 | LLENOS EN ARENILLA, compactados mecánicamente hasta obtener una densidad del 98% de la máxima obtenida en el ensayo del Próctor modificado. Incluye el suministro, transporte, colocación de la arenilla, la compactación de la misma y transporte interno. Y s | 23d | 2024-08-30 | 2024-09-21 | 147SS, 149SS, 150SS | 88d | 0d | 3,041,387 | 2.3.2.1 | m3 |
| 134 | 4.3.2.2 | LLENOS EN MATERIAL PROVENIENTES DE LA EXCAVACIÓN, compactados mecánicamente hasta obtener una densidad del 95% de la máxima obtenida en el ensayo del próctor modificado. Incluye transporte interno. Su medida será en sitio ya compactado. | 23d | 2024-08-30 | 2024-09-21 | 133SS | 88d | 0d | 10,382,269 | 2.3.2.2 | m3 |
| 135 | 4.3.2.3 | Suministro, transporte y colocación de base granular de máximo Ø 1½", reacomodado con medios MANUALES y compactado al 100% mínimo del ensayo del proctor modificado, según normas para la construcción de pavimentos del INVIAS, y todo lo necesario para su co | 23d | 2024-08-30 | 2024-09-21 | 136SS | 88d |  | 12,887,013 | 2.3.2.3 | m3 |
| 136 | 4.3.2.4 | Suministro, transporte y colocación de subbase granular de máximo Ø 2½", reacomodado con medios mecánicos y compactado al 100% mínimo del ensayo del proctor modificado según normas para la construcción de pavimentos del INVIAS. Incluye todo lo necesario p | 23d | 2024-08-30 | 2024-09-21 | 134SS | 88d | 0d | 14,770,660 | 2.3.2.4 | m3 |
| 137 | 4.3.2.5 | Suministro, transporte y colocación de TRITURADO de 3/4 " (19mm) y 1" (25mm) para construcción de CIMENTACIÓN TIPO C1. Incluye transporte interno y todo lo necesario para su correcta instalación. | 23d | 2024-08-30 | 2024-09-21 | 128SS, 129SS, 130SS | 88d | 0d | 7,711,343 | 2.3.2.5 | m3 |
| 138 | 4.4 | **CARGUE Y TRANSPORTE MANUAL** | 23d | 2024-08-30 | 2024-09-21 |  | 88d |  | 6,361,785 |  |  |
| 139 | 4.4.1 | CARGUE MECANICO, TRANSPORTE Y BOTADA DE ESCOMBROS, incluye, el cargue con máquina, repaleo, transporte interno y externo y botada de material tipo escombro en los sitios donde lo indique la interventoría y su medida será en el sitio. | 23d | 2024-08-30 | 2024-09-21 | 128SS, 129SS, 130SS | 88d |  | 6,361,785 | 2.3.3.1 | m3 |
| 140 | 4.5 | **ACARREOS** | 23d | 2024-08-30 | 2024-09-21 |  | 88d |  | 14,097,237 |  |  |
| 141 | 4.5.1 | Acarreo interno de materiales en condiciones de fácil acceso, 0 - 100 metros | 23d | 2024-08-30 | 2024-09-21 | 128SS, 129SS, 130SS | 88d |  | 3,446,919 | 3.5.1 | m3 |
| 142 | 4.5.2 | Acarreo interno de materiales para lugares de dificil acceso, pendiente, escalas y senderos en piedra o en tierra. Entre 0 a 100 m. (Incluye cargue, suministro y llenado de canecas de 5 galónes) | 23d | 2024-08-30 | 2024-09-21 | 128SS, 129SS, 130SS | 88d |  | 10,650,318 | 3.5.2 | m3 |
| 143 | 4.6 | **REDES RESIDUALES** | 23d | 2024-08-30 | 2024-09-21 |  | 88d |  | 89,376,525.87 |  |  |
| 144 | 4.6.1 | **Red residual interna (sotano)** | 23d | 2024-08-30 | 2024-09-21 |  | 88d |  | 66,647,935 |  |  |
| 145 | 4.6.1.1 | Suministro, transporte e instalación de TUBERÍA PVC-SANITARIA, COLGADA O EN BAJANTE con un DIÁMETRO DE 3", de aguas residuales. Incluye suministro y transporte de los materiales, bocas, accesorios, pegante, limpiador, wash primer, acabado en esmalte mate, | 21d | 2024-09-01 | 2024-09-21 | 147SS+2d | 88d | 0d | 466,297 | 4.6.3.1 |  |
| 146 | 4.6.1.2 | Suministro, transporte e instalación de TUBERÍA PVC-SANITARIA, COLGADA O EN BAJANTES con un DIÁMETRO DE 4", agua RESIDUAL. Incluye suministro y transporte de los materiales, bocas, accesorios, pegante, limpiador, wash primer, acabado en esmalte mate, colo | 21d | 2024-09-01 | 2024-09-21 | 145SS | 88d | 0d | 20,804,579 | 1.6.1.1 |  |
| 147 | 4.6.1.3 | Suministro, transporte e instalación de TUBERÍA PVC-SANITARIA, con un DIÁMETRO DE 4", para aguas residuales o lluvia ENTERRADA y/o EMPOTRADA por losas. Incluye suministro y transporte de los materiales, accesorios, pegante, limpiador y todos los elementos | 23d | 2024-08-30 | 2024-09-21 | 137SS | 88d | 0d | 7,993,109 | 1.6.1.2 |  |
| 148 | 4.6.1.4 | Suministro, transporte e instalación de TUBERÍA PVC-SANITARIA, COLGADA O EN BAJANTES con un DIÁMETRO DE 6", agua RESIDUAL O LLÚVIA. Incluye suministro y transporte de los materiales, bocas, accesorios, pegante, limpiador, wash primer, acabado en esmalte m | 21d | 2024-09-01 | 2024-09-21 | 146SS | 88d | 0d | 11,780,736 | 1.6.1.3 |  |
| 149 | 4.6.1.5 | Suministro, transporte e instalación de TUBERÍA PVC-SANITARIA, con un DIÁMETRO DE 6", para aguas residuales o lluvia ENTERRADA y/o EMPOTRADA por losas. Incluye suministro y transporte de los materiales, accesorios, pegante, limpiador y todos los elementos | 23d | 2024-08-30 | 2024-09-21 | 137SS | 88d | 0d | 3,519,230 | 1.6.1.4 |  |
| 150 | 4.6.1.6 | Suministro, transporte e instalación de TUBERÍA PVC-NOVAFORT, con un DIÁMETRO DE 200 mm. Incluye suministro y transporte de los materiales, bocas, accesorios, acondicionador de superficie y adhesivo Novafort y todos los elementos necesarios para su correc | 23d | 2024-08-30 | 2024-09-21 | 137SS | 88d | 0d | 11,640,851 | 1.6.1.5 |  |
| 151 | 4.6.1.7 | Suministro, transporte e instalación de TUBERÍA PVC-VENTILACIÓN, con un DIÁMETRO DE 3", para bajantes de aguas lluvias o reventilación. Incluye suministro y transporte de los materiales, bocas, accesorios, pegante, limpiador, wash primer, acabado en esmal | 21d | 2024-09-01 | 2024-09-21 | 148SS | 88d | 0d | 10,232,918 | 4.6.3.4 |  |
| 152 | 4.6.1.8 | Suministro, transporte e instalación de TUBERÍA PVC-VENTILACIÓN, con un DIÁMETRO DE 4", para bajantes de aguas lluvias o reventilación. Incluye suministro y transporte de los materiales, bocas, accesorios, pegante, limpiador, wash primer, acabado en esmal | 21d | 2024-09-01 | 2024-09-21 | 151SS | 88d | 0d | 210,215 | 4.6.3.5 |  |

| ID | WBS | Task | Duration | Start | Finish | Predecessors | Total slack | Free slack | Cost | Text1 | Unidad |
| --- | --- | --- | --- | --- | --- | --- | --- | --- | --- | --- | --- |
| 153 | 4.6.2 | **OBRAS COMPLEMENTARIAS RESIDUALES** | 21d | 2024-09-01 | 2024-09-21 |  | 88d |  | 22,728,590.87 |  |  |
| 154 | 4.6.2.1 | Construcción de cajas de registro de 60 x 60 x altura hasta 120 cm. en concreto de 21Mpa. con impermeabilizante integral tipo Sika o equivalente, con concrefibra el piso y tapa en concreto, la tapa con su respectivo herraje. Incluye suministro, transporte | 9d | 2024-09-13 | 2024-09-21 | 147FF, 149FF, 150FF | 88d |  | 6,954,020 | 1.6.2.1 | un |
| 155 | 4.6.2.2 | Suministro e instalación de abrazaderas diametro 3" | 21d | 2024-09-01 | 2024-09-21 | 145SS | 88d | 0d | 1,132,712 | 1.6.2.3 | un |
| 156 | 4.6.2.3 | Suministro e instalación de abrazaderas diametro 4" | 21d | 2024-09-01 | 2024-09-21 | 146SS | 88d | 0d | 2,560,760 | 1.6.2.4 | un |
| 157 | 4.6.2.4 | Suministro e instalación de abrazaderas diametro 6" | 21d | 2024-09-01 | 2024-09-21 | 148SS | 88d |  | 538,217 | 1.6.2.5 | un |
| 158 | 4.6.2.5 | Suministro e instalación soporte vertical riel mecano + fijador 4"-3"-2" pulgadas tuberia vertical | 21d | 2024-09-01 | 2024-09-21 | 155SS, 156SS | 88d |  | 5,594,806 | 1.6.2.10 | un |
| 159 | 4.6.2.6 | Suministro transporte y Pintura esmalte para TUBERIAS COLGANTES y BAJANTES de diferentes diámetros hasta 8", color a definir por la Interventoria | 21d | 2024-09-01 | 2024-09-21 | 145SS, 146SS, 148SS, 151SS, 152SS | 88d |  | 2,516,293.87 | 1.6.2.11 |  |
| 160 | 4.6.2.7 | Suministro e instalación de Empalme a caja, de bajantes de aguas residuales B.A.R. en sótano, incluye accesorios de tuberias, resane en la pared de la caja, transporte de materiales | 21d | 2024-09-01 | 2024-09-21 | 145SS, 146SS | 88d |  | 316,659 | 4.7.10 | un |
| 161 | 4.6.2.8 | Suministro, colocación e instalación de Empalme de bajantes B.A.R. a Tuberia P.V.C. Sanitaria Ø6" provisional, colgada en sótano incluye accesorios (codos, unión, buje), las abrazaderas se pagan en su respectivo item y todo lo demás para su correcta ejecu | 21d | 2024-09-01 | 2024-09-21 | 148SS | 88d |  | 2,495,952 | 4.7.11 | un |
| 162 | 4.6.2.9 | Remate de ventilación en diámetro 3" en cubiertas, incluye todos los accesorios, codos, para su correcta instalación y funcionamiento. El sello a la cubierta se pagará en su respectivo item | 21d | 2024-09-01 | 2024-09-21 | 151SS | 88d |  | 581,888 | 4.8.7 | un |
| 163 | 4.6.2.10 | Remate de ventilación en diámetro 4" en cubiertas, incluye todos los accesorios, codos,para su correcta instalación y funcionamiento. El sello a la cubierta se pagará en su respectivo item | 21d | 2024-09-01 | 2024-09-21 | 152SS | 88d |  | 37,283 | 4.8.8 | un |
| 164 | 4.7 | **AGUAS LLUVIAS** | 21d | 2024-09-01 | 2024-09-21 |  | 88d |  | 21,717,346.87 |  |  |
| 165 | 4.7.1 | **Red ALL interna (sotano)** | 21d | 2024-09-01 | 2024-09-21 |  | 88d |  | 21,717,346.87 |  |  |
| 166 | 4.7.1.1 | Suministro, transporte e instalación de TUBERÍA PVC-SANITARIA, COLGADA O EN BAJANTES con un DIÁMETRO DE 6", agua RESIDUAL O LLÚVIA. Incluye suministro y transporte de los materiales, bocas, accesorios, pegante, limpiador, wash primer, acabado en esmalte m | 21d | 2024-09-01 | 2024-09-21 | 148SS | 88d | 0d | 11,780,736 | 1.7.1 |  |
| 167 | 4.7.1.2 | Construcción de cajas de registro de 60 x 60 x altura hasta 120 cm. en concreto de 21Mpa. con impermeabilizante integral tipo Sika o equivalente, con concrefibra el piso y tapa en concreto, la tapa con su respectivo herraje. Incluye suministro, transporte | 21d | 2024-09-01 | 2024-09-21 | 166SS, 168SS | 88d |  | 6,954,020 | 1.7.2 | un |
| 168 | 4.7.1.3 | Suministro, transporte e instalación de TUBERÍA PVC-SANITARIA, COLGADA O EN BAJANTE con un DIÁMETRO DE 3", de aguas residuales. Incluye suministro y transporte de los materiales, bocas, accesorios, pegante, limpiador, wash primer, acabado en esmalte mate, | 21d | 2024-09-01 | 2024-09-21 | 166SS | 88d | 0d | 466,297 | 1.7.3 |  |
| 169 | 4.7.1.4 | Suministro transporte y Pintura esmalte para TUBERIAS COLGANTES y BAJANTES de diferentes diámetros hasta 8", color a definir por la Interventoria | 21d | 2024-09-01 | 2024-09-21 | 166SS, 168SS | 88d |  | 2,516,293.87 | 1.7.4 |  |
| 170 | 4.8 | **RED DE ABASTOS (edificio)** | 60d | 2024-08-23 | 2024-10-21 |  | 58d |  | 32,377,381 |  |  |
| 171 | 4.8.1 | **TUBERIA** | 30d | 2024-08-23 | 2024-09-21 |  | 58d |  | 14,803,797 |  |  |
| 172 | 4.8.1.1 | Suministro, transporte e instalación de TUBERÍA PVC-PRESIÓN, con un DIÁMETRO DE 2" RDE 21, 200 PSI. Incluye todos los accesorios en PVC de diámetro 2" incluyendo todos los accesorios reducidos que se requieran para su correcta instalación y funcionamiento | 30d | 2024-08-23 | 2024-09-21 | 124SS | 58d | 0d | 4,593,885 | 3.6.1.2 |  |
| 173 | 4.8.1.2 | Suministro, transporte e instalación de TUBERÍA PVC-PRESIÓN, con un DIÁMETRO DE 3" RDE 21, 200 PSI. Incluye todos los accesorios en PVC de diámetro 3" incluyendo todos los accesorios reducidos que se requieran para su instalación. Estos deberán estar corr | 30d | 2024-08-23 | 2024-09-21 | 172SS | 58d | 0d | 9,911,831 | 3.6.1.3 |  |
| 174 | 4.8.1.3 | Suministro, transporte e Instalación de tubería PVC-P, RDE 21, 200 PSI, diámetro 1 1/2", incluye todos los accesorios en PVC de diámetro 1 1/2" incluyendo todos los accesorios reducidos que se requieran para su correcta instalación. Estos deberán estar co | 30d | 2024-08-23 | 2024-09-21 | 173SS | 88d | 0d | 298,081 | 4.6.1.1 |  |
| 175 | 4.8.2 | **ACCESORIOS COMPLEMENTARIOS** | 60d | 2024-08-23 | 2024-10-21 |  | 58d |  | 17,573,584 |  |  |
| 176 | 4.8.2.1 | Suministro, transporte e instalación de válvula compuerta marca RW 2" o equivalente. Se entregará debidamente instalada sin presencia de fugas ni fisuras, sometida al sistema ya presurizado. Incluye todos los elementos requeridos para su correcta instalac | 8d | 2024-09-14 | 2024-09-21 | 172SS+22d | 88d | 0d | 1,889,113 | 3.6.2.1 | un |
| 177 | 4.8.2.2 | Suministro, transporte e instalación de válvula compuerta marca RW 3" o equivalente. Se entregará debidamente instalada sin presencia de fugas ni fisuras, sometida al sistema ya presurizado. Incluye todos los elementos requeridos para su correcta instalac | 8d | 2024-09-14 | 2024-09-21 | 173SS+22d | 88d | 0d | 2,573,254 | 3.6.2.2 | un |
| 178 | 4.8.2.3 | Suministro, transporte e instalación de válvula compuerta marca RW 1 1/2" o equivalente. Se entregará debidamente instalada sin presencia de fugas ni fisuras, sometida al sistema ya presurizado. Incluye todos los elementos requeridos para su correcta inst | 8d | 2024-09-14 | 2024-09-21 | 174SS+22d | 88d | 0d | 3,859,881 | 4.6.2.3 | un |
| 179 | 4.8.2.4 | Suministro, transporte e instalación de válvula compuerta marca RW 1" o equivalente. Se entregará debidamente instalada sin presencia de fugas ni fisuras, sometida al sistema ya presurizado. Incluye todos los elementos requeridos para su correcta instalac | 8d | 2024-09-14 | 2024-09-21 | 178SS | 88d | 0d | 89,439 | 4.6.2.4 | un |
| 180 | 4.8.2.5 | Suministro, transporte e instalación de válvula compuerta marca RW 3/4" o equivalente. Se entregará debidamente instalada sin presencia de fugas ni fisuras, sometida al sistema ya presurizado. Incluye todos los elementos requeridos para su correcta instal | 8d | 2024-09-14 | 2024-09-21 | 179SS | 88d | 0d | 57,590 | 4.6.2.5 | un |
| 181 | 4.8.2.6 | Suministro, transporte e instalación de válvula compuerta marca RW 1/2" o equivalente. Se entregará debidamente instalada sin presencia de fugas ni fisuras, sometida al sistema ya presurizado. Incluye todos los elementos requeridos para su correcta instal | 8d | 2024-09-14 | 2024-09-21 | 180SS | 88d |  | 52,137 | 4.6.2.6 | un |
| 182 | 4.8.2.7 | Suministro, transporte e instalación de válvula de retención (Cheque) 2". Se entregará debidamente instalada en el sentido de flujo requerido en los diseños sin presencia de fugas ni fisuras, sometida al sistema ya presurizado. Incluye todos los elementos | 8d | 2024-09-14 | 2024-09-21 | 176SS | 88d |  | 164,969 | 3.6.2.4 | un |
| 183 | 4.8.2.8 | Suministro, transporte e instalación de válvula de retención (Cheque) 3". Se entregará debidamente instalada en el sentido de flujo requerido en los diseños sin presencia de fugas ni fisuras, sometida al sistema ya presurizado. Incluye todos los elementos | 8d | 2024-09-14 | 2024-09-21 | 177SS | 88d |  | 313,057 | 3.6.2.5 | un |
| 184 | 4.8.2.9 | Tee en anillos principales Tee Ø3" x Ø2 1/2", Ø3" x Ø2", Ø3" x Ø1 1/2", Ø3" x Ø1",Ø3" x Ø3/4",Ø3" x Ø1/2" | 30d | 2024-08-23 | 2024-09-21 | 173SS | 88d |  | 1,531,184 | 3.6.3.1 | un |
| 185 | 4.8.2.10 | Tee en anillos principales Tee Ø2" x Ø2",Ø2" x Ø1 1/2", Ø2" x Ø1",Ø2" x Ø3/4",Ø2" x Ø 1/2" | 30d | 2024-08-23 | 2024-09-21 | 172SS | 88d |  | 1,544,773 | 3.6.3.2 | un |
| 186 | 4.8.2.11 | Suministro e instalación de abrazaderas diametro 2" | 30d | 2024-08-23 | 2024-09-21 | 172SS | 88d |  | 635,605 | 3.6.5.1 | un |
| 187 | 4.8.2.12 | Suministro e instalación de abrazaderas diametro 3" | 30d | 2024-08-23 | 2024-09-21 | 173SS | 88d |  | 1,132,712 | 3.6.5.2 | un |
| 188 | 4.8.2.13 | Suministro e instalación soporte vertical riel mecano + fijador 4"-3"-2" pulgadas tuberia vertical | 30d | 2024-09-22 | 2024-10-21 | 173, 172 | 58d |  | 3,729,870 | 3.6.5.7 | un |

| ID | WBS | Task | Duration | Start | Finish | Predecessors | Total slack | Free slack | Cost | Text1 | Unidad |
| --- | --- | --- | --- | --- | --- | --- | --- | --- | --- | --- | --- |
| 189 | 4.9 | **OBRAS COMPLEMENTARIAS (edificio)** | 30d | 2024-08-23 | 2024-09-21 |  | 88d |  | 52,782,699 |  |  |
| 190 | 4.9.1 | Registro en cielo falso para válvulas, dimensiones 0.40m x 0.40m. Se deja etiqueta de localización de válvula. | 21d | 2024-09-01 | 2024-09-21 | 192SS, 193SS | 88d |  | 1,418,640 | 4.8.9 | un |
| 191 | 4.9.2 | Construcción de MUROS PARA BUITRONES EN DRYWALL 1/2" una cara. Incluye estructura en perfil galvanizado de 6 cms, tornillos, bisel esquinero en PVC, acabado en pintura y todos los demás elementos necesarios para su correcta construcción y funcionamiento. | 21d | 2024-09-01 | 2024-09-21 | 151SS, 152SS, 145SS, 146SS, 148SS | 88d |  | 3,566,882 | 4.8.10 | un |
| 192 | 4.9.3 | Suministro e instalación de cielo raso nuevo con lámina mineral color blanco de 1,24x0.62 m. y varillas de aluminio natural de 1". | 21d | 2024-09-01 | 2024-09-21 | 145SS, 146SS, 148SS | 88d | 0d | 6,527,623 | 4.8.11 | m2 |
| 193 | 4.9.4 | Recuperación e reinstalación de cielo raso existente con lámina mineral color blanco de 1,24x0.62 m. y varillas de aluminio natural de 1". | 21d | 2024-09-01 | 2024-09-21 | 145SS, 146SS, 148SS | 88d | 0d | 13,841,794 | 4.8.12 | m2 |
| 194 | 4.9.5 | Suministro transporte e instalación de sellos e impermeabilización de empates entre montantes y cubierta, aprobado por interventoria, no incluye manto o revestimientos adicionales , para este caso deberan ser conteplado en cada item adicional. | 21d | 2024-09-01 | 2024-09-21 | 193SS | 88d |  | 1,276,694 | 4.8.13 | un |
| 195 | 4.9.6 | Construcción de MAMPOSTERÍA EN LADRILLO PARA REVOCAR O ENCHAPAR una cara o dos caras, DE 15 x 20 x 40 cm. ESPESOR DE 15 cm. Incluye el suministro y transporte del ladrillo, el mortero de pega 1:4 espesor max=0.01 m y todos los demás elementos necesarios p | 30d | 2024-08-23 | 2024-09-21 | 1SS+32d | 88d | 0d | 10,082,107 | 4.8.1 | m2 |
| 196 | 4.9.7 | Colocación de REVOQUE con mortero 1:4 IMPERMEABILIZADO con Sika 1 o equivalente, EN MUROS. Incluye suministro y transporte de los materiales, ranuras, filetes, y todos los demás elementos necesarios para su correcta construcción. | 30d | 2024-08-23 | 2024-09-21 | 195SS | 88d | 0d | 5,032,478 | 4.8.2 | m2 |
| 197 | 4.9.8 | Colocación de ENCHAPE CERÁMICO PARED BLANCO DE 30 x 60 cm. Incluye suministro y transporte de los materiales, mortero adhesivo para enchapes tipo pegacor o equivalente, lechada preparada (boquilla) tipo concolor de sumicol o equivalente del mismo color de | 30d | 2024-08-23 | 2024-09-21 | 195SS | 88d |  | 4,261,722 | 4.8.3 | m2 |
| 198 | 4.9.9 | RESANE Y REPINTE de PINTURA ACRÍLICA tipo Koraza o equivalente para exteriores (hidrorepelente) de primera calidad que cumpla con la Norma NTC 1335, 2 manos o las que sean necesarias para obtener una superficie pareja y homogénea, a satisfacción de la int | 30d | 2024-08-23 | 2024-09-21 | 196SS | 88d |  | 4,318,284 | 4.8.4 | m2 |
| 199 | 4.9.10 | Aplicación de PINTURA EPOXIPOLIAMIDA BASE SOLVENTE EN MUROS (dos componentes proporción 1:3, no tóxica) tipo epoxiconstrucción de pintuco o equivalente de primera calidad, esmalte de poliuretano, semimate, sobre estuco plástico, 2 a 3 manos o las necesari | 30d | 2024-08-23 | 2024-09-21 | 196SS | 88d |  | 2,456,475 | 4.8.5 | m2 |
| 200 | 5 | **FASE 3** | 87d | 2024-09-23 | 2024-12-18 |  | 0d |  | 1,859,720,391.35 |  |  |
| 201 | 5.1 | **FASE 3-1** | 30d | 2024-09-23 | 2024-10-22 |  | 57d |  | 649,087,846.74 |  |  |
| 202 | 5.1.1 | **PRELIMINARES** | 8d | 2024-09-23 | 2024-09-30 |  | 57d |  | 3,238,075 |  |  |
| 203 | 5.1.1.1 | Instalación de CERRAMIENTO PROVISIONAL en tela verde polietileno de alta densidad y resistencia 65 gr/m2 con una altura de 2,10 m, estacones de madera común para fijación vertical de altura de 2,50 m puesto mínimo cada 2,0 m y para apuntalamiento mínimo c | 8d | 2024-09-23 | 2024-09-30 | 1SS+63d | 57d | 0d | 3,238,075 | 3.1.1 |  |
| 204 | 5.1.2 | **DEMOLICIONES Y RETIROS** | 10d | 2024-09-23 | 2024-10-02 |  | 57d |  | 1,958,486 |  |  |
| 205 | 5.1.2.1 | **DEMOLICIONES** | 10d | 2024-09-23 | 2024-10-02 |  | 57d |  | 1,958,486 |  |  |
| 206 | 5.1.2.1.1 | DEMOLICIÓN ANDENES O PISOS, cargue, transporte y botada de escombros de ESPESOR MÁXIMO DE 0.25m en CONCRETO. Incluye retiro de cordones, retiro de enchape (baldosa, baldosín forros en arenón, madera, vinilo, granito esmerilado, concreto, pisos en gres, en | 10d | 2024-09-23 | 2024-10-02 | 203SS | 57d | 0d | 465,498 | 3.2.1.1 | m2 |
| 207 | 5.1.2.1.2 | DEMOLICIÓN PAVIMENTO ASFÁLTICO (para brecha), cargue, transporte y botada de escombros, HASTA ESPESOR DE 4". Incluye corte con máquina de disco según trazado y compresor neumático con martillo, además recuperación de los materiales aprovechables o su tran | 10d | 2024-09-23 | 2024-10-02 | 206SS | 57d | 0d | 1,492,988 | 3.2.1.2 | m2 |
| 208 | 5.1.3 | **MOVIMIENTO DE TIERRAS** | 28d | 2024-09-25 | 2024-10-22 |  | 57d |  | 97,073,243 |  |  |
| 209 | 5.1.3.1 | **EXCAVACIÓN** | 28d | 2024-09-25 | 2024-10-22 |  | 57d |  | 48,280,571 |  |  |
| 210 | 5.1.3.1.1 | EXCAVACIÓN MANUAL de material heterogéneo DE 0-2 m., bajo cualquier grado de humedad. Incluye: roca descompuesta, bolas de roca de volumen inferior a 0.35 m³., el cargue, transporte interno y externo, botada de material proveniente de las excavaciones en | 28d | 2024-09-25 | 2024-10-22 | 206SS+2d, 207SS+2d | 57d | 0d | 3,406,015 | 3.3.1.1 | m3 |
| 211 | 5.1.3.1.2 | EXCAVACIÓN MECÁNICA de material heterogéneo DE 0-2 m, bajo cualquier grado de humedad. Incluye: roca descompuesta, bolas de roca de volumen inferior a 0.35 m³., el cargue, transporte interno y externo y botada de material proveniente de las excavaciones e | 28d | 2024-09-25 | 2024-10-22 | 210SS | 57d | 0d | 11,415,999 | 3.3.1.2 | m3 |
| 212 | 5.1.3.1.3 | EXCAVACIÓN MECÁNICA de material heterogéneo DE 2-4 m, bajo cualquier grado de humedad. Incluye: roca descompuesta, bolas de roca de volumen inferior a 0.35 m³., el cargue, transporte interno y externo y botada de material proveniente de las excavaciones e | 28d | 2024-09-25 | 2024-10-22 | 210SS, 211SS | 57d | 0d | 15,220,745 | 3.3.1.3 | m3 |
| 213 | 5.1.3.1.4 | EXCAVACIÓN EN ROCA con CUÑA HIDRÁULICA. Incluye perforaciones con taladro neumático rotopercutor de 2" de diámetro, desembombe, transporte interno y acopio donde lo indique la interventoría y todos los demás elementos necesarios para su correcta ejecución | 28d | 2024-09-25 | 2024-10-22 | 210SS, 211SS, 212SS | 57d | 0d | 2,772,031 | 3.3.1.4 | m3 |
| 214 | 5.1.3.1.5 | Construcción de ENTIBADO TEMPORAL en tablón de madera (6 usos), bajo cualquier altura y grado de humedad. Incluye suministro, transporte y colocación de elementos en madera, el cargue, transporte interno y externo y botada de material sobrantes en los sit | 28d | 2024-09-25 | 2024-10-22 | 210SS, 211SS, 212SS, 213SS | 57d |  | 13,077,174 | 3.3.1.5 | m2 |
| 215 | 5.1.3.1.6 | Suministro, transporte e instalación de bomba sumergible para aguas lluvias 3/4HP descarga de 3", incluye cheque mipel de 3" universal, flotador eléctrico mércury o similar, arrancador termomagnético, alarma para mal funcionamiento de bomba, accesorios el | 28d | 2024-09-25 | 2024-10-22 | 210SS, 211SS, 212SS, 213SS | 57d |  | 2,388,607 | 3.3.1.6 | un |

| ID | WBS | Task | Duration | Start | Finish | Predecessors | Total slack | Free slack | Cost | Text1 | Unidad |
| --- | --- | --- | --- | --- | --- | --- | --- | --- | --- | --- | --- |
| 216 | 5.1.3.2 | **LLENOS** | 28d | 2024-09-25 | 2024-10-22 |  | 57d |  | 48,792,672 |  |  |
| 217 | 5.1.3.2.1 | LLENOS EN ARENILLA, compactados mecánicamente hasta obtener una densidad del 98% de la máxima obtenida en el ensayo del Próctor modificado. Incluye el suministro, transporte, colocación de la arenilla, la compactación de la misma y transporte interno. Y s | 28d | 2024-09-25 | 2024-10-22 | 240SS | 57d | 0d | 3,041,387 | 3.3.2.1 | m3 |
| 218 | 5.1.3.2.2 | LLENOS EN MATERIAL PROVENIENTES DE LA EXCAVACIÓN, compactados mecánicamente hasta obtener una densidad del 95% de la máxima obtenida en el ensayo del próctor modificado. Incluye transporte interno. Su medida será en sitio ya compactado. | 28d | 2024-09-25 | 2024-10-22 | 217SS | 57d | 0d | 10,382,269 | 3.3.2.2 | m3 |
| 219 | 5.1.3.2.3 | Suministro, transporte y colocación de base granular de máximo Ø 1½", reacomodado con medios MANUALES y compactado al 100% mínimo del ensayo del proctor modificado, según normas para la construcción de pavimentos del INVIAS, y todo lo necesario para su co | 28d | 2024-09-25 | 2024-10-22 | 220SS | 57d |  | 12,887,013 | 3.3.2.3 | m3 |
| 220 | 5.1.3.2.4 | Suministro, transporte y colocación de subbase granular de máximo Ø 2½", reacomodado con medios mecánicos y compactado al 100% mínimo del ensayo del proctor modificado según normas para la construcción de pavimentos del INVIAS. Incluye todo lo necesario p | 28d | 2024-09-25 | 2024-10-22 | 218SS | 57d | 0d | 14,770,660 | 3.3.2.4 | m3 |
| 221 | 5.1.3.2.5 | Suministro, transporte y colocación de TRITURADO de 3/4 " (19mm) y 1" (25mm) para construcción de CIMENTACIÓN TIPO C1. Incluye transporte interno y todo lo necesario para su correcta instalación. | 28d | 2024-09-25 | 2024-10-22 | 212SS | 57d | 0d | 7,711,343 | 3.3.2.5 | m3 |
| 222 | 5.1.4 | **CARGUE Y TRANSPORTE MANUAL** | 28d | 2024-09-25 | 2024-10-22 |  | 57d |  | 6,361,785 |  |  |
| 223 | 5.1.4.1 | CARGUE MECANICO, TRANSPORTE Y BOTADA DE ESCOMBROS, incluye, el cargue con máquina, repaleo, transporte interno y externo y botada de material tipo escombro en los sitios donde lo indique la interventoría y su medida será en el sitio. | 28d | 2024-09-25 | 2024-10-22 | 210SS, 211SS, 212SS, 213SS | 57d |  | 6,361,785 | 3.3.3.1 | m3 |
| 224 | 5.1.5 | **ACARREOS** | 28d | 2024-09-25 | 2024-10-22 |  | 57d |  | 14,097,237 |  |  |
| 225 | 5.1.5.1 | Acarreo interno de materiales en condiciones de fácil acceso, 0 - 100 metros | 28d | 2024-09-25 | 2024-10-22 | 210SS, 211SS, 212SS, 213SS | 57d |  | 3,446,919 | 3.3.4.1 | m3 |
| 226 | 5.1.5.2 | Acarreo interno de materiales para lugares de dificil acceso, pendiente, escalas y senderos en piedra o en tierra. Entre 0 a 100 m. (Incluye cargue, suministro y llenado de canecas de 5 galónes) | 28d | 2024-09-25 | 2024-10-22 | 210SS, 211SS, 212SS, 213SS | 57d |  | 10,650,318 | 3.3.4.2 | m3 |
| 227 | 5.1.6 | **CONCRETO (TANQUE)** | 20d | 2024-10-03 | 2024-10-22 |  | 57d |  | 207,919,764 |  |  |
| 228 | 5.1.6.1 | Colocación de concreto de 14 Mpa para SOLADO, con un espesor DE 0.05 m. Incluye el suministro y el transporte del concreto y todos los demás elementos necesarios para su correcta construcción, incluye acarreo interno. | 20d | 2024-10-03 | 2024-10-22 | 210SS+8d, 211SS+8d, 212SS+8d, 213SS+8d | 57d | 0d | 3,742,729 | 3.4.1 | m2 |
| 229 | 5.1.6.2 | Construcción de LOSA MACIZA en concreto premezclado de 21 MPa., con un ESPESOR DE 0.20 m. Incluye suministro, transporte, bombeo con Auto bomba y la colocación del concreto, formaleta Súper "T" de 19 mm. o su equivalente, aristas biseladas, vibrado, prote | 20d | 2024-10-03 | 2024-10-22 | 230SS | 57d | 0d | 91,711,728 | 3.4.2 | m2 |
| 230 | 5.1.6.3 | Construcción de LOSA DE FUNDACIÓN para tanque en concreto de 21 Mpa. con un espesor de 0.20m. Incluye vigas profundas de e=0,40m, suministro, transporte e instalación del concreto, mano de obra, vibrado, protección y curado, para estructuras de acuerdo co | 20d | 2024-10-03 | 2024-10-22 | 237SS, 34SS | 57d | 0d | 19,493,844 | 3.4.3 | m3 |
| 231 | 5.1.6.4 | Pases en losas de concreto con taladro para tubería de diámetro 2". Incluye Perforacion y sello con mortero para pasante de tuberia de 3/4" a 6" | 20d | 2024-10-03 | 2024-10-22 | 229SS, 230SS | 57d |  | 3,345,632 | 4.8.6 | un |
| 232 | 5.1.6.5 | Suministro, transporte y construcción de muros y losa superior cuarto de máquinas en concreto de 4,000 psi impermeabilizado e=15 cm. No incluye el refuerzo. | 20d | 2024-10-03 | 2024-10-22 | 230SS | 57d | 0d | 35,426,312 | 3.4.4 | m3 |
| 233 | 5.1.6.6 | Construcción de Recinte en concreto de 21 Mpa ciclopéo 50% piedra, espesor 20/30 cm. Incluye todo lo necesario para su correcta construcción | 20d | 2024-10-03 | 2024-10-22 | 232SS | 57d |  | 8,317,996 | 3.4.5 | m2 |
| 234 | 5.1.6.7 | Construcción de ANCLAJE EPÓXICO sobre estructura de concreto existente para varillas de acero de diámetro hasta 1/2", incluye el suministro, transporte e instalación del epóxico, perforación mecánica del concreto con broca de diámetro 5/8" mas del diámetr | 20d | 2024-10-03 | 2024-10-22 | 229SS, 230SS, 237SS | 57d |  | 877,883 | 3.4.6 | un |
| 235 | 5.1.6.8 | Construcción de CÁRCAMO en concreto de 21 Mpa., con un ANCHO DE 0.30 m libres, ALTURA MÁXIMA DE 0.60 m libre, PAREDES Y PISOS DE 0.10 m de espesor, tapa para cárcamo de 0.40 m * 0.50 m reforzada. Incluye suministro, transporte y colocación del concreto, a | 20d | 2024-10-03 | 2024-10-22 | 228SS | 57d |  | 45,003,640 | 2.4.4 |  |
| 236 | 5.1.7 | **ACERO DE REFUERZO (TANQUE)** | 20d | 2024-10-03 | 2024-10-22 |  | 57d |  | 17,314,575 |  |  |
| 237 | 5.1.7.1 | Suministro, transporte e instalación de ACERO DE REFUERZO FIGURADO FY= 420 Mpa-60000 PSI, corrugado. Incluye transporte con descarga, transporte interno, alambre de amarre, certificados y todos los elementos necesarios para su correcta instalación, según | 20d | 2024-10-03 | 2024-10-22 | 228SS | 57d | 0d | 17,314,575 | 3.5.1 | kg |
| 238 | 5.1.8 | **AGUAS LLUVIAS** | 28d | 2024-09-25 | 2024-10-22 |  | 57d |  | 3,519,230 |  |  |
| 239 | 5.1.8.1 | **Red ALL externa** | 28d | 2024-09-25 | 2024-10-22 |  | 57d |  | 3,519,230 |  |  |
| 240 | 5.1.8.1.1 | Suministro, transporte e instalación de TUBERÍA PVC-SANITARIA, con un DIÁMETRO DE 6", para aguas residuales o lluvia ENTERRADA y/o EMPOTRADA por losas. Incluye suministro y transporte de los materiales, accesorios, pegante, limpiador y todos los elementos | 28d | 2024-09-25 | 2024-10-22 | 221SS | 57d | 0d | 3,519,230 | 2.6.1.2 |  |

| ID | WBS | Task | Duration | Start | Finish | Predecessors | Total slack | Free slack | Cost | Text1 | Unidad |
| --- | --- | --- | --- | --- | --- | --- | --- | --- | --- | --- | --- |
| 241 | 5.1.9 | **RED DE ABASTOS (edificio a tanque)** | 28d | 2024-09-25 | 2024-10-22 |  | 57d |  | 14,746,988 |  |  |
| 242 | 5.1.9.1 | **TUBERIA** | 28d | 2024-09-25 | 2024-10-22 |  | 57d |  | 7,303,326 |  |  |
| 243 | 5.1.9.1.1 | Suministro, transporte e instalación de TUBERÍA PVC-PRESIÓN, con un DIÁMETRO DE 4" RDE 21, 200 PSI. Incluye todos los accesorios en PVC de diámetro 4" incluyendo todos los accesorios reducidos que se requieran para su instalación. Estos deberán estar corr | 28d | 2024-09-25 | 2024-10-22 | 245SS | 57d | 0d | 1,993,859 | 3.6.1.1 |  |
| 244 | 5.1.9.1.2 | Suministro, transporte e instalación de TUBERÍA PVC-PRESIÓN, con un DIÁMETRO DE 2" RDE 21, 200 PSI. Incluye todos los accesorios en PVC de diámetro 2" incluyendo todos los accesorios reducidos que se requieran para su correcta instalación y funcionamiento | 28d | 2024-09-25 | 2024-10-22 | 210SS, 211SS, 212SS, 213SS, 217SS | 57d | 0d | 1,466,104 | 3.6.1.2 |  |
| 245 | 5.1.9.1.3 | Suministro, transporte e instalación de TUBERÍA PVC-PRESIÓN, con un DIÁMETRO DE 3" RDE 21, 200 PSI. Incluye todos los accesorios en PVC de diámetro 3" incluyendo todos los accesorios reducidos que se requieran para su instalación. Estos deberán estar corr | 28d | 2024-09-25 | 2024-10-22 | 244SS | 57d | 0d | 3,843,363 | 3.6.1.3 |  |
| 246 | 5.1.9.2 | **ACCESORIOS COMPLEMENTARIOS** | 28d | 2024-09-25 | 2024-10-22 |  | 57d |  | 7,443,662 |  |  |
| 247 | 5.1.9.2.1 | Suministro, transporte e instalación de válvula compuerta marca RW 2" o equivalente. Se entregará debidamente instalada sin presencia de fugas ni fisuras, sometida al sistema ya presurizado. Incluye todos los elementos requeridos para su correcta instalac | 28d | 2024-09-25 | 2024-10-22 | 244SS | 57d | 0d | 1,000,119 | 3.6.2.1 | un |
| 248 | 5.1.9.2.2 | Suministro, transporte e instalación de válvula compuerta marca RW 3" o equivalente. Se entregará debidamente instalada sin presencia de fugas ni fisuras, sometida al sistema ya presurizado. Incluye todos los elementos requeridos para su correcta instalac | 28d | 2024-09-25 | 2024-10-22 | 245SS | 57d | 0d | 2,105,390 | 3.6.2.2 | un |
| 249 | 5.1.9.2.3 | Suministro, transporte e instalación de válvula compuerta marca RW 4" o equivalente. Se entregará debidamente instalada sin presencia de fugas ni fisuras, sometida al sistema ya presurizado. Incluye todos los elementos requeridos para su correcta instalac | 28d | 2024-09-25 | 2024-10-22 | 243SS | 57d |  | 3,860,127 | 3.6.2.3 | un |
| 250 | 5.1.9.2.4 | Suministro, transporte e instalación de válvula de retención (Cheque) 2". Se entregará debidamente instalada en el sentido de flujo requerido en los diseños sin presencia de fugas ni fisuras, sometida al sistema ya presurizado. Incluye todos los elementos | 28d | 2024-09-25 | 2024-10-22 | 247SS | 57d |  | 164,969 | 3.6.2.4 | un |
| 251 | 5.1.9.2.5 | Suministro, transporte e instalación de válvula de retención (Cheque) 3". Se entregará debidamente instalada en el sentido de flujo requerido en los diseños sin presencia de fugas ni fisuras, sometida al sistema ya presurizado. Incluye todos los elementos | 28d | 2024-09-25 | 2024-10-22 | 248SS | 57d |  | 313,057 | 3.6.2.5 | un |
| 252 | 5.1.10 | **TANQUE/BOMBA** | 15d | 2024-10-08 | 2024-10-22 |  | 57d |  | 282,858,463.74 |  |  |
| 253 | 5.1.10.1 | Suministro, transporte e instalación de tanque de almacenamiento horizontal en plástico o polietileno de alta resistencia volumen 45.000 litros. Incluye válvulas de drenaje, flotador y demás elementos para su correcta ejecución. | 15d | 2024-10-08 | 2024-10-22 | 229FF, 230FF | 57d | 0d | 224,664,688.82 | 3.6.4.1 | un |
| 254 | 5.1.10.2 | Sistema de bombeo, el cual consta de 2 BOMBAS DE 10HP, UNA DE RESPALDO. CARACTERÍSTICAS BOMBAS: Q=6.73 l/S ALTURA DINÁMICA=65m.c.a Marca IHM 950220CU-1 VOLUMEN: HIDROACUMULADOR=500litros LA500. BOMBAS CON VARIADOR DE VELOCIDAD. Incluye tablero de control | 15d | 2024-10-08 | 2024-10-22 | 253FF | 57d | 0d | 53,001,781.92 | 3.6.4.2 | un |
| 255 | 5.1.10.3 | Suministro, transporte e instalación de acometida eléctrica para cuarto de bombas. Incluye materiales, transporte e instalación de acometida secundaria 3x6+8+10 libre de halógenos y tubería IMC de 1 1/4" con sus accesorios necesarios ara su correcta nstal | 15d | 2024-10-08 | 2024-10-22 | 254FF | 57d | 0d | 4,075,600 | 3.7.4 |  |
| 256 | 5.1.10.4 | Suministro, transporte e instalación de tablero trifásico de 12 circuitos y protecciones de 3X63A (1) y 3x30A (2) | 15d | 2024-10-08 | 2024-10-22 | 255FF | 57d |  | 1,116,393 | 3.7.5 | un |
| 257 | 5.2 | **FASE 3-2** | 58d | 2024-10-22 | 2024-12-18 |  | 0d |  | 411,005,372 |  |  |
| 258 | 5.2.1 | **PRELIMINARES** | 8d | 2024-10-22 | 2024-10-29 |  | 0d |  | 12,250,137 |  |  |
| 259 | 5.2.1.1 | LOCALIZACIÓN, TRAZADO Y REPLANTEO. Se utilizará personal experto con equipo de precisión. Se hará con la frecuencia que lo indique la interventoría. Incluye demarcación con pintura, línea de trazado, corte de piso, libretas y planos. | 8d | 2024-10-22 | 2024-10-29 | 1SS+92d | 0d |  | 12,250,137 | 2.1.1 | día |
| 260 | 5.2.2 | **DEMOLICIONES Y RETIROS** | 30d | 2024-10-22 | 2024-11-20 |  | 0d |  | 22,417,281 |  |  |
| 261 | 5.2.2.1 | **DEMOLICIONES** | 30d | 2024-10-22 | 2024-11-20 |  | 0d |  | 22,366,525 |  |  |
| 262 | 5.2.2.1.1 | DEMOLICIÓN ANDENES O PISOS, cargue, transporte y botada de escombros de ESPESOR MÁXIMO DE 0.25m en CONCRETO. Incluye retiro de cordones, retiro de enchape (baldosa, baldosín forros en arenón, madera, vinilo, granito esmerilado, concreto, pisos en gres, en | 30d | 2024-10-22 | 2024-11-20 | 259SS | 0d |  | 1,276,602 | 2.2.1.1 | m2 |
| 263 | 5.2.2.1.2 | DEMOLICIÓN PAVIMENTO ASFÁLTICO (para brecha), cargue, transporte y botada de escombros, HASTA ESPESOR DE 4". Incluye corte con máquina de disco según trazado y compresor neumático con martillo, además recuperación de los materiales aprovechables o su tran | 30d | 2024-10-22 | 2024-11-20 | 262SS | 0d |  | 14,534,807 | 2.2.1.2 | m2 |
| 264 | 5.2.2.1.3 | DEMOLICIÓN PISO EN CONCRETO de cualquier resistencia con espesor hasta de 12 cm, manual o mecánicamente. Incluye cargue, transporte y botada de escombros, retiro de refuerzo e instalaciones embebidas, compresor neumático con martillo, además recuperación | 30d | 2024-10-22 | 2024-11-20 | 263SS | 0d |  | 6,555,116 | 2.2.1.1 | m2 |

| ID | WBS | Task | Duration | Start | Finish | Predecessors | Total slack | Free slack | Cost | Text1 | Unidad |
| --- | --- | --- | --- | --- | --- | --- | --- | --- | --- | --- | --- |
| 265 | 5.2.2.2 | **RETIROS** | 20d | 2024-11-01 | 2024-11-20 |  | 28d |  | 50,756 |  |  |
| 266 | 5.2.2.2.1 | RETIRO Y DEMOLICIÓN CAMARA DE INSPECCIÓN cargue, transporte y botada de escombros, manual o mecánicamente, de cualquier resistencia, reforzado o ciclópeo, y en cualquier clase de estructura. Incluye retiro de refuerzo y cualquier tipo de acabado (revoques | 20d | 2024-11-01 | 2024-11-20 | 269SS, 270SS, 272SS | 28d |  | 50,756 | 2.2.2.1 | un |
| 267 | 5.2.3 | **MOVIMIENTO DE TIERRAS** | 30d | 2024-11-01 | 2024-11-30 |  | 0d |  | 93,667,228 |  |  |
| 268 | 5.2.3.1 | **EXCAVACIÓN** | 30d | 2024-11-01 | 2024-11-30 |  | 0d |  | 44,874,556 |  |  |
| 269 | 5.2.3.1.1 | EXCAVACIÓN MECÁNICA de material heterogéneo DE 0-2 m, bajo cualquier grado de humedad. Incluye: roca descompuesta, bolas de roca de volumen inferior a 0.35 m³., el cargue, transporte interno y externo y botada de material proveniente de las excavaciones e | 30d | 2024-11-01 | 2024-11-30 | 262SS+10d, 263SS+10d, 264SS+10d | 0d |  | 11,415,999 | 3.3.1.2 | m3 |
| 270 | 5.2.3.1.2 | EXCAVACIÓN MECÁNICA de material heterogéneo DE 2-4 m, bajo cualquier grado de humedad. Incluye: roca descompuesta, bolas de roca de volumen inferior a 0.35 m³., el cargue, transporte interno y externo y botada de material proveniente de las excavaciones e | 30d | 2024-11-01 | 2024-11-30 | 269SS | 0d |  | 15,220,745 | 3.3.1.3 | m3 |
| 271 | 5.2.3.1.3 | EXCAVACIÓN EN ROCA con CUÑA HIDRÁULICA. Incluye perforaciones con taladro neumático rotopercutor de 2" de diámetro, desembombe, transporte interno y acopio donde lo indique la interventoría y todos los demás elementos necesarios para su correcta ejecución | 30d | 2024-11-01 | 2024-11-30 | 269SS, 270SS | 0d |  | 2,772,031 | 3.3.1.4 | m3 |
| 272 | 5.2.3.1.4 | Construcción de ENTIBADO TEMPORAL en tablón de madera (6 usos), bajo cualquier altura y grado de humedad. Incluye suministro, transporte y colocación de elementos en madera, el cargue, transporte interno y externo y botada de material sobrantes en los sit | 30d | 2024-11-01 | 2024-11-30 | 269SS, 270SS, 271SS | 18d | 0d | 13,077,174 | 3.3.1.5 | m2 |
| 273 | 5.2.3.1.5 | Suministro, transporte e instalación de bomba sumergible para aguas lluvias 3/4HP descarga de 3", incluye cheque mipel de 3" universal, flotador eléctrico mércury o similar, arrancador termomagnético, alarma para mal funcionamiento de bomba, accesorios el | 30d | 2024-11-01 | 2024-11-30 | 269SS, 270SS, 271SS | 18d |  | 2,388,607 | 3.3.1.6 | un |
| 274 | 5.2.3.2 | **LLENOS** | 30d | 2024-11-01 | 2024-11-30 |  | 0d |  | 48,792,672 |  |  |
| 275 | 5.2.3.2.1 | LLENOS EN ARENILLA, compactados mecánicamente hasta obtener una densidad del 98% de la máxima obtenida en el ensayo del Próctor modificado. Incluye el suministro, transporte, colocación de la arenilla, la compactación de la misma y transporte interno. Y s | 30d | 2024-11-01 | 2024-11-30 | 289SS | 0d |  | 3,041,387 | 2.3.2.1 |  |
| 276 | 5.2.3.2.2 | LLENOS EN MATERIAL PROVENIENTES DE LA EXCAVACIÓN, compactados mecánicamente hasta obtener una densidad del 95% de la máxima obtenida en el ensayo del próctor modificado. Incluye transporte interno. Su medida será en sitio ya compactado. | 30d | 2024-11-01 | 2024-11-30 | 275SS | 0d |  | 10,382,269 | 2.3.2.2 |  |
| 277 | 5.2.3.2.3 | Suministro, transporte y colocación de base granular de máximo Ø 1½", reacomodado con medios MANUALES y compactado al 100% mínimo del ensayo del proctor modificado, según normas para la construcción de pavimentos del INVIAS, y todo lo necesario para su co | 30d | 2024-11-01 | 2024-11-30 | 278SS | 0d |  | 12,887,013 | 2.3.2.3 |  |
| 278 | 5.2.3.2.4 | Suministro, transporte y colocación de subbase granular de máximo Ø 2½", reacomodado con medios mecánicos y compactado al 100% mínimo del ensayo del proctor modificado según normas para la construcción de pavimentos del INVIAS. Incluye todo lo necesario p | 30d | 2024-11-01 | 2024-11-30 | 276SS | 0d |  | 14,770,660 | 2.3.2.4 |  |
| 279 | 5.2.3.2.5 | Suministro, transporte y colocación de TRITURADO de 3/4" (19mm) y 1" (25mm) para construcción de CIMENTACIÓN TIPO C1. Incluye transporte interno y todo lo necesario para su correcta instalación. | 30d | 2024-11-01 | 2024-11-30 | 269SS, 270SS, 271SS | 0d |  | 7,711,343 | 2.3.2.5 |  |
| 280 | 5.2.4 | **CARGUE Y TRANSPORTE MANUAL** | 30d | 2024-11-01 | 2024-11-30 |  | 18d |  | 6,361,785 |  |  |
| 281 | 5.2.4.1 | CARGUE MECANICO, TRANSPORTE Y BOTADA DE ESCOMBROS, incluye, el cargue con máquina, repaleo, transporte interno y externo y botada de material tipo escombro en los sitios donde lo indique la interventoría y su medida será en el sitio. | 30d | 2024-11-01 | 2024-11-30 | 269SS, 270SS, 271SS | 18d |  | 6,361,785 | 2.3.3.1 |  |
| 282 | 5.2.5 | **ACARREOS** | 30d | 2024-11-01 | 2024-11-30 |  | 18d |  | 14,097,237 |  |  |
| 283 | 5.2.5.1 | Acarreo interno de materiales en condiciones de fácil acceso, 0 - 100 metros | 30d | 2024-11-01 | 2024-11-30 | 269SS, 270SS, 271SS | 18d |  | 3,446,919 | 3.5.1 |  |
| 284 | 5.2.5.2 | Acarreo interno de materiales para lugares de dificil acceso, pendiente, escalas y senderos en piedra o en tierra. Entre 0 a 100 m. (Incluye cargue, suministro y llenado de canecas de 5 galónes) | 30d | 2024-11-01 | 2024-11-30 | 269SS, 270SS, 271SS | 18d |  | 10,650,318 | 3.5.2 |  |
| 285 | 5.2.6 | **AGUAS LLUVIAS** | 30d | 2024-11-01 | 2024-11-30 |  | 0d |  | 118,713,319 |  |  |
| 286 | 5.2.6.1 | **Red ALL externa** | 30d | 2024-11-01 | 2024-11-30 |  | 0d |  | 100,299,314 |  |  |
| 287 | 5.2.6.1.1 | Tramo de empalme de 8" con descarga a la red pública de diámetro 16",Incluye suministro y transporte de los materiales, bocas, accesorios, acondicionador de superficie y adhesivo Novafort y todos los elementos necesarios para su correcta instalación y fun | 5d | 2024-11-26 | 2024-11-30 | 289FF, 279SS | 18d |  | 3,051,175 | 1.6.2.9 |  |
| 288 | 5.2.6.1.2 | Desempalme de la red provisional de aguas lluvias a MH red residuales en acceso a parqueadero sótano, según planos y diseños. Incluye retiro de tuberia y resanes de MH, excavaciones y llenos. | 5d | 2024-11-26 | 2024-11-30 | 289FF, 279SS | 18d |  | 1,945,533 | 4.7.12 | gl |
| 289 | 5.2.6.1.3 | Suministro, transporte e instalación de TUBERÍA PVC-NOVAFORT, con un DIÁMETRO DE 450 mm. Incluye suministro y transporte de los materiales, bocas, accesorios, acondicionador de superficie y adhesivo Novafort y todos los elementos necesarios para su correc | 30d | 2024-11-01 | 2024-11-30 | 279SS | 0d |  | 95,302,606 | 2.6.1.6 |  |

| ID | WBS | Task | Duration | Start | Finish | Predecessors | Total slack | Free slack | Cost | Text1 | Unidad |
| --- | --- | --- | --- | --- | --- | --- | --- | --- | --- | --- | --- |
| 290 | 5.2.6.2 | **OBRAS COMPLEMENTARIAS ALL** | 30d | 2024-11-01 | 2024-11-30 |  | 18d |  | 18,414,005 |  |  |
| 291 | 5.2.6.2.1 | Suministro, transporte e instalación de CUELLO PREFABRICADO EN CONCRETO PARA CÁMARA DE INSPECCIÓN Ø=1.20M. Incluye mortero para ajuste y pega del cuello al cono Según especificaciones técnicas de EEPP de Medellín y de diseño. Incluye suministro, transport | 30d | 2024-11-01 | 2024-11-30 | 293SS | 18d |  | 3,191,308 | 2.6.2.1 | un |
| 292 | 5.2.6.2.2 | Suministro, transporte e instalación de CILINDRO PREFABRICADO EN CONCRETO PARA CÁMARA DE INSPECCIÓN de 1,20m de diámetro. Incluye mortero para ajuste, pega y resane de las juntas y perforaciones del cilindro, Según especificaciones técnicas de EEPP de Med | 30d | 2024-11-01 | 2024-11-30 | 289SS | 18d | 0d | 6,522,897 | 2.6.2.2 |  |
| 293 | 5.2.6.2.3 | Suministro, transporte e instalación de CONO PREFABRICADO EN CONCRETO PARA CÁMARA DE INSPECCIÓN de 1,20m de diámetro. Incluye mortero para ajuste y pega del cono al cilindro y resane de las perforaciones, Según especificaciones técnicas de EEPP de Medellí | 30d | 2024-11-01 | 2024-11-30 | 292SS | 18d | 0d | 4,148,280 | 2.6.2.3 | un |
| 294 | 5.2.6.2.4 | Construcción de SUMIDERO de aguas lluvias TIPO B (1.10m x 0.80m medidas externas y prof=0.90m e=0.20m), en concreto de 17.5 Mpa. Incluye suministro, transporte y colocación del concreto, reja metálica, formaleta, vibrado y todo lo necesario para su correc | 30d | 2024-11-01 | 2024-11-30 | 289SS | 18d |  | 4,551,520 | 2.6.2.4 | un |
| 295 | 5.2.7 | **CONCRETOS** | 48d | 2024-11-01 | 2024-12-18 |  | 0d |  | 111,227,451 |  |  |
| 296 | 5.2.7.1 | Colocación de concreto de 14 Mpa para SOLADO, con un espesor DE 0.05 m. Incluye el suministro y el transporte del concreto y todos los demás elementos necesarios para su correcta construcción, incluye acarreo interno. | 18d | 2024-12-01 | 2024-12-18 | 303SS+30d | 0d |  | 3,742,729 | 1.4.1 | m2 |
| 297 | 5.2.7.2 | Construcción de LOSA MACIZA en concreto premezclado de 21 MPa., con un ESPESOR DE 0.20 m. Incluye suministro, transporte, bombeo con Auto bomba y la colocación del concreto, formaleta Súper "T" de 19 mm. o su equivalente, aristas biseladas, vibrado, prote | 18d | 2024-12-01 | 2024-12-18 | 303SS, 298SS | 0d |  | 91,711,728 | 1.4.2 | m2 |
| 298 | 5.2.7.3 | Construcción de DADOS en concreto 21 Mpa en profundidades menores a 1,20 desde la clave de la tuberia. Incluye suministro, transporte, bombeo con Auto bomba y la colocación del concreto y todos los demás elementos necesarios para su correcta construcción. | 18d | 2024-12-01 | 2024-12-18 | 303SS, 296SS | 0d |  | 2,011,542 | 1.4.3 | m3 |
| 299 | 5.2.7.4 | Construcción de rebanco vaciado en concreo de 21Mpa para tapar desvios (accesorios) de bajantes a nivel de piso | 18d | 2024-12-01 | 2024-12-18 | 298SS | 0d |  | 11,173,044 | 1.4.4 | un |
| 300 | 5.2.7.5 | Construcción de ANCLAJE EPÓXICO sobre estructura de concreto existente para varillas de acero de diámetro hasta 1/2", incluye el suministro, transporte e instalación del epóxico, perforación mecánica del concreto con broca de diámetro 5/8" mas del diámetr | 18d | 2024-12-01 | 2024-12-18 | 297SS, 298SS | 0d |  | 877,883 | 4.4.1 | un |
| 301 | 5.2.7.6 | Construcción de ANDÉN O PLACAS en concreto de 21 Mpa, espesor de 0.08 m., pendientado y llaneado, vaciado alternado (en cuadros no superiores de 1.5 x 1.5 m). Incluye suministro y transporte de los materiales, nivelación del terreno y adecuación de la sup | 18d | 2024-11-01 | 2024-11-18 | 304SS, 277SS | 30d |  | 1,710,525 | 4.4.3 | m2 |
| 302 | 5.2.8 | **ACERO/MALLAS** | 18d | 2024-11-01 | 2024-11-18 |  | 0d |  | 32,270,934 |  |  |
| 303 | 5.2.8.1 | Suministro, transporte e instalación de ACERO DE REFUERZO FIGURADO FY= 420 Mpa-60000 PSI, corrugado. Incluye transporte con descarga, transporte interno, alambre de amarre, certificados y todos los elementos necesarios para su correcta instalación, según | 18d | 2024-11-01 | 2024-11-18 | 277SS | 0d |  | 17,314,575 | 1.5.1 | kg |
| 304 | 5.2.8.2 | Colocación de MALLA ELECTROSOLDADA EN ESTRUCTURAS. Incluye el suministro y el transporte del material y todos los elementos necesarios para su correcta colocación. NO INCLUYE EL TRANSPORTE DEL SITIO EXTERNO DE LA OBRA AL INTERIOR DE ESTA | 18d | 2024-11-01 | 2024-11-18 | 303SS | 30d | 0d | 14,956,359 | 1.5.2 | kg |
| 305 | 5.3 | **FASE 3-3** | 18d | 2024-12-01 | 2024-12-18 |  | 0d |  | 799,627,172.61 |  |  |
| 306 | 5.3.1 | **PRELIMINARES** | 8d | 2024-12-01 | 2024-12-08 |  | 0d |  | 3,062,534 |  |  |
| 307 | 5.3.1.1 | LOCALIZACIÓN, TRAZADO Y REPLANTEO. Se utilizará personal experto con equipo de precisión. Se hará con la frecuencia que lo indique la interventoría. Incluye demarcación con pintura, línea de trazado, corte de piso, libretas y planos. | 8d | 2024-12-01 | 2024-12-08 | 1SS+132d | 0d |  | 3,062,534 | 2.1.1 | día |
| 308 | 5.3.2 | **DEMOLICIONES Y RETIROS** | 18d | 2024-12-01 | 2024-12-18 |  | 0d |  | 8,564,358 |  |  |
| 309 | 5.3.2.1 | **DEMOLICIONES** | 18d | 2024-12-01 | 2024-12-18 |  | 0d |  | 8,513,602 |  |  |
| 310 | 5.3.2.1.1 | DEMOLICIÓN ANDENES O PISOS, cargue, transporte y botada de escombros de ESPESOR MÁXIMO DE 0.25m en CONCRETO. Incluye retiro de cordones, retiro de enchape (baldosa, baldosín forros en arenón, madera, vinilo, granito esmerilado, concreto, pisos en gres, en | 18d | 2024-12-01 | 2024-12-18 | 307SS | 0d |  | 465,498 | 2.2.1.1 | m2 |
| 311 | 5.3.2.1.2 | DEMOLICIÓN PAVIMENTO ASFÁLTICO (para brecha), cargue, transporte y botada de escombros, HASTA ESPESOR DE 4". Incluye corte con máquina de disco según trazado y compresor neumático con martillo, además recuperación de los materiales aprovechables o su tran | 18d | 2024-12-01 | 2024-12-18 | 310SS | 0d |  | 1,492,988 | 2.2.1.2 | m2 |
| 312 | 5.3.2.1.3 | DEMOLICIÓN PISO EN CONCRETO de cualquier resistencia con espesor hasta de 12 cm, manual o mecánicamente. Incluye cargue, transporte y botada de escombros, retiro de refuerzo e instalaciones embebidas, compresor neumático con martillo, además recuperación | 18d | 2024-12-01 | 2024-12-18 | 311SS | 0d |  | 6,555,116 | 2.2.1.1 | m2 |
| 313 | 5.3.2.2 | **RETIROS** | 18d | 2024-12-01 | 2024-12-18 |  | 0d |  | 50,756 |  |  |
| 314 | 5.3.2.2.1 | RETIRO Y DEMOLICIÓN CAMARA DE INSPECCIÓN cargue, transporte y botada de escombros, manual o mecánicamente, de cualquier resistencia, reforzado o ciclópeo, y en cualquier clase de estructura. Incluye retiro de refuerzo y cualquier tipo de acabado (revoques | 18d | 2024-12-01 | 2024-12-18 | 317SS, 318SS, 319SS, 320SS | 0d |  | 50,756 | 2.2.2.1 | un |

| ID | WBS | Task | Duration | Start | Finish | Predecessors | Total slack | Cost | Text1 | Unidad |
| --- | --- | --- | --- | --- | --- | --- | --- | --- | --- | --- |
| 315 | 5.3.3 | **MOVIMIENTO DE TIERRAS** | 18d | 2024-12-01 | 2024-12-18 |  | 0d | 92,886,013 |  |  |
| 316 | 5.3.3.1 | **EXCAVACIÓN** | 18d | 2024-12-01 | 2024-12-18 |  | 0d | 44,093,341 |  |  |
| 317 | 5.3.3.1.1 | EXCAVACIÓN MANUAL de material heterogéneo DE 0-2 m., bajo cualquier grado de humedad. Incluye: roca descompuesta, bolas de roca de volumen inferior a 0.35 m³., el cargue, transporte interno y externo, botada de material proveniente de las excavaciones en | 18d | 2024-12-01 | 2024-12-18 | 310SS, 311SS, 312SS | 0d | 3,406,015 | 3.3.1.1 | m3 |
| 318 | 5.3.3.1.2 | EXCAVACIÓN MECÁNICA de material heterogéneo DE 0-2 m, bajo cualquier grado de humedad. Incluye: roca descompuesta, bolas de roca de volumen inferior a 0.35 m³., el cargue, transporte interno y externo y botada de material proveniente de las excavaciones e | 18d | 2024-12-01 | 2024-12-18 | 317SS | 0d | 11,415,999 | 3.3.1.2 | m3 |
| 319 | 5.3.3.1.3 | EXCAVACIÓN MECÁNICA de material heterogéneo DE 2-4 m, bajo cualquier grado de humedad. Incluye: roca descompuesta, bolas de roca de volumen inferior a 0.35 m³., el cargue, transporte interno y externo y botada de material proveniente de las excavaciones e | 18d | 2024-12-01 | 2024-12-18 | 318SS | 0d | 11,033,515 | 3.3.1.3 | m3 |
| 320 | 5.3.3.1.4 | EXCAVACIÓN EN ROCA con CUÑA HIDRÁULICA. Incluye perforaciones con taladro neumático rotopercutor de 2" de diámetro, desembombe, transporte interno y acopio donde lo indique la interventoría y todos los demás elementos necesarios para su correcta ejecución | 18d | 2024-12-01 | 2024-12-18 | 317SS, 318SS, 319SS | 0d | 2,772,031 | 3.3.1.4 | m3 |
| 321 | 5.3.3.1.5 | Construcción de ENTIBADO TEMPORAL en tablón de madera (6 usos), bajo cualquier altura y grado de humedad. Incluye suministro, transporte y colocación de elementos en madera, el cargue, transporte interno y externo y botada de material sobrantes en los sit | 18d | 2024-12-01 | 2024-12-18 | 317SS, 318SS, 319SS, 320SS | 0d | 13,077,174 | 3.3.1.5 | m2 |
| 322 | 5.3.3.1.6 | Suministro, transporte e instalación de bomba sumergible para aguas lluvias 3/4HP descarga de 3", incluye cheque mipel de 3" universal, flotador eléctrico mércury o similar, arrancador termomagnético, alarma para mal funcionamiento de bomba, accesorios el | 18d | 2024-12-01 | 2024-12-18 | 317SS, 318SS, 319SS, 320SS | 0d | 2,388,607 | 3.3.1.6 | un |
| 323 | 5.3.3.2 | **LLENOS** | 18d | 2024-12-01 | 2024-12-18 |  | 0d | 48,792,672 |  |  |
| 324 | 5.3.3.2.1 | LLENOS EN ARENILLA, compactados mecánicamente hasta obtener una densidad del 98% de la máxima obtenida en el ensayo del Próctor modificado. Incluye el suministro, transporte, colocación de la arenilla, la compactación de la misma y transporte interno. Y s | 18d | 2024-12-01 | 2024-12-18 | 336SS | 0d | 3,041,387 | 2.3.2.1 | m3 |
| 325 | 5.3.3.2.2 | LLENOS EN MATERIAL PROVENIENTES DE LA EXCAVACIÓN, compactados mecánicamente hasta obtener una densidad del 95% de la máxima obtenida en el ensayo del próctor modificado. Incluye transporte interno. Su medida será en sitio ya compactado. | 18d | 2024-12-01 | 2024-12-18 | 324SS | 0d | 10,382,269 | 2.3.2.2 | m3 |
| 326 | 5.3.3.2.3 | Suministro, transporte y colocación de base granular de máximo Ø 1½", reacomodado con medios MANUALES y compactado al 100% mínimo del ensayo del proctor modificado, según normas para la construcción de pavimentos del INVIAS, y todo lo necesario para su co | 18d | 2024-12-01 | 2024-12-18 | 327SS | 0d | 12,887,013 | 2.3.2.3 | m3 |
| 327 | 5.3.3.2.4 | Suministro, transporte y colocación de subbase granular de máximo Ø 2½", reacomodado con medios mecánicos y compactado al 100% mínimo del ensayo del proctor modificado según normas para la construcción de pavimentos del INVIAS. Incluye todo lo necesario p | 18d | 2024-12-01 | 2024-12-18 | 325SS | 0d | 14,770,660 | 2.3.2.4 | m3 |
| 328 | 5.3.3.2.5 | Suministro, transporte y colocación de TRITURADO de 3/4"(19mm) y 1" (25mm) para construcción de CIMENTACIÓN TIPO C1. Incluye transporte interno y todo lo necesario para su correcta instalación. | 18d | 2024-12-01 | 2024-12-18 | 319SS, 320SS | 0d | 7,711,343 | 2.3.2.5 | m3 |
| 329 | 5.3.4 | **CARGUE Y TRANSPORTE MANUAL** | 18d | 2024-12-01 | 2024-12-18 |  | 0d | 6,361,785 |  |  |
| 330 | 5.3.4.1 | CARGUE MECANICO, TRANSPORTE Y BOTADA DE ESCOMBROS, incluye, el cargue con máquina, repaleo, transporte interno y externo y botada de material tipo escombro en los sitios donde lo indique la interventoría y su medida será en el sitio. | 18d | 2024-12-01 | 2024-12-18 | 317SS, 318SS, 319SS, 320SS | 0d | 6,361,785 | 2.3.3.1 | m3 |
| 331 | 5.3.5 | **ACARREOS** | 18d | 2024-12-01 | 2024-12-18 |  | 0d | 14,097,237 |  |  |
| 332 | 5.3.5.1 | Acarreo interno de materiales en condiciones de fácil acceso, 0 - 100 metros | 18d | 2024-12-01 | 2024-12-18 | 317SS, 318SS, 319SS, 320SS | 0d | 3,446,919 | 3.5.1 | m3 |
| 333 | 5.3.5.2 | Acarreo interno de materiales para lugares de dificil acceso, pendiente, escalas y senderos en piedra o en tierra. Entre 0 a 100 m. (Incluye cargue, suministro y llenado de canecas de 5 galónes) | 18d | 2024-12-01 | 2024-12-18 | 317SS, 318SS, 319SS, 320SS | 0d | 10,650,318 | 3.5.2 | m3 |
| 334 | 5.3.6 | **AGUAS LLUVIAS** | 18d | 2024-12-01 | 2024-12-18 |  | 0d | 25,189,336 |  |  |
| 335 | 5.3.6.1 | **Red ALL externa** | 18d | 2024-12-01 | 2024-12-18 |  | 0d | 10,685,708 |  |  |
| 336 | 5.3.6.1.1 | Suministro, transporte e instalación de TUBERÍA PVC-NOVAFORT, con un DIÁMETRO DE 315 mm. Incluye suministro y transporte de los materiales, bocas, accesorios, acondicionador de superficie y adhesivo Novafort y todos los elementos necesarios para su correc | 18d | 2024-12-01 | 2024-12-18 | 328SS | 0d | 10,685,708 | 2.6.1.4 |  |
| 337 | 5.3.6.2 | **OBRAS COMPLEMENTARIAS ALL** | 18d | 2024-12-01 | 2024-12-18 |  | 0d | 14,503,628 |  |  |
| 338 | 5.3.6.2.1 | Suministro, transporte e instalación de CUELLO PREFABRICADO EN CONCRETO PARA CÁMARA DE INSPECCIÓN Ø=1.20M. Incluye mortero para ajuste y pega del cuello al cono Según especificaciones técnicas de EEPP de Medellín y de diseño. Incluye suministro, transport | 18d | 2024-12-01 | 2024-12-18 | 340SS | 0d | 2,553,046 | 2.6.2.1 | un |
| 339 | 5.3.6.2.2 | Suministro, transporte e instalación de CILINDRO PREFABRICADO EN CONCRETO PARA CÁMARA DE INSPECCIÓN de 1,20m de diámetro. Incluye mortero para ajuste, pega y resane de las juntas y perforaciones del cilindro, Según especificaciones técnicas de EEPP de Med | 18d | 2024-12-01 | 2024-12-18 | 336SS | 0d | 5,218,318 | 2.6.2.2 | un |
| 340 | 5.3.6.2.3 | Suministro, transporte e instalación de CONO PREFABRICADO EN CONCRETO PARA CÁMARA DE INSPECCIÓN de 1,20m de diámetro. Incluye mortero para ajuste y pega del cono al cilindro y resane de las perforaciones, Según especificaciones técnicas de EEPP de Medellí | 18d | 2024-12-01 | 2024-12-18 | 339SS | 0d | 3,318,624 | 2.6.2.3 | un |
| 341 | 5.3.6.2.4 | Construcción de SUMIDERO de aguas lluvias TIPO B (1.10m x 0.80m medidas externas y prof=0.90m e=0.20m), en concreto de 17.5 Mpa. Incluye suministro, transporte y colocación del concreto, reja metálica, formaleta, vibrado y todo lo necesario para su correc | 18d | 2024-12-01 | 2024-12-18 | 336SS | 0d | 3,413,640 | 2.6.2.4 | un |

| ID | WBS | Task | Type | Duration | Start | Finish | Predecessors | Total slack | Cost | Text1 | Unidad |
| --- | --- | --- | --- | --- | --- | --- | --- | --- | --- | --- | --- |
| 342 | 5.3.7 | **CONCRETOS** |  | 18d | 2024-12-01 | 2024-12-18 |  | 0d | 100,054,407 |  |  |
| 343 | 5.3.7.1 | Colocación de concreto de 14 Mpa para SOLADO, con un espesor DE 0.05 m. Incluye el suministro y el transporte del concreto y todos los demás elementos necesarios para su correcta construcción, incluye acarreo interno. |  | 18d | 2024-12-01 | 2024-12-18 | 349SS | 0d | 3,742,729 | 2.4.1 | m2 |
| 344 | 5.3.7.2 | Construcción de LOSA MACIZA en concreto premezclado de 21 MPa., con un ESPESOR DE 0.20 m. Incluye suministro, transporte, bombeo con Auto bomba y la colocación del concreto, formaleta Súper "T" de 19 mm. o su equivalente, aristas biseladas, vibrado, prote |  | 18d | 2024-12-01 | 2024-12-18 | 343SS, 349SS | 0d | 91,711,728 | 2.4.2 | m2 |
| 345 | 5.3.7.3 | Construcción de ANCLAJE EPÓXICO sobre estructura de concreto existente para varillas de acero de diámetro hasta 1/2", incluye el suministro, transporte e instalación del epóxico, perforación mecánica del concreto con broca de diámetro 5/8" mas del diámetr |  | 18d | 2024-12-01 | 2024-12-18 | 344SS | 0d | 877,883 | 4.4.1 | un |
| 346 | 5.3.7.4 | Construcción de DADOS en concreto 21 Mpa en profundidades menores a 1,20 desde la clave de la tuberia. Incluye suministro, transporte, bombeo con Auto bomba y la colocación del concreto y todos los demás elementos necesarios para su correcta construcción. |  | 18d | 2024-12-01 | 2024-12-18 | 343SS, 349SS | 0d | 2,011,542 | 2.4.3 | m3 |
| 347 | 5.3.7.5 | Construcción de ANDÉN O PLACAS en concreto de 21 Mpa, espesor de 0.08 m., pendientado y llaneado, vaciado alternado (en cuadros no superiores de 1.5 x 1.5 m). Incluye suministro y transporte de los materiales, nivelación del terreno y adecuación de la sup |  | 18d | 2024-12-01 | 2024-12-18 | 349SS | 0d | 1,710,525 | 4.4.3 | m2 |
| 348 | 5.3.8 | **ACERO/MALLAS** |  | 18d | 2024-12-01 | 2024-12-18 |  | 0d | 32,270,934 |  |  |
| 349 | 5.3.8.1 | Suministro, transporte e instalación de ACERO DE REFUERZO FIGURADO FY= 420 Mpa-60000 PSI, corrugado. Incluye transporte con descarga, transporte interno, alambre de amarre, certificados y todos los elementos necesarios para su correcta instalación, según |  | 18d | 2024-12-01 | 2024-12-18 | 326SS | 0d | 17,314,575 | 2.5.1 | kg |
| 350 | 5.3.8.2 | Colocación de MALLA ELECTROSOLDADA EN ESTRUCTURAS. Incluye el suministro y el transporte del material y todos los elementos necesarios para su correcta colocación. NO INCLUYE EL TRANSPORTE DEL SITIO EXTERNO DE LA OBRA AL INTERIOR DE ESTA |  | 18d | 2024-12-01 | 2024-12-18 | 349SS | 0d | 14,956,359 | 2.5.2 | kg |
| 351 | 5.3.9 | **VÍAS Y PARQUEADERO** |  | 8d | 2024-12-11 | 2024-12-18 |  | 0d | 246,104,619 |  |  |
| 352 | 5.3.9.1 | Suministro, transporte y colocación de mezcla asfáltica en caliente para pavimento MDC-19 (de 0 - 50 m3). Compactada con medios mecánicos según normas para la construcción de pavimentos del INVIAS. Incluye compactador Rodillo tipo DD-24 + Operador + Combu |  | 8d | 2024-12-11 | 2024-12-18 | 326FF | 0d | 246,104,619 | 3.8.1.1 | m3 |
| 353 | 5.3.10 | **SEÑALIZACIÓN Y DEMARCACIÓN VÍAL** |  | 7d | 2024-12-12 | 2024-12-18 |  | 0d | 188,230,025 |  |  |
| 354 | 5.3.10.1 | Suministro e instalación de marcas viales con material plástico en frío con resistencia al deslizamiento (flechas direccionales, flechas de fin de carril, textos, pares, triángulos ceda el paso, diamantes ceda el paso, textos de zona, pictograma de zona e |  | 7d | 2024-12-12 | 2024-12-18 | 352FF | 0d | 183,564,374 | 3.8.2.1 | m2 |
| 355 | 5.3.10.2 | Suministro e instalación de marcas viales con material plástico en frío con resistencia al deslizamiento , Incluye alúmina antideslizante. LINEA BLANCA O AMARILLA, Canalización continua o segmentada (12cm) |  | 7d | 2024-12-12 | 2024-12-18 | 352FF | 0d | 4,665,651 | 3.8.2.2 |  |
| 356 | 5.3.11 | **PRUEBAS Y ENSAYOS** |  | 10d | 2024-12-09 | 2024-12-18 |  | 0d | 55,834,261 |  |  |
| 357 | 5.3.11.1 | Limpieza de cámaras de inspección, limpieza de la tubería de alcantarillado residual, llúvia o combinada que se construyó. Se contrata mínimo dos horas |  | 10d | 2024-12-09 | 2024-12-18 | 336FF | 0d | 48,784,317 | 1.9.1 | hora |
| 358 | 5.3.11.2 | Informe final de las obras construidas de concesión y vertimientos de aguas, plano y registro fotográfico. Incluye la solicitud y trámite del cierre del expediente o resolución ante dicha autoridad ambiental. |  | 7d | 2024-12-12 | 2024-12-18 | 336FF | 0d | 6,770,567 | 1.9.2 | global |
| 359 | 5.3.11.3 | Instalación registros de prueba de tuberías, tapón de limpieza en PVC en la parte superior e inferior de bajantes |  | 7d | 2024-12-12 | 2024-12-18 | 336FF | 0d | 279,377 | 1.9.3 | un |
| 360 | 5.3.12 | **OBRAS COMPLEMENTARIAS** |  | 18d | 2024-12-01 | 2024-12-18 |  | 0d | 26,971,663.61 |  |  |
| 361 | 5.3.12.1 | Suministro, transporte y colocación de cordón prefabricado de 0.15 x 0.35 x 0.80 m. de concreto de 21 Mpa, tres caras, juntas ranuradas, referencia Bordillo Barrera Recto Tipo U50 (según M.E.P). Incluye excavación, conformación del terreno, ajustes de con |  | 18d | 2024-12-01 | 2024-12-18 | 344SS | 0d | 4,181,176.46 | 3.7.1 |  |
| 362 | 5.3.12.2 | Transporte y siembra de grama tipo Macana, la cual debe ser sembrada por cespedón o cuadriculas con suficiente material radicular que garantice su prendimiento, sobre un sustrato, perfilado, subsolado y fertilización foliar. |  | 18d | 2024-12-01 | 2024-12-18 | 361SS | 0d | 1,995,982.46 | 3.7.3 | un |
| 363 | 5.3.12.3 | Suministro, transporte e instalación de filtros para abatimiento de nivel freático con tubería perforada con un diámetro de 200mm., con una sección de 0.4 x 0.4 m. Incluye Geotextil y triturado de 1" y todos los demás elementos para su correcta construcci |  | 18d | 2024-12-01 | 2024-12-18 | 361SS | 0d | 3,516,594.69 | 3.7.2 |  |
| 364 | 5.3.12.4 | Instalación de GEOTEXTIL NT 2000 tipo Pavco para filtro o equivalente. Incluye suministro y transporte de los materiales, traslapos, costuras y todos los elementos necesarios para su correcta instalación y funcionamiento. Según diseño. |  | 18d | 2024-12-01 | 2024-12-18 | 363SS | 0d | 17,277,910 | 1.3.2.5 | m2 |
| 365 | 6 | FIN DE OBRA | milestone | 0d | 2024-12-18 | 2024-12-18 | 7, 11, 12, 16, 20, 23, 29, 30, 34, 38, 40, 41, 55, 56, 57, 58, 61, 62, 63, 64, 65, 66, 74, 76, 80, 81, 88, 90, 91, 92, 93, 94, 95, 104, 105, 106, 97, 98, 101, 110, 116, 117, 118, 122, 123, 125, 131, 135, 139, 141, 142, 154, 157, 158, 159, 160, 161, 162, 163, 167, 169, 181, 182, 183, 184, 185, 186, 187, 188, 197, 198, 199, 338, 341, 345, 346, 347, 350, 354, 355, 357, 358, 359, 362, 363, 333, 332, 330, 322, 321, 314, 301, 300, 299, 294, 291, 283, 284, 281, 273, 266, 256, 249, 250, 251, 235, 234, 233, 231, 226, 225, 223, 214, 215, 194, 191, 190 | 0d |  |  |  |
| 366 | 7 | INVERSIÓN GESTIÓN SOCIAL Y COMUNICACIONES |  | 150d | 2024-07-22 | 2024-12-18 |  | 0d | 17,781,400 |  |  |
| 367 | 8 | INVERSIÓN GESTIÓN AMBIENTAL |  | 150d | 2024-07-22 | 2024-12-18 |  | 0d | 21,298,851 |  |  |
| 368 | 9 | INVERSIÓN SEGURIDAD Y SALUD EN EL TRABAJO |  | 150d | 2024-07-22 | 2024-12-18 |  | 0d | 16,890,708 |  |  |
| 369 | 10 | PRESUPUESTO PLAN DE MANEJO DE TRANSITO |  | 150d | 2024-07-22 | 2024-12-18 |  | 0d | 26,814,892 |  |  |
