# PROGRAMA - MANTENIMIENTO DE REDES SEDE CARIBE

Schedule from MS Project, 2024-07-22 to 2024-12-18, 9 hours a day, costs in $.

## Calendars

- REDES SEDE CARIBE: Mon-Sun 07:00-12:00, 13:00-17:00.

## Schedule

| ID | WBS | Task | Type | Duration | Start | Finish | Predecessors | Total slack | Free slack | Cost | Unidad |
| --- | --- | --- | --- | --- | --- | --- | --- | --- | --- | --- | --- |
| 1 | 1 | INICIO DEL PROYECTO | milestone | 0d | 2024-07-22 | 2024-07-22 |  | 0d |  |  |  |
| 2 | 2 | **EJECUCIÓN DE LA OBRA** |  | 150d | 2024-07-22 | 2024-12-18 |  | 0d |  | 2,824,670,520.51 |  |
| 3 | 2.1 | **FASE 1** |  | 45d | 2024-07-22 | 2024-09-04 |  | 23d |  | 567,409,163.7 |  |
| 4 | 2.1.1 | **Red aguas residuales (Externa)** |  | 45d | 2024-07-22 | 2024-09-04 |  | 105d |  | 103,119,996.67 |  |
| 5 | 2.1.1.1 | Construcción de cerramientos y campamentos |  | 8d | 2024-07-22 | 2024-07-29 | 1 | 105d | 0d | 9,023,773.83 | m2 |
| 6 | 2.1.1.2 | Localización y replanteo |  | 10d | 2024-07-25 | 2024-08-03 | 5FS-5d | 105d | 0d | 6,298,862.93 | m3 |
| 7 | 2.1.1.3 | Demoliciones y retiros |  | 10d | 2024-08-01 | 2024-08-10 | 6FS-3d | 105d | 0d | 11,578,851.33 | m2 |
| 8 | 2.1.1.4 | Excavaciones y entibados |  | 10d | 2024-08-05 | 2024-08-14 | 7FS-6d | 105d | 0d | 26,089,657.13 | m2 |
| 9 | 2.1.1.5 | Cargue de material de excavación |  | 10d | 2024-08-08 | 2024-08-17 | 8FS-7d | 105d | 0d | 1,446,151.53 | un |
| 10 | 2.1.1.6 | Nivelación y colocación de cama de triturado para tuberia |  | 10d | 2024-08-12 | 2024-08-21 | 9FS-6d | 105d | 0d | 1,716,063.13 | un |
| 11 | 2.1.1.7 | Instalación de tuberia novafort |  | 10d | 2024-08-17 | 2024-08-26 | 10FS-5d | 105d | 0d | 21,720,849.53 |  |
| 12 | 2.1.1.8 | Construcción de llenos |  | 10d | 2024-08-22 | 2024-08-31 | 11FS-5d | 105d | 0d | 11,209,507.73 |  |
| 13 | 2.1.1.9 | Construcción de camaras de inspección 1,20 |  | 10d | 2024-08-26 | 2024-09-04 | 12FS-6d | 105d |  | 14,036,279.53 |  |
| 14 | 2.1.2 | **Red aguas lluvias (Externa)** |  | 35d | 2024-08-01 | 2024-09-04 |  | 105d |  | 123,514,267.62 |  |
| 15 | 2.1.2.1 | Localización y replanteo |  | 5d | 2024-08-01 | 2024-08-05 | 1FS+10d | 105d | 0d | 4,767,595.83 |  |
| 16 | 2.1.2.2 | Demoliciones y retiros |  | 7d | 2024-08-06 | 2024-08-12 | 15 | 105d | 0d | 20,132,643.93 | un |
| 17 | 2.1.2.3 | Excavaciones y entibados |  | 7d | 2024-08-09 | 2024-08-15 | 16FS-4d | 105d | 0d | 45,526,554.08 | un |
| 18 | 2.1.2.4 | Cargue de material de excavación |  | 7d | 2024-08-12 | 2024-08-18 | 17FS-4d | 105d | 0d | 2,400,419.28 |  |
| 19 | 2.1.2.5 | Nivelación y colocación de cama de triturado para tuberia |  | 7d | 2024-08-15 | 2024-08-21 | 18FS-4d | 105d | 0d | 2,400,419.28 | un |
| 20 | 2.1.2.6 | Instalación de tuberia |  | 7d | 2024-08-18 | 2024-08-24 | 19FS-4d | 105d | 0d | 16,721,622.53 | un |
| 21 | 2.1.2.7 | Construcción de llenos |  | 7d | 2024-08-21 | 2024-08-27 | 20FS-4d | 105d | 0d | 19,486,292.63 |  |
| 22 | 2.1.2.8 | Construcción de camaras de inspección 1,20 |  | 7d | 2024-08-26 | 2024-09-01 | 21FS-2d | 105d | 0d | 8,491,285.53 |  |
| 23 | 2.1.2.9 | Construcción de sumideros |  | 7d | 2024-08-29 | 2024-09-04 | 22FS-4d | 105d |  | 3,587,434.53 |  |
| 24 | 2.1.3 | **Red de aguas residuales (Sotano)** |  | 35d | 2024-08-01 | 2024-09-04 |  | 105d |  | 173,228,688.14 |  |
| 25 | 2.1.3.1 | Localización y replanteo |  | 5d | 2024-08-01 | 2024-08-05 | 1FS+10d | 105d | 0d | 3,236,328.73 |  |
| 26 | 2.1.3.2 | Diagnostico de redes |  | 3d | 2024-08-06 | 2024-08-08 | 25 | 105d | 0d | 173,794.53 |  |
| 27 | 2.1.3.3 | Demoliciones y retiros |  | 7d | 2024-08-09 | 2024-08-15 | 26 | 105d | 0d | 17,281,379.73 |  |
| 28 | 2.1.3.4 | Excavaciones y entibados |  | 7d | 2024-08-12 | 2024-08-18 | 27FS-4d | 105d | 0d | 39,047,588.43 |  |
| 29 | 2.1.3.5 | Cargue de material de excavación |  | 7d | 2024-08-15 | 2024-08-21 | 28FS-4d | 105d | 0d | 2,082,330.03 |  |
| 30 | 2.1.3.6 | Nivelación y colocación de cama de triturado para tuberia |  | 7d | 2024-08-18 | 2024-08-24 | 29FS-4d | 105d | 0d | 2,487,197.43 |  |
| 31 | 2.1.3.7 | Instalación de tuberia novafort y pvc -accesorios |  | 7d | 2024-08-21 | 2024-08-27 | 30FS-4d | 105d | 0d | 85,064,890.4 |  |
| 32 | 2.1.3.8 | Construcción de llenos |  | 7d | 2024-08-24 | 2024-08-30 | 31FS-4d | 105d | 0d | 16,727,364.33 |  |
| 33 | 2.1.3.9 | Construcción de cajas de inspección |  | 7d | 2024-08-29 | 2024-09-04 | 32FS-2d | 105d |  | 7,127,814.53 |  |

| ID | WBS | Task | Type | Duration | Start | Finish | Predecessors | Total slack | Free slack | Cost | Unidad |
| --- | --- | --- | --- | --- | --- | --- | --- | --- | --- | --- | --- |
| 34 | 2.1.4 | **Red de aguas lluvias (Sotano)** |  | 31d | 2024-08-05 | 2024-09-04 |  | 105d |  | 63,017,413.86 |  |
| 35 | 2.1.4.1 | Localización y replanteo |  | 2d | 2024-08-05 | 2024-08-06 | 1FS+14d | 105d | 0d | 1,705,061.63 |  |
| 36 | 2.1.4.2 | Demoliciones y retiros |  | 7d | 2024-08-06 | 2024-08-12 | 35FS-1d | 105d | 0d | 8,727,587.13 |  |
| 37 | 2.1.4.3 | Excavaciones y entibados |  | 7d | 2024-08-10 | 2024-08-16 | 36FS-3d | 105d | 0d | 19,610,691.48 |  |
| 38 | 2.1.4.4 | Cargue de material de excavación |  | 7d | 2024-08-12 | 2024-08-18 | 37FS-5d | 105d | 0d | 1,128,062.28 |  |
| 39 | 2.1.4.5 | Nivelación y colocación de cama de triturado para tuberia |  | 8d | 2024-08-15 | 2024-08-22 | 38FS-4d | 105d | 0d | 1,330,495.98 |  |
| 40 | 2.1.4.6 | Instalación de tuberia |  | 8d | 2024-08-19 | 2024-08-26 | 39FS-4d | 105d | 0d | 14,937,121.4 |  |
| 41 | 2.1.4.7 | Construcción de llenos |  | 8d | 2024-08-23 | 2024-08-30 | 40FS-4d | 105d | 0d | 8,450,579.43 |  |
| 42 | 2.1.4.8 | Construcción de cajas de sifonadas |  | 7d | 2024-08-29 | 2024-09-04 | 41FS-2d | 105d |  | 7,127,814.53 |  |
| 43 | 2.1.5 | **Red de abastos (Edificio)** |  | 8d | 2024-08-14 | 2024-08-21 |  | 0d |  | 52,121,971.23 |  |
| 44 | 2.1.5.1 | Retiros |  | 5d | 2024-08-14 | 2024-08-18 | 1FS+23d | 0d |  | 26,701,806.53 | un |
| 45 | 2.1.5.2 | Instalación de tuberia a presión y accesorios |  | 7d | 2024-08-15 | 2024-08-21 | 44FS-4d | 0d |  | 25,420,164.7 | un |
| 46 | 2.1.6 | **Obras civiles** |  | 20d | 2024-08-16 | 2024-09-04 |  | 0d |  | 52,406,826.18 |  |
| 47 | 2.1.6.1 | Construcción de buitrones |  | 7d | 2024-08-16 | 2024-08-22 | 45FS-6d | 0d |  | 3,740,676.53 |  |
| 48 | 2.1.6.2 | Instalación de cielo falso |  | 4d | 2024-08-21 | 2024-08-24 | 47FS-2d | 0d |  | 21,819,905.53 |  |
| 49 | 2.1.6.3 | Csontrucción de mamposteria |  | 7d | 2024-08-23 | 2024-08-29 | 48FS-2d | 0d |  | 10,255,901.53 |  |
| 50 | 2.1.6.4 | Construcción de revoque |  | 5d | 2024-08-27 | 2024-08-31 | 49FS-3d | 0d |  | 5,206,272.53 |  |
| 51 | 2.1.6.5 | Construcción de enchape |  | 5d | 2024-08-29 | 2024-09-02 | 50FS-3d | 0d |  | 4,435,516.53 |  |
| 52 | 2.1.6.6 | Resane y aplicación de pinturas |  | 4d | 2024-09-01 | 2024-09-04 | 51FS-2d | 0d |  | 6,948,553.53 |  |
| 53 | 2.1.7 | FIN EJECUCIÓN - FASE 1 | milestone | 0d | 2024-09-04 | 2024-09-04 | 52FF | 0d |  |  |  |
| 54 | 2.2 | **FASE 2** |  | 31d | 2024-09-05 | 2024-10-05 |  | 1d |  | 412,380,000.27 |  |
| 55 | 2.2.1 | **Red de aguas lluvias (Externa)** |  | 27d | 2024-09-09 | 2024-10-05 |  | 74d |  | 75,156,210.1 |  |
| 56 | 2.2.1.1 | Construcción de cerramientos |  | 2d | 2024-09-09 | 2024-09-10 | 53FS+4d | 74d | 0d | 1,307,120.78 | m2 |
| 57 | 2.2.1.2 | Localización y replanteo |  | 2d | 2024-09-11 | 2024-09-12 | 56 | 74d | 0d | 2,215,484.13 | m2 |
| 58 | 2.2.1.3 | Demoliciones y retiros |  | 5d | 2024-09-12 | 2024-09-16 | 57FS-1d | 74d | 0d | 26,107,720.38 | m2 |
| 59 | 2.2.1.4 | Excavaciones y entibados |  | 7d | 2024-09-14 | 2024-09-20 | 58FS-3d | 74d | 0d | 12,240,382.28 | m3 |
| 60 | 2.2.1.5 | Cargue de material de excavación |  | 7d | 2024-09-16 | 2024-09-22 | 59FS-5d | 74d | 0d | 2,400,419.28 | un |
| 61 | 2.2.1.6 | Nivelación y colocación de cama de triturado para tuberia |  | 8d | 2024-09-19 | 2024-09-26 | 60FS-4d | 74d | 0d | 2,872,764.58 |  |
| 62 | 2.2.1.7 | Instalación de tuberia |  | 8d | 2024-09-23 | 2024-09-30 | 61FS-4d | 74d | 0d | 5,188,760.23 |  |
| 63 | 2.2.1.8 | Construcción de llenos |  | 8d | 2024-09-27 | 2024-10-04 | 62FS-4d | 74d | 0d | 19,486,292.63 |  |
| 64 | 2.2.1.9 | Construcción de camaras de inspección 1,20 |  | 5d | 2024-10-01 | 2024-10-05 | 63FS-4d | 74d | 0d | 2,253,167.28 |  |
| 65 | 2.2.1.10 | Construcción de sumideros |  | 3d | 2024-10-03 | 2024-10-05 | 64FS-3d | 74d |  | 1,084,098.53 |  |

| ID | WBS | Task | Type | Duration | Start | Finish | Predecessors | Total slack | Free slack | Cost | Unidad |
| --- | --- | --- | --- | --- | --- | --- | --- | --- | --- | --- | --- |
| 66 | 2.2.2 | **Red de aguas residuales (Sotano)** |  | 31d | 2024-09-05 | 2024-10-05 |  | 74d |  | 155,843,876.59 |  |
| 67 | 2.2.2.1 | Construcción de cerramientos |  | 2d | 2024-09-05 | 2024-09-06 | 53 | 74d | 0d | 1,307,120.78 | m3 |
| 68 | 2.2.2.2 | Localización y replanteo |  | 2d | 2024-09-07 | 2024-09-08 | 67 | 74d | 0d | 1,705,061.73 | m3 |
| 69 | 2.2.2.3 | Demoliciones y retiros |  | 5d | 2024-09-08 | 2024-09-12 | 68FS-1d | 74d | 0d | 26,107,720.38 | m3 |
| 70 | 2.2.2.4 | Excavaciones y entibados |  | 7d | 2024-09-10 | 2024-09-16 | 69FS-3d | 74d | 0d | 12,240,382.28 | m2 |
| 71 | 2.2.2.5 | Cargue de material de excavación |  | 7d | 2024-09-12 | 2024-09-18 | 70FS-5d | 74d | 0d | 2,400,419.28 |  |
| 72 | 2.2.2.6 | Nivelación y colocación de cama de triturado para tuberia |  | 8d | 2024-09-15 | 2024-09-22 | 71FS-4d | 74d | 0d | 2,872,764.58 |  |
| 73 | 2.2.2.7 | Instalación de tuberia novafort y pvc -accesorios |  | 8d | 2024-09-21 | 2024-09-28 | 72FS-2d | 74d | 0d | 82,596,300.4 |  |
| 74 | 2.2.2.8 | Construcción de llenos |  | 8d | 2024-09-25 | 2024-10-02 | 73FS-4d | 74d | 0d | 19,486,292.63 |  |
| 75 | 2.2.2.9 | Construcción de cajas de inspección |  | 5d | 2024-10-01 | 2024-10-05 | 74FS-2d | 74d |  | 7,127,814.53 |  |
| 76 | 2.2.3 | **Red de aguas lluvias (Sotano)** |  | 29d | 2024-09-07 | 2024-10-05 |  | 74d |  | 81,565,471.34 |  |
| 77 | 2.2.3.1 | Construcción de cerramientos |  | 2d | 2024-09-07 | 2024-09-08 | 53FS+2d | 74d | 0d | 1,145,217.03 |  |
| 78 | 2.2.3.2 | Localización y replanteo |  | 2d | 2024-09-09 | 2024-09-10 | 77 | 74d | 0d | 1,705,061.73 |  |
| 79 | 2.2.3.3 | Demoliciones y retiros |  | 5d | 2024-09-10 | 2024-09-14 | 78FS-1d | 74d | 0d | 22,402,873.83 |  |
| 80 | 2.2.3.4 | Excavaciones y entibados |  | 7d | 2024-09-12 | 2024-09-18 | 79FS-3d | 74d | 0d | 10,516,584.03 |  |
| 81 | 2.2.3.5 | Cargue de material de excavación |  | 7d | 2024-09-14 | 2024-09-20 | 80FS-5d | 74d | 0d | 2,082,330.03 |  |
| 82 | 2.2.3.6 | Nivelación y colocación de cama de triturado para tuberia |  | 8d | 2024-09-17 | 2024-09-24 | 81FS-4d | 74d | 0d | 2,487,197.43 |  |
| 83 | 2.2.3.7 | Instalación de tuberia |  | 8d | 2024-09-21 | 2024-09-28 | 82FS-4d | 74d | 0d | 21,891,141.4 |  |
| 84 | 2.2.3.8 | Construcción de llenos |  | 8d | 2024-09-25 | 2024-10-02 | 83FS-4d | 74d | 0d | 16,727,364.33 |  |
| 85 | 2.2.3.9 | Construcción de cajas de sifonadas |  | 5d | 2024-10-01 | 2024-10-05 | 84FS-2d | 74d |  | 2,607,701.53 |  |
| 86 | 2.2.4 | **Red de abastos (Edificio)** |  | 17d | 2024-09-06 | 2024-09-22 |  | 0d |  | 47,407,616.06 |  |
| 87 | 2.2.4.1 | Retiros |  | 7d | 2024-09-06 | 2024-09-12 | 53FS+1d | 0d |  | 13,437,800.53 |  |
| 88 | 2.2.4.2 | Instalación de tuberia a presión y accesorios |  | 10d | 2024-09-13 | 2024-09-22 | 87 | 0d |  | 33,969,815.53 |  |
| 89 | 2.2.5 | **Obras civiles** |  | 19d | 2024-09-17 | 2024-10-05 |  | 0d |  | 52,406,826.18 |  |
| 90 | 2.2.5.1 | Construcción de buitrones |  | 5d | 2024-09-17 | 2024-09-21 | 88FS-6d | 0d |  | 3,740,676.53 |  |
| 91 | 2.2.5.2 | Instalación de cielo falso |  | 4d | 2024-09-20 | 2024-09-23 | 90FS-2d | 0d |  | 21,819,905.53 |  |
| 92 | 2.2.5.3 | Csontrucción de mamposteria |  | 7d | 2024-09-22 | 2024-09-28 | 91FS-2d | 0d |  | 10,255,901.53 |  |
| 93 | 2.2.5.4 | Construcción de revoque |  | 5d | 2024-09-26 | 2024-09-30 | 92FS-3d | 0d |  | 5,206,272.53 |  |
| 94 | 2.2.5.5 | Construcción de enchape |  | 5d | 2024-09-28 | 2024-10-02 | 93FS-3d | 0d |  | 4,435,516.53 |  |
| 95 | 2.2.5.6 | Resane y aplicación de pinturas |  | 5d | 2024-10-01 | 2024-10-05 | 94FS-2d | 0d |  | 6,948,553.53 |  |
| 96 | 2.2.6 | FIN EJECUCIÓN - FASE 2 | milestone | 0d | 2024-10-05 | 2024-10-05 | 95FF | 0d |  |  |  |

| ID | WBS | Task | Type | Duration | Start | Finish | Predecessors | Total slack | Free slack | Cost | Unidad |
| --- | --- | --- | --- | --- | --- | --- | --- | --- | --- | --- | --- |
| 97 | 2.3 | **FASE 3** |  | 60d | 2024-10-06 | 2024-12-04 |  | 0d |  | 1,354,191,067.95 |  |
| 98 | 2.3.1 | **FASE 3-1** |  | 31d | 2024-10-06 | 2024-11-05 |  | 0d |  | 422,835,162.01 |  |
| 99 | 2.3.1.1 | **Red de aguas lluvias (Externa)** |  | 31d | 2024-10-06 | 2024-11-05 |  | 0d |  | 278,989,187.95 |  |
| 100 | 2.3.1.1.1 | Construcción de cerramientos |  | 2d | 2024-10-06 | 2024-10-07 | 96 | 0d |  | 1,145,217.03 | m2 |
| 101 | 2.3.1.1.2 | Localización y replanteo |  | 3d | 2024-10-08 | 2024-10-10 | 100 | 0d |  | 9,973,904.13 | m2 |
| 102 | 2.3.1.1.3 | Demoliciones y retiros |  | 6d | 2024-10-08 | 2024-10-13 | 101FS-3d | 0d |  | 22,591,075.53 |  |
| 103 | 2.3.1.1.4 | Excavaciones y entibados |  | 6d | 2024-10-10 | 2024-10-15 | 102FS-4d | 0d |  | 55,048,350.53 |  |
| 104 | 2.3.1.1.5 | Cargue de material de excavación |  | 6d | 2024-10-13 | 2024-10-18 | 103FS-3d | 0d |  | 7,535,579.53 |  |
| 105 | 2.3.1.1.6 | Nivelación y colocación de cama de triturado para tuberia |  | 8d | 2024-10-16 | 2024-10-23 | 104FS-3d | 0d |  | 8,885,137.53 |  |
| 106 | 2.3.1.1.7 | Instalación de tuberia |  | 8d | 2024-10-19 | 2024-10-26 | 105FS-5d | 0d |  | 95,458,142.83 |  |
| 107 | 2.3.1.1.8 | Construcción de llenos |  | 8d | 2024-10-21 | 2024-10-28 | 106FS-6d | 0d |  | 65,352,360.53 |  |
| 108 | 2.3.1.1.9 | Construcción de camaras de inspección 1,20 |  | 5d | 2024-10-28 | 2024-11-01 | 107FS-1d | 0d |  | 9,184,409.78 |  |
| 109 | 2.3.1.1.10 | Construcción de sumideros |  | 4d | 2024-11-02 | 2024-11-05 | 108 | 0d |  | 3,815,010.53 |  |
| 110 | 2.3.1.2 | **Obras civiles** |  | 23d | 2024-10-14 | 2024-11-05 |  | 43d |  | 143,845,974.06 |  |
| 111 | 2.3.1.2.1 | Construcción de losas |  | 13d | 2024-10-14 | 2024-10-26 | 96FS+8d | 43d | 0d | 127,005,295.53 |  |
| 112 | 2.3.1.2.2 | Construcción de andenes |  | 10d | 2024-10-27 | 2024-11-05 | 111 | 43d |  | 16,840,678.53 |  |
| 113 | 2.3.1.3 | FIN EJECUCIÓN - FASE 3-1 | milestone | 0d | 2024-11-05 | 2024-11-05 | 109 | 0d |  |  |  |
| 114 | 2.3.2 | **FASE 3-2** |  | 15d | 2024-11-06 | 2024-11-20 |  | 0d |  | 619,638,309.44 |  |
| 115 | 2.3.2.1 | **Red de aguas lluvias - (Externa)** |  | 15d | 2024-11-06 | 2024-11-20 |  | 28d |  | 121,216,915.32 |  |
| 116 | 2.3.2.1.1 | Construcción de cerramientos |  | 1d | 2024-11-06 | 2024-11-06 | 113 | 28d | 0d | 2,440,447.03 | m2 |
| 117 | 2.3.2.1.2 | Localización y replanteo |  | 1d | 2024-11-07 | 2024-11-07 | 116 | 28d | 0d | 2,133,816.45 | m2 |
| 118 | 2.3.2.1.3 | Demoliciones y retiros |  | 3d | 2024-11-08 | 2024-11-10 | 117 | 28d | 0d | 1,544,734.73 | m2 |
| 119 | 2.3.2.1.4 | Excavaciones y entibados |  | 3d | 2024-11-09 | 2024-11-11 | 118FS-2d | 28d | 0d | 23,970,194.23 |  |
| 120 | 2.3.2.1.5 | Cargue de material de excavación |  | 3d | 2024-11-10 | 2024-11-12 | 119FS-2d | 28d | 0d | 3,627,044.03 |  |
| 121 | 2.3.2.1.6 | Nivelación y colocación de cama de triturado para tuberia |  | 4d | 2024-11-11 | 2024-11-14 | 120FS-2d | 28d | 0d | 6,885,137.53 |  |
| 122 | 2.3.2.1.7 | Instalación de tuberia |  | 4d | 2024-11-12 | 2024-11-15 | 121FS-3d | 28d | 0d | 3,693,024.53 |  |
| 123 | 2.3.2.1.8 | Construcción de llenos |  | 4d | 2024-11-13 | 2024-11-16 | 122FS-3d | 28d | 0d | 28,798,790.73 |  |
| 124 | 2.3.2.1.9 | Construcción de camaras de inspección 1,20 |  | 3d | 2024-11-15 | 2024-11-17 | 123FS-2d | 28d | 0d | 2,946,291.53 |  |
| 125 | 2.3.2.1.10 | Construcción de carcamos |  | 5d | 2024-11-16 | 2024-11-20 | 124FS-2d | 28d |  | 45,177,434.53 |  |

| ID | WBS | Task | Type | Duration | Start | Finish | Predecessors | Total slack | Free slack | Cost | Unidad |
| --- | --- | --- | --- | --- | --- | --- | --- | --- | --- | --- | --- |
| 126 | 2.3.2.2 | **Red de abastos (Edificio a tanque)** |  | 6d | 2024-11-06 | 2024-11-11 |  | 0d |  | 27,117,708.95 |  |
| 127 | 2.3.2.2.1 | Construcción de cerramientos |  | 1d | 2024-11-06 | 2024-11-06 | 113 | 0d |  | 497,602.03 |  |
| 128 | 2.3.2.2.2 | Demoliciones y retiros |  | 2d | 2024-11-07 | 2024-11-08 | 127 | 0d |  | 369,643.13 |  |
| 129 | 2.3.2.2.3 | Excavaciones y cargue |  | 2d | 2024-11-08 | 2024-11-09 | 128FS-1d | 0d |  | 5,638,030.13 |  |
| 130 | 2.3.2.2.4 | Instalación de tuberia a presión y accesorios |  | 3d | 2024-11-08 | 2024-11-10 | 129FS-2d | 0d |  | 14,920,782.53 |  |
| 131 | 2.3.2.2.5 | Construcción de llenos |  | 3d | 2024-11-09 | 2024-11-11 | 130FS-2d | 0d |  | 5,691,651.13 |  |
| 132 | 2.3.2.3 | **Estructura de tanques** |  | 9d | 2024-11-06 | 2024-11-14 |  | 0d |  | 188,097,632.37 |  |
| 133 | 2.3.2.3.1 | Construcción de cerramientos |  | 1d | 2024-11-06 | 2024-11-06 | 113 | 1d | 0d | 821,409.53 | un |
| 134 | 2.3.2.3.2 | Demoliciones |  | 2d | 2024-11-06 | 2024-11-07 | 133FS-1d | 1d | 0d | 565,491.73 |  |
| 135 | 2.3.2.3.3 | Excavaciones y entibados |  | 2d | 2024-11-07 | 2024-11-08 | 134FS-1d | 1d | 0d | 9,829,908.73 |  |
| 136 | 2.3.2.3.4 | Cargue de material de excavación |  | 2d | 2024-11-08 | 2024-11-09 | 135FS-1d | 1d | 0d | 1,446,151.53 |  |
| 137 | 2.3.2.3.5 | Construcción de llenos |  | 2d | 2024-11-09 | 2024-11-10 | 136FS-1d | 1d |  | 11,209,507.73 |  |
| 138 | 2.3.2.3.6 | Construcción de estructura de tanques |  | 5d | 2024-11-10 | 2024-11-14 | 137FS-2d, 131FS-2d | 0d |  | 164,225,163.12 |  |
| 139 | 2.3.2.4 | **Tanques** |  | 6d | 2024-11-15 | 2024-11-20 |  | 0d |  | 283,206,052.8 |  |
| 140 | 2.3.2.4.1 | Construcción de sistema de bombeo |  | 5d | 2024-11-15 | 2024-11-19 | 138 | 0d |  | 58,367,569.45 |  |
| 141 | 2.3.2.4.2 | Instalación de tanques de almcenamiento |  | 5d | 2024-11-16 | 2024-11-20 | 140FS-4d | 0d |  | 224,838,483.35 |  |
| 142 | 2.3.2.5 | FIN EJECUCIÓN - FASE 3-2 | milestone | 0d | 2024-11-20 | 2024-11-20 | 141FF | 0d |  |  |  |
| 143 | 2.3.3 | **FASE 3-3** |  | 14d | 2024-11-21 | 2024-12-04 |  | 0d |  | 311,717,596.5 |  |
| 144 | 2.3.3.1 | **Red de aguas lluvias (Externa)** |  | 14d | 2024-11-21 | 2024-12-04 |  | 14d |  | 151,725,413.77 |  |
| 145 | 2.3.3.1.1 | Localización y replanteo |  | 1d | 2024-11-21 | 2024-11-21 | 142 | 14d | 0d | 3,236,328.53 | m2 |
| 146 | 2.3.3.1.2 | Demoliciones y retiros |  | 2d | 2024-11-22 | 2024-11-23 | 145 | 14d | 0d | 8,738,152.53 | m2 |
| 147 | 2.3.3.1.3 | Excavaciones y entibados |  | 2d | 2024-11-23 | 2024-11-24 | 146FS-1d | 14d | 0d | 44,267,135.53 | m2 |
| 148 | 2.3.3.1.4 | Cargue de material de excavación |  | 2d | 2024-11-24 | 2024-11-25 | 147FS-1d | 14d | 0d | 6,535,579.53 |  |
| 149 | 2.3.3.1.5 | Nivelación y colocación de cama de triturado para tuberia |  | 4d | 2024-11-25 | 2024-11-28 | 148FS-1d | 14d | 0d | 7,885,137.53 |  |
| 150 | 2.3.3.1.6 | Instalación de tuberia |  | 4d | 2024-11-26 | 2024-11-29 | 149FS-3d | 14d | 0d | 10,859,502.53 |  |
| 151 | 2.3.3.1.7 | Construcción de llenos |  | 4d | 2024-11-27 | 2024-11-30 | 150FS-3d | 14d | 0d | 55,352,360.53 |  |
| 152 | 2.3.3.1.8 | Construcción de camaras de inspección 1,20 |  | 4d | 2024-11-28 | 2024-12-01 | 151FS-3d | 14d | 0d | 11,263,782.53 |  |
| 153 | 2.3.3.1.9 | Construcción de sumideros |  | 3d | 2024-12-02 | 2024-12-04 | 152 | 14d |  | 3,587,434.53 |  |

| ID | WBS | Task | Type | Duration | Start | Finish | Predecessors | Total slack | Cost | Unidad |
| --- | --- | --- | --- | --- | --- | --- | --- | --- | --- | --- |
| 154 | 2.3.3.2 | **Obras civiles** |  | 14d | 2024-11-21 | 2024-12-04 |  | 0d | 159,992,182.73 |  |
| 155 | 2.3.3.2.1 | Construcción de filtros |  | 5d | 2024-11-21 | 2024-11-25 | 142 | 0d | 20,968,299.22 | un |
| 156 | 2.3.3.2.2 | Construcción de losas |  | 5d | 2024-11-24 | 2024-11-28 | 155FS-2d | 0d | 115,832,251.53 |  |
| 157 | 2.3.3.2.3 | Construcción de andenes |  | 5d | 2024-11-27 | 2024-12-01 | 156FS-2d | 0d | 21,021,854.99 |  |
| 158 | 2.3.3.2.4 | Instalación de de grama tipo macana |  | 4d | 2024-12-01 | 2024-12-04 | 157FS-1d | 0d | 2,169,776.99 |  |
| 159 | 2.3.3.3 | FIN EJECUCIÓN - FASE 3-3 | milestone | 0d | 2024-12-04 | 2024-12-04 | 158FF | 0d |  |  |
| 160 | 2.4 | **FASE 4** |  | 14d | 2024-12-05 | 2024-12-18 |  | 0d | 490,690,288.59 |  |
| 161 | 2.4.1 | Pruebas y ensayos |  | 5d | 2024-12-05 | 2024-12-09 | 53, 96, 113, 142, 159 | 0d | 56,008,055.53 |  |
| 162 | 2.4.2 | Construcción de carpeta asfaltica |  | 5d | 2024-12-08 | 2024-12-12 | 161FS-2d | 0d | 246,278,413.53 |  |
| 163 | 2.4.3 | Señalización y demarcación vial |  | 6d | 2024-12-13 | 2024-12-18 | 162 | 0d | 188,403,819.53 |  |
| 164 | 3 | **ACTIVIDADES TRANSVERSALES** |  | 149d | 2024-07-22 | 2024-12-17 |  | 1d | 98,141,099 |  |
| 165 | 3.1 | INVERSIÓN GESTIÓN SOCIAL Y COMUNICACIONES |  | 149d | 2024-07-22 | 2024-12-17 | 1SS | 1d | 17,925,000 |  |
| 166 | 3.2 | INVERSIÓN GESTIÓN AMBIENTAL |  | 149d | 2024-07-22 | 2024-12-17 | 1SS | 1d | 21,469,763 |  |
| 167 | 3.3 | INVERSIÓN SEGURIDAD Y SALUD EN EL TRABAJO |  | 149d | 2024-07-22 | 2024-12-17 | 1SS | 1d | 17,026,904 |  |
| 168 | 3.4 | PRESUPUESTO PLAN DE MANEJO DE TRANSITO |  | 149d | 2024-07-22 | 2024-12-17 | 1SS | 1d | 27,031,145 |  |
| 169 | 3.5 | POLIZAS | milestone | 0d | 2024-07-22 | 2024-07-22 | 1SS | 150d | 14,688,287 |  |
| 170 | 4 | FIN DEL PROYECTO | milestone | 0d | 2024-12-18 | 2024-12-18 | 13, 23, 33, 42, 65, 75, 85, 125, 141, 153, 163, 165, 166, 167, 168, 169, 112 | 0d |  |  |
